# MDSS

How a schedule from MS Project changed from version to version. A marks actual dates.

## Version 1 (saved 2009-02-11, file MDSS_Project_Plan.mpp)

Note of the change: all of the latest on ontologies

| ID | WBS | Task | Duration | Start | Finish | Predecessors | Complete | Total float | Constraint |
| --- | --- | --- | --- | --- | --- | --- | --- | --- | --- |
| 1 | 1 | **MDSS Implementation** | 83.76d? | 2009-02-02 A | 2009-05-28 |  | 3% | 23.24d |  |
| 2 | 1.1 | **Create Prototype (Entomology)** | 34.12d? | 2009-02-02 A | 2009-03-20 |  | 13% | 71.88d |  |
| 3 | 1.1.1 | **System requirements** | 30d? | 2009-02-02 A | 2009-03-13 |  | 16% | 76d |  |
| 4 |  | Dev: Ontology Schema MIRO | 10d | 2009-02-02 A | 2009-02-13 |  | 60% | 23.24d |  |
| 5 |  | Dev: Geography MOJO attributes (PostGIS phase 1) | 11.76d? | 2009-02-02 A | 2009-02-17 |  | 51% | 42.29d |  |
| 6 |  | Dev: Geography functions integrated into the query API | 5.88d? | 2009-02-17 | 2009-02-25 | 5 |  | 42.29d |  |
| 7 |  | Dev: Finalyse the MOJO schema for geo entities | 18.82h | 2009-02-25 | 2009-02-27 | 6 |  | 42.29d |  |
| 8 |  | Dev: GIS visual tool integration | 7.06d? | 2009-02-16 | 2009-02-25 | 4 |  | 23.24d |  |
| 9 |  | Dev: Geoserver integration | 7.06d? | 2009-02-25 | 2009-03-06 | 8 |  | 23.24d |  |
| 10 |  | Dev: DHTML tree widget selection and integration | 5d? | 2009-02-11 | 2009-02-17 |  |  | 50.29d | start no earlier than 2009-02-11 |
| 11 |  | Dev: import/export an XLS file with a pre-populated headers | 6d? | 2009-02-11 | 2009-02-18 |  |  | 91d | start no earlier than 2009-02-11 |
| 12 |  | Dev: Import XLS file. Map column headers to fields of a class | 2d? | 2009-02-19 | 2009-02-20 | 11 |  | 91d |  |
| 13 |  | Dev: Represent query criteria as in a user interface | 5d? | 2009-02-18 | 2009-02-24 | 10 |  | 78d |  |
| 14 |  | Dev: Represent query criteria in back-end | 5d? | 2009-02-25 | 2009-03-03 | 13 |  | 78d |  |
| 15 |  | Dev: Save query criteria to the database | 1d? | 2009-03-04 | 2009-03-04 | 14 |  | 78d |  |
| 16 |  | Dev: Generic GIS visualisation and output requirements | 47.06h | 2009-03-06 | 2009-03-13 | 9 |  | 23.24d |  |
| 17 | 1.1.2 | **Prototype Use cases** | 29.12d? | 2009-02-09 A | 2009-03-20 |  | 9% | 42.29d |  |
| 18 | 1.1.2.1 | **Search for a geo entity** | 14.12d? | 2009-02-27 | 2009-03-20 |  |  | 42.29d |  |
| 19 |  | Dev: Search for a geo entity - ontology tree | 4.71d? | 2009-02-27 | 2009-03-06 | 7, 10 |  | 42.29d |  |
| 20 |  | Dev: Search for a geo entity - filtered | 2.35d? | 2009-03-06 | 2009-03-11 | 19 |  | 42.29d |  |
| 21 |  | Dev: Search for a geo entity - Hierarchy table | 2.35d? | 2009-03-11 | 2009-03-13 | 20 |  | 42.29d |  |
| 22 |  | Dev: Search for a geo entity - combo boxes | 3.53d? | 2009-03-13 | 2009-03-18 | 21 |  | 42.29d |  |
| 23 |  | Dev: Search for a geo entity - finalise | 1.18d? | 2009-03-18 | 2009-03-20 | 22 |  | 42.29d |  |
| 24 |  | Investigate widget libraries | 16h | 2009-02-09 A | 2009-02-10 A |  | 100% |  | start no earlier than 2009-02-07 |
| 25 |  | Dev: login to MDSS | 4h | 2009-02-11 | 2009-02-11 | 24 |  | 37d |  |
| 26 |  | Dev: BE - Submit a mosquito collection | 20h | 2009-02-09 A | 2009-02-11 |  | 50% | 25.62d | start no earlier than 2009-02-07 |
| 27 |  | Dev: GUI - Submit a mosquito collection | 20h | 2009-02-11 | 2009-02-13 | 25, 26 |  | 37d |  |
| 28 |  | Dev: BE - Submit collection points | 1.25d? | 2009-02-11 A | 2009-02-12 | 26 | 50% | 25d |  |
| 29 |  | Dev: GUI - Submit collection points | 10h | 2009-02-16 | 2009-02-17 | 27, 28 |  | 37d |  |
| 30 |  | Dev: BE - Resistance Mechanisms | 2.5d? | 2009-02-12 A | 2009-02-17 | 28 | 50% | 23.75d |  |
| 31 |  | Dev: GUI - Resistance Mechanisms | 40h | 2009-02-17 | 2009-02-24 | 29, 30 |  | 37d |  |
| 32 |  | Dev: BE - Resistance cut-off values | 1.25d? | 2009-02-17 | 2009-02-18 | 30 |  | 23.75d |  |
| 33 |  | Dev: GUI - Resistance cut-off values | 10h | 2009-02-24 | 2009-02-25 | 32, 31 |  | 37d |  |
| 34 |  | Dev: BE - Adult discriminating dose assay | 2.5d? | 2009-02-18 | 2009-02-20 | 32 |  | 23.75d |  |
| 35 |  | Dev: GUI - Adult discriminating dose assay | 20h | 2009-02-25 | 2009-02-27 | 33, 34 |  | 37d |  |
| 36 |  | Dev: BE - configure import interfaces | 10h | 2009-02-23 | 2009-02-24 | 34 |  | 23.75d |  |
| 37 |  | Dev: GUI - configure import interfaces | 10h | 2009-03-02 | 2009-03-03 | 35, 36 |  | 37d |  |
| 38 |  | Dev: BE - Entomology dynamic query | 2.5d? | 2009-02-24 | 2009-02-26 | 36 |  | 23.75d |  |
| 39 |  | Dev: GUI - Entomology dynamic query | 20h | 2009-03-03 | 2009-03-05 | 37, 38 |  | 37d |  |
| 40 |  | Dev: Enquiry integration with selected reporting tool | 4d? | 2009-02-26 | 2009-03-04 | 38 |  | 23.75d |  |
| 41 |  | Dev: change visibility of fields on GUI | 32h | 2009-03-05 | 2009-03-11 | 39, 40 |  | 37d |  |
| 42 |  | Delivery of prototype | 1d? | 2009-03-20 | 2009-03-23 | 2 |  | 71.88d |  |
| 43 |  | Required delivery of prototype | 8h | 2009-03-09 | 2009-03-09 |  |  | 81d | start no earlier than 2009-03-09 |
| 44 |  | Dev:BE - Biochemical cut-off values | 1d? | 2009-03-04 | 2009-03-05 | 40 |  | 23.75d |  |
| 45 |  | Dev: GUI - Biochemical cut-off values | 10h | 2009-03-11 | 2009-03-12 | 44, 41 |  | 37d |  |
| 46 |  | Dev: BE - Adult knock down assay | 1.5d? | 2009-03-05 | 2009-03-09 | 44 |  | 23.75d |  |
| 47 |  | Dev: GUI - Adult knock down assay | 15h | 2009-03-13 | 2009-03-16 | 46, 45 |  | 37d |  |
| 48 |  | Dev: BE - Larvae discriminating dose assay | 1.5d? | 2009-03-09 | 2009-03-10 | 46 |  | 23.75d |  |
| 49 |  | Dev: GUI - Larvae discriminating dose assay | 15h | 2009-03-16 | 2009-03-18 | 48, 47 |  | 37d |  |
| 50 |  | Dev: BE - Efficacy assay | 2.5d? | 2009-03-10 | 2009-03-13 | 48 |  | 23.75d |  |
| 51 |  | Dev: GUI - Efficacy assay | 20h | 2009-03-18 | 2009-03-23 | 49 |  | 37d |  |
| 52 | 1.12 | **Aquire Geo Data** | 11d? | 2009-02-10 | 2009-02-24 |  |  | 89d |  |
| 53 | 1 | **Mozambique** | 11d? | 2009-02-10 | 2009-02-24 |  |  | 89d |  |
| 54 | 1.1 | **Priority 1: Province Boundaries** | 10d | 2009-02-10 | 2009-02-23 |  |  | 90d |  |
| 55 |  | Data set acquired | 7d | 2009-02-10 | 2009-02-18 |  |  | 90d | start no earlier than 2009-02-10 |
| 56 |  | Data set ready for delivery | 3d | 2009-02-19 | 2009-02-23 | 55 |  | 90d | start no earlier than 2009-02-12 |
| 57 | 1.2 | **Priority 1: District Boundaries** | 4d? | 2009-02-10 | 2009-02-13 |  |  | 96d |  |
| 58 |  | Data set acquired | 3d | 2009-02-10 | 2009-02-12 |  |  | 96d | start no earlier than 2009-02-10 |
| 59 |  | Data set ready for delivery | 1d? | 2009-02-13 | 2009-02-13 | 58 |  | 96d | start no earlier than 2009-02-06 |
| 60 | 1.3 | **Priority 1: Administrative Post Boundaries** | 4d? | 2009-02-10 | 2009-02-13 |  |  | 96d |  |
| 61 |  | Data set acquired | 3d | 2009-02-10 | 2009-02-12 |  |  | 96d | start no earlier than 2009-02-10 |
| 62 |  | Data set ready for delivery | 1d? | 2009-02-13 | 2009-02-13 | 61 |  | 96d | start no earlier than 2009-02-06 |
| 63 | 1.4 | **Priority 1: Locality Boundaries** | 4d? | 2009-02-10 | 2009-02-13 |  |  | 96d |  |
| 64 |  | Data set acquired | 1d? | 2009-02-10 | 2009-02-10 |  |  | 96d | start no earlier than 2009-02-10 |
| 65 |  | Data set ready for delivery | 3d | 2009-02-11 | 2009-02-13 | 64 |  | 96d | start no earlier than 2009-02-06 |
| 66 | 1.5 | **Priority 1: Village Points** | 10d? | 2009-02-10 | 2009-02-23 |  |  | 90d |  |
| 67 |  | Data set acquired | 5d | 2009-02-10 | 2009-02-16 |  |  | 90d | start no earlier than 2009-02-10 |
| 68 |  | Data set ready for delivery | 5d? | 2009-02-17 | 2009-02-23 | 67 |  | 90d | finish no earlier than 2009-02-13 |
| 69 | 1.6 | **Priority 1: Health Facility Points** | 11d? | 2009-02-10 | 2009-02-24 |  |  | 89d |  |
| 70 |  | Data set acquired | 10d | 2009-02-10 | 2009-02-23 |  |  | 89d | start no earlier than 2009-02-10 |

| ID | WBS | Task | Duration | Start | Finish | Predecessors | Total float | Constraint |
| --- | --- | --- | --- | --- | --- | --- | --- | --- |
| 71 |  | Data set ready for delivery | 1d? | 2009-02-24 | 2009-02-24 | 70 | 89d | start no earlier than 2009-02-16 |
| 72 | 1.7 | **Priority 1: Sentinel Site Points** | 5d? | 2009-02-10 | 2009-02-16 |  | 95d |  |
| 73 |  | Data set acquired | 1d? | 2009-02-10 | 2009-02-10 |  | 95d | start no earlier than 2009-02-10 |
| 74 |  | Data set ready for delivery | 4d? | 2009-02-11 | 2009-02-16 | 73 | 95d | finish no earlier than 2009-02-06 |
| 75 | 1.8 | **Priority 1: Window Trap Points** | 5d? | 2009-02-10 | 2009-02-16 |  | 95d |  |
| 76 |  | Data set acquired | 1d? | 2009-02-10 | 2009-02-10 |  | 95d | start no earlier than 2009-02-10 |
| 77 |  | Data set ready for delivery | 4d? | 2009-02-11 | 2009-02-16 | 76 | 95d | start no earlier than 2009-02-03 |
| 78 | 2 | **Malawi** | 10d? | 2009-02-10 | 2009-02-23 |  | 90d |  |
| 79 | 2.1 | **Priority 1: Province / Region Boundaries** | 10d? | 2009-02-10 | 2009-02-23 |  | 90d |  |
| 80 |  | Data set acquired | 5d | 2009-02-10 | 2009-02-16 |  | 90d | start no earlier than 2009-02-10 |
| 81 |  | Data set ready for delivery | 5d? | 2009-02-17 | 2009-02-23 | 80 | 90d | finish no earlier than 2009-02-13 |
| 82 | 2.2 | **Priority 1: District Boundaries** | 10d? | 2009-02-10 | 2009-02-23 |  | 90d |  |
| 83 |  | Data set acquired | 5d | 2009-02-10 | 2009-02-16 |  | 90d | start no earlier than 2009-02-10 |
| 84 |  | Data set ready for delivery | 5d? | 2009-02-17 | 2009-02-23 | 83 | 90d | finish no earlier than 2009-02-13 |
| 85 | 2.3 | **Priority 1: Traditional Authority Boundaries** | 10d? | 2009-02-10 | 2009-02-23 |  | 90d |  |
| 86 |  | Data set acquired | 5d | 2009-02-10 | 2009-02-16 |  | 90d | start no earlier than 2009-02-10 |
| 87 |  | Data set ready for delivery | 5d? | 2009-02-17 | 2009-02-23 | 86 | 90d | finish no earlier than 2009-02-13 |
| 88 | 2.4 | **Priority 1: Village Points** | 10d? | 2009-02-10 | 2009-02-23 |  | 90d |  |
| 89 |  | Data set acquired | 5d | 2009-02-10 | 2009-02-16 |  | 90d | start no earlier than 2009-02-10 |
| 90 |  | Data set ready for delivery | 5d? | 2009-02-17 | 2009-02-23 | 89 | 90d | finish no earlier than 2009-02-13 |
| 91 | 2.5 | **Priority 1: Health Facility Points** | 10d? | 2009-02-10 | 2009-02-23 |  | 90d |  |
| 92 |  | Data set acquired | 5d | 2009-02-10 | 2009-02-16 |  | 90d | start no earlier than 2009-02-10 |
| 93 |  | Data set ready for delivery | 5d? | 2009-02-17 | 2009-02-23 | 92 | 90d | start no earlier than 2009-02-09 |
| 94 | 2.6 | **Priority 1: Sentinel Site Points** | 8d? | 2009-02-10 | 2009-02-19 |  | 92d |  |
| 95 |  | Data set acquired | 4d | 2009-02-10 | 2009-02-13 |  | 92d | start no earlier than 2009-02-10 |
| 96 |  | Data set ready for delivery | 4d? | 2009-02-16 | 2009-02-19 | 95 | 92d | start no earlier than 2009-02-10 |
| 97 | 2.7 | **Priority 1: Window Trap Points** | 6d? | 2009-02-10 | 2009-02-17 |  | 94d |  |
| 98 |  | Data set acquired | 5d | 2009-02-10 | 2009-02-16 |  | 94d | start no earlier than 2009-02-10 |
| 99 |  | Data set ready for delivery | 1d? | 2009-02-17 | 2009-02-17 | 98 | 94d | finish no earlier than 2009-02-13 |
| 100 | 3 | **Zambia** | 10d? | 2009-02-10 | 2009-02-23 |  | 90d |  |
| 101 | 3.1 | **Priority 1: Province Boundaries** | 10d? | 2009-02-10 | 2009-02-23 |  | 90d |  |
| 102 |  | Data set acquired | 5d | 2009-02-10 | 2009-02-16 |  | 90d | start no earlier than 2009-02-10 |
| 103 |  | Data set ready for delivery | 5d? | 2009-02-17 | 2009-02-23 | 102 | 90d | finish no earlier than 2009-02-13 |
| 104 | 3.2 | **Priority 1: District Boundaries** | 10d? | 2009-02-10 | 2009-02-23 |  | 90d |  |
| 105 |  | Data set acquired | 5d | 2009-02-10 | 2009-02-16 |  | 90d | start no earlier than 2009-02-10 |
| 106 |  | Data set ready for delivery | 5d? | 2009-02-17 | 2009-02-23 | 105 | 90d | finish no earlier than 2009-02-13 |
| 107 | 3.3 | **Priority 1: Constituency Boundaries** | 10d? | 2009-02-10 | 2009-02-23 |  | 90d |  |
| 108 |  | Data set acquired | 5d | 2009-02-10 | 2009-02-16 |  | 90d | start no earlier than 2009-02-10 |
| 109 |  | Data set ready for delivery | 5d? | 2009-02-17 | 2009-02-23 | 108 | 90d | start no earlier than 2009-02-09 |
| 110 | 3.4 | **Priority 1: Ward Boundaries** | 10d? | 2009-02-10 | 2009-02-23 |  | 90d |  |
| 111 |  | Data set acquired | 5d | 2009-02-10 | 2009-02-16 |  | 90d | start no earlier than 2009-02-10 |
| 112 |  | Data set ready for delivery | 5d? | 2009-02-17 | 2009-02-23 | 111 | 90d | finish no earlier than 2009-02-13 |
| 113 | 3.5 | **Priority 1: Village Points** | 10d? | 2009-02-10 | 2009-02-23 |  | 90d |  |
| 114 |  | Data set acquired | 5d | 2009-02-10 | 2009-02-16 |  | 90d | start no earlier than 2009-02-10 |
| 115 |  | Data set ready for delivery | 5d? | 2009-02-17 | 2009-02-23 | 114 | 90d | finish no earlier than 2009-02-20 |
| 116 | 3.6 | **Priority 1: Health Facility Points** | 9d? | 2009-02-10 | 2009-02-20 |  | 91d |  |
| 117 |  | Data set acquired | 4d? | 2009-02-10 | 2009-02-13 |  | 91d | start no earlier than 2009-02-10 |
| 118 |  | Data set ready for delivery | 5d? | 2009-02-16 | 2009-02-20 | 117 | 91d | finish no earlier than 2009-02-20 |
| 119 | 3.7 | **Priority 1: Sentinel Site Points** | 9d? | 2009-02-10 | 2009-02-20 |  | 91d |  |
| 120 |  | Data set acquired | 4d? | 2009-02-10 | 2009-02-13 |  | 91d | start no earlier than 2009-02-10 |
| 121 |  | Data set ready for delivery | 5d? | 2009-02-16 | 2009-02-20 | 120 | 91d | start no earlier than 2009-02-16 |
| 122 | 3.8 | **Priority 1: Window Trap Points** | 9d? | 2009-02-10 | 2009-02-20 |  | 91d |  |
| 123 |  | Data set acquired | 4d? | 2009-02-10 | 2009-02-13 |  | 91d | start no earlier than 2009-02-10 |
| 124 |  | Data set ready for delivery | 5d? | 2009-02-16 | 2009-02-20 | 123 | 91d | finish no earlier than 2009-02-20 |
| 125 |  | Deliver Population data | 0h | 2009-02-24 | 2009-02-24 | 52 | 89d | start no earlier than 2009-02-18 |
| 126 |  | Import Geo data into MDSS schema | 8h | 2009-02-25 | 2009-02-25 | 125 | 89d |  |
| 127 |  | Deliver entomology data to be imported | 0h | 2009-02-20 | 2009-02-20 |  | 0d | must finish on 2009-02-20 |
| 128 | 1.16 | **Prototype Test Cases** | 2.86d? | 2009-02-11 | 2009-02-13 |  | 1.86d |  |
| 129 |  | TC: Geo Tree | 1.43d? | 2009-02-11 | 2009-02-12 |  | 1.86d | start no earlier than 2009-02-11 |
| 130 |  | TC: Searching for a geo entity | 11.43h | 2009-02-12 | 2009-02-13 | 129 | 1.86d |  |
| 131 |  | Create test cases for entomology prototype | 64h | 2009-02-11 | 2009-02-20 |  | 81.88d | start no earlier than 2009-02-11 |
| 132 |  | Test defect logging procedures | 0.71d? | 2009-02-24 | 2009-02-25 | 209 | 1.86d |  |
| 133 |  | Prepare entomology test data | 5.71h | 2009-02-27 | 2009-02-27 | 127, 134 | 78.52d |  |
| 134 |  | Learn BIRT report writer | 11.43h | 2009-02-25 | 2009-02-27 | 132 | 1.86d |  |
| 135 | 1.21 | **Test Prototype Submit Change Requests** | 13.57d? | 2009-03-02 | 2009-03-20 | 134 | 0d |  |
| 136 | 1.21.1 | **Test: Geo entity search and maintanance** | 7.15d? | 2009-03-02 | 2009-03-12 |  | 0d |  |
| 137 |  | Test: login to MDSS | 0h | 2009-03-02 | 2009-03-02 |  | 0d | must start on 2009-03-02 |
| 138 |  | Test: Search for a geo entity - tree | 0.36d? | 2009-03-03 | 2009-03-03 |  | 41.71d | start no earlier than 2009-03-03 |
| 139 |  | Submit defects: Search for a geo entity - tree | 0.71d? | 2009-03-03 | 2009-03-04 | 138 | 41.71d |  |
| 140 |  | Test: create a geo entity | 2.86h | 2009-03-04 | 2009-03-04 | 139 | 41.71d |  |

| ID | WBS | Task | Duration | Start | Finish | Predecessors | Total float | Constraint |
| --- | --- | --- | --- | --- | --- | --- | --- | --- |
| 141 |  | Submit defects: create a geo entity | 5.71h | 2009-03-04 | 2009-03-05 | 140 | 41.71d |  |
| 142 |  | Test: Search for a geo entity - filtered | 0.36d? | 2009-03-05 | 2009-03-05 | 141 | 41.71d |  |
| 143 |  | Submit defects: Search for a geo entity - filtered | 0.36d | 2009-03-05 | 2009-03-05 | 142 | 41.71d |  |
| 144 |  | Test: Search for a geo entity - Hierarchy table | 1.43d? | 2009-03-05 | 2009-03-09 | 143 | 41.71d |  |
| 145 |  | Submit defects: Search for a geo entity - Hierarchy table | 0.71d? | 2009-03-09 | 2009-03-10 | 144 | 41.71d |  |
| 146 |  | Test: Search for a geo entity - combo boxes | 0.36d? | 2009-03-10 | 2009-03-10 | 145 | 41.71d |  |
| 147 |  | Submit defects: Search for a geo entity - combo boxes | 0.36d? | 2009-03-10 | 2009-03-10 | 146 | 41.71d |  |
| 148 |  | Test: Call 101 from 024, 016, 025 | 0.36d? | 2009-03-10 | 2009-03-11 | 147 | 41.71d |  |
| 149 |  | Submit defects: Call 101 from 024, 016, 025 | 0.36d? | 2009-03-11 | 2009-03-11 | 148 | 41.71d |  |
| 150 |  | Write change request MDSS101, MDSS111 | 0.71d? | 2009-03-11 | 2009-03-12 | 149 | 41.71d |  |
| 151 |  | Test: changing visibility of fields in GUI | 1.43h | 2009-03-12 | 2009-03-12 | 150 | 41.71d |  |
| 152 |  | Submit defects: changing visibility of fields in GUI | 2.86h | 2009-03-12 | 2009-03-12 | 151 | 41.71d |  |
| 153 |  | Test: Submit a mosquito collection | 0.12d? | 2009-03-09 | 2009-03-09 | 131 | 71.88d | start no earlier than 2009-03-09 |
| 154 |  | Submit defects: Submit a mosquito collection | 2h | 2009-03-09 | 2009-03-09 | 153 | 71.88d |  |
| 155 |  | Test: search/update/delete record | 1h | 2009-03-09 | 2009-03-09 | 154 | 71.88d |  |
| 156 |  | Submit defects: search/update/delete | 2h | 2009-03-09 | 2009-03-09 | 155 | 71.88d |  |
| 157 |  | Test: Submit collection points | 1h | 2009-03-09 | 2009-03-09 | 156 | 71.88d |  |
| 158 |  | Submit defects: Submit collection points | 1h | 2009-03-09 | 2009-03-09 | 157 | 71.88d |  |
| 159 |  | Write change request: Collections | 4h | 2009-03-10 | 2009-03-10 | 158 | 71.88d |  |
| 160 |  | Test: Import assay and collection data | 1h | 2009-03-10 | 2009-03-10 | 159, 133 | 71.88d |  |
| 161 |  | Submit defects: generic import functionality | 2h | 2009-03-10 | 2009-03-10 | 160 | 71.88d |  |
| 162 |  | Test:Species identification | 1h | 2009-03-10 | 2009-03-10 | 161 | 71.88d |  |
| 163 |  | Submit defects: Species identification | 1h | 2009-03-11 | 2009-03-11 | 162 | 71.88d |  |
| 164 |  | Test: Infectivity assay | 1h | 2009-03-11 | 2009-03-11 | 163 | 71.88d |  |
| 165 |  | Submit defects: Infectivity assay | 1h | 2009-03-11 | 2009-03-11 | 164 | 71.88d |  |
| 166 |  | Test: Molecular assay | 2h | 2009-03-11 | 2009-03-11 | 165 | 71.88d |  |
| 167 |  | Submit defects: Molecular assay | 2h | 2009-03-11 | 2009-03-11 | 166 | 71.88d |  |
| 168 |  | Test: Biochemical assay | 1h | 2009-03-11 | 2009-03-11 | 167 | 71.88d |  |
| 169 |  | Submit defects: Biochemical assay | 1h | 2009-03-12 | 2009-03-12 | 168 | 71.88d |  |
| 170 |  | Test: Biochemical cut-off values | 1h | 2009-03-12 | 2009-03-12 | 169 | 71.88d |  |
| 171 |  | Submit defects: Biochemical cut-off values | 1h | 2009-03-12 | 2009-03-12 | 170 | 71.88d |  |
| 172 |  | Write change request: Mechanisms | 4h | 2009-03-12 | 2009-03-12 | 171 | 71.88d |  |
| 173 |  | Test: Adult discriminating dose assay | 0.25d? | 2009-03-12 | 2009-03-13 | 172 | 71.88d |  |
| 174 |  | Submit defects: Adult discriminating dose assay | 2h | 2009-03-13 | 2009-03-13 | 173 | 71.88d |  |
| 175 |  | Test: Larvae discriminating dose assay | 0.12d? | 2009-03-13 | 2009-03-13 | 174 | 71.88d |  |
| 176 |  | Submit defects: Larvae discriminating dose assay | 1h | 2009-03-13 | 2009-03-13 | 175 | 71.88d |  |
| 177 |  | Test: Adult knock down assay | 0.12d? | 2009-03-13 | 2009-03-13 | 176 | 71.88d |  |
| 178 |  | Submit defects: Adult knock down assay | 1h | 2009-03-13 | 2009-03-13 | 177 | 71.88d |  |
| 179 |  | Test: Resistance cut-off values | 1h | 2009-03-13 | 2009-03-13 | 178 | 71.88d |  |
| 180 |  | Submit defects: Resistance cut-off values | 1h | 2009-03-16 | 2009-03-16 | 179 | 71.88d |  |
| 181 |  | Write change request: resistance assays | 4h | 2009-03-16 | 2009-03-16 | 180 | 71.88d |  |
| 182 |  | Test: Efficacy assay | 0.12d? | 2009-03-16 | 2009-03-16 | 181 | 71.88d |  |
| 183 |  | Submit defects: Efficacy assay | 1h | 2009-03-16 | 2009-03-16 | 182 | 71.88d |  |
| 184 |  | Write change request: Efficacy assay | 2h | 2009-03-16 | 2009-03-17 | 183 | 71.88d |  |
| 185 | 1.21.36 | **Test: Entomology dynamic query and reports** | 5.89d | 2009-03-12 | 2009-03-20 | 152 | 72.43d |  |
| 186 |  | Test: add Geo-entity fields | 1.43h | 2009-03-12 | 2009-03-12 |  | 72.43d |  |
| 187 |  | Test: add other fields | 1.43h | 2009-03-12 | 2009-03-13 | 186 | 72.43d |  |
| 188 |  | Test: add functions | 1.43h | 2009-03-13 | 2009-03-13 | 187 | 72.43d |  |
| 189 |  | Test: date ranges on collection date or assay date | 1.43h | 2009-03-13 | 2009-03-13 | 188 | 72.43d |  |
| 190 |  | Submit defects: Build query | 2.86h | 2009-03-13 | 2009-03-13 | 189 | 72.43d |  |
| 191 |  | Test: save query | 1.43h | 2009-03-13 | 2009-03-13 | 190 | 72.43d |  |
| 192 |  | Test: run a saved query | 1.43h | 2009-03-13 | 2009-03-16 | 191 | 72.43d |  |
| 193 |  | Test: modify a saved query | 1.43h | 2009-03-16 | 2009-03-16 | 192 | 72.43d |  |
| 194 |  | Test: export query results | 1.43h | 2009-03-16 | 2009-03-16 | 193 | 72.43d |  |
| 195 |  | Test: dump functionality | 1.43h | 2009-03-16 | 2009-03-16 | 194 | 72.43d |  |
| 196 |  | Submit defects: deploy query | 2.86h | 2009-03-16 | 2009-03-17 | 195 | 72.43d |  |
| 197 |  | Test: create thematic map from query | 11.43h | 2009-03-17 | 2009-03-18 | 196 | 72.43d |  |
| 198 |  | Test: find query results in BIRT | 1.43h | 2009-03-18 | 2009-03-18 | 197 | 72.43d |  |
| 199 |  | Test: create a report template (table) | 2.86h | 2009-03-18 | 2009-03-18 | 198 | 72.43d |  |
| 200 |  | Test: Link a report template to query | 1.43h | 2009-03-18 | 2009-03-19 | 199 | 72.43d |  |
| 201 |  | Test: view/print/save a report | 1.43h | 2009-03-19 | 2009-03-19 | 200 | 72.43d |  |
| 202 |  | Test: change linked report | 1.43h | 2009-03-19 | 2009-03-19 | 201 | 72.43d |  |
| 203 |  | Submit defects: deploy query | 2.86h | 2009-03-19 | 2009-03-19 | 202 | 72.43d |  |
| 204 |  | Write change request: Dynamic query | 5.71h | 2009-03-19 | 2009-03-20 | 203 | 72.43d |  |
| 205 | 1.22 | **Finalise Query Use Cases** | 38.11d | 2009-02-13 | 2009-04-08 |  | 1.86d |  |
| 206 |  | UC: Aggregated Cases - query | 11.43h | 2009-02-13 | 2009-02-17 | 130 | 1.86d |  |
| 207 |  | UC: Indicator survey - query | 11.43h | 2009-02-17 | 2009-02-18 | 206 | 1.86d |  |
| 208 |  | UC: Individual Cases - query | 11.43h | 2009-02-18 | 2009-02-20 | 207 | 1.86d |  |
| 209 |  | UC: IRS - query | 22.86h | 2009-02-20 | 2009-02-24 | 208 | 1.86d |  |
| 210 |  | UC: ITN FacilityCommunity distribution - query | 11.43h | 2009-04-01 | 2009-04-02 | 340 | 41.71d |  |

| ID | WBS | Task | Duration | Start | Finish | Predecessors | Total float | Constraint |
| --- | --- | --- | --- | --- | --- | --- | --- | --- |
| 211 |  | UC: ITN household use - query | 11.43h | 2009-04-02 | 2009-04-06 | 210 | 41.71d |  |
| 212 |  | UC: IPT individual - query | 11.43h | 2009-04-06 | 2009-04-07 | 211 | 41.71d |  |
| 213 |  | UC: IPT aggregated - query | 11.43h | 2009-04-07 | 2009-04-08 | 212 | 44.75d |  |
| 214 | 1.23 | **Complete Development** | 63.76d? | 2009-03-02 | 2009-05-28 |  | 23.24d |  |
| 215 | 1.23.1 | **Generic Development** | 34.65d? | 2009-03-05 | 2009-04-22 |  | 30d |  |
| 216 |  | Dev: Reconstruct saved query | 47.06h | 2009-03-20 | 2009-03-27 | 23 | 42.29d |  |
| 217 |  | Dev: Overall site layout | 47.06h | 2009-03-27 | 2009-04-06 | 216 | 42.29d |  |
| 218 |  | Dev: Configure system variables | 8h | 2009-03-23 | 2009-03-24 | 51 | 37d |  |
| 219 |  | Dev: maintain catalogues | 28.23h | 2009-04-06 | 2009-04-10 | 217 | 42.29d |  |
| 220 |  | Dev: Epi week - set or change | 18.82h | 2009-03-13 | 2009-03-18 | 16 | 23.24d |  |
| 221 |  | Dev: define season start and end dates | 18.82h | 2009-03-18 | 2009-03-20 | 220 | 23.24d |  |
| 222 |  | Dev: enter/maintain people in the system | 18.82h | 2009-03-20 | 2009-03-25 | 221 | 23.24d |  |
| 223 |  | Dev: create synonyms for imported Geo entities | 32h | 2009-03-13 | 2009-03-19 | 50 | 23.75d |  |
| 224 |  | Dev: User Admin Screen for account management | 3d? | 2009-04-06 | 2009-04-08 | 15 | 59d | start no earlier than 2009-04-06 |
| 225 |  | Dev: user Admin Screen for Role assignment | 2.35d? | 2009-04-10 | 2009-04-14 | 219 | 42.29d | start no earlier than 2009-03-06 |
| 226 |  | Dev: Add localisable character attributes | 18.82h | 2009-04-14 | 2009-04-17 | 225 | 42.29d |  |
| 227 |  | Dev: CRUD on localisable fields | 48h | 2009-03-05 | 2009-03-12 | 15 | 78d |  |
| 228 |  | Dev: CRUD screen for defining geography universals | 28.23h | 2009-04-17 | 2009-04-22 | 226 | 42.29d |  |
| 229 |  | Change date/time format | 10h | 2009-03-31 | 2009-04-01 | 232 | 37d |  |
| 230 |  | Change geo root | 20h | 2009-04-01 | 2009-04-03 | 229 | 37d |  |
| 231 | 1.23.2 | **Indicator survey** | 8d | 2009-03-19 | 2009-03-31 |  | 23.75d |  |
| 232 |  | Dev: Indicator survey - CRUD | 40h | 2009-03-24 | 2009-03-31 | 218 | 37d |  |
| 233 |  | Dev - Indicator survey - dynamic query | 50h | 2009-03-19 | 2009-03-27 | 223, 207 | 23.75d |  |
| 234 | 1.23.3 | **Case Surveilance** | 48.25d | 2009-03-02 | 2009-05-07 |  | 23.75d |  |
| 235 |  | Dev: aggregated cases - CRUD | 40h | 2009-03-02 | 2009-03-06 |  | 28d | start no earlier than 2009-03-01 |
| 236 |  | Dev: calculate CFR | 37.65h | 2009-03-25 | 2009-03-31 | 222 | 23.24d |  |
| 237 |  | Dev: aggregated cases - dynamic query | 40h | 2009-03-09 | 2009-03-13 | 235, 206 | 28d |  |
| 238 |  | Dev: Input or modify population data | 32h | 2009-03-16 | 2009-03-19 | 237 | 28d | start no earlier than 2009-02-01 |
| 239 |  | Dev: Import population or annual growth rate data | 40h | 2009-03-20 | 2009-03-26 | 238 | 28d |  |
| 240 |  | Dev: input/modify outbreak thresholds | 32h | 2009-03-27 | 2009-04-01 | 239 | 28d |  |
| 241 |  | Dev :import outbreak thresholds | 32h | 2009-04-02 | 2009-04-07 | 240 | 28d |  |
| 242 |  | Dev: Calculate annual or seasonal population | 50h | 2009-04-29 | 2009-05-07 | 270 | 23.75d |  |
| 243 |  | Dev: calculate incidence | 47.06h | 2009-03-31 | 2009-04-08 | 236 | 23.24d |  |
| 244 |  | Dev: individual cases - CRUD | 40h | 2009-04-08 | 2009-04-14 | 241 | 28d |  |
| 245 |  | Dev: Outbreak notification | 47.06h | 2009-04-08 | 2009-04-16 | 243 | 23.24d |  |
| 246 |  | Dev: individual case - dynamic query | 40h | 2009-04-15 | 2009-04-21 | 244, 208 | 28d |  |
| 247 | 1.23.4 | **Intervention monitoring** | 44.26d | 2009-03-27 | 2009-05-28 |  | 23.24d |  |
| 248 | 1.23.4.1 | **IRS** | 38.75d | 2009-03-27 | 2009-05-21 |  | 23.75d |  |
| 249 |  | Dev: enter/maintain spray team member | 32h | 2009-04-22 | 2009-04-27 | 235, 246 | 28d |  |
| 250 |  | Dev: enter/maintain IRS teams | 32h | 2009-04-28 | 2009-05-01 | 249 | 28d |  |
| 251 |  | Dev: BE - input or modify IRS targets | 30h | 2009-03-27 | 2009-04-02 | 233 | 23.75d |  |
| 252 |  | Dev: GUI - input or modify IRS targets | 30h | 2009-05-07 | 2009-05-12 | 242, 251 | 23.75d |  |
| 253 |  | Dev: Configure items relating to application rate | 50h | 2009-04-02 | 2009-04-10 | 251 | 23.75d |  |
| 254 |  | Dev: Configure items relating to application rate | 20h | 2009-05-13 | 2009-05-15 | 252, 253 | 23.75d |  |
| 255 |  | Dev: IRS - CRUD | 28.23h | 2009-04-22 | 2009-04-28 | 228 | 42.29d |  |
| 256 |  | Dev: IRS - CRUD | 30h | 2009-05-15 | 2009-05-21 | 254 | 23.75d |  |
| 257 |  | Dev: IRS - dynamic query | 40h | 2009-04-10 | 2009-04-17 | 253, 209 | 23.75d | start no earlier than 2009-03-16 |
| 258 | 1.23.4.2 | **Larvaciding** | 4.71d | 2009-04-16 | 2009-04-23 |  | 23.24d |  |
| 259 |  | Dev: larviciding - CRUD | 37.65h | 2009-04-16 | 2009-04-23 | 245 | 23.24d |  |
| 260 | 1.23.4.3 | **ITN** | 25.53d | 2009-04-23 | 2009-05-28 |  | 23.24d |  |
| 261 |  | Dev: ITN aggregated data - CRUD | 47.06h | 2009-04-23 | 2009-05-01 | 259 | 23.24d |  |
| 262 |  | Dev: ITN aggregated data - query | 8h | 2009-05-01 | 2009-05-04 | 261 | 23.24d |  |
| 263 |  | Dev: ITN facility distribution - CRUD | 56.47h | 2009-05-04 | 2009-05-13 | 262 | 23.24d |  |
| 264 |  | Dev: ITN community distribution - CRUD | 37.65h | 2009-05-13 | 2009-05-19 | 263 | 23.24d |  |
| 265 |  | Dev: ITN by facility/community - query | 8h | 2009-05-19 | 2009-05-20 | 264, 210 | 23.24d |  |
| 266 |  | Dev: ITN by household - CRUD | 47.06h | 2009-05-20 | 2009-05-28 | 264, 265 | 23.24d | start no earlier than 2009-03-21 |
| 267 |  | Dev: ITN by household - query | 40h | 2009-05-04 | 2009-05-08 | 250, 211 | 28d | start no earlier than 2009-04-10 |
| 268 | 1.23.4.4 | **Intervention Planning** | 7.5d | 2009-04-17 | 2009-04-28 |  | 23.75d |  |
| 269 |  | Dev: BE - Intervention planning | 30h | 2009-04-17 | 2009-04-23 | 257 | 23.75d |  |
| 270 |  | Dev: GUI - Intervention planning | 30h | 2009-04-23 | 2009-04-28 | 269, 230 | 23.75d |  |
| 271 | 1.23.4.5 | **IPT** | 25d | 2009-04-23 | 2009-05-28 |  | 23.75d |  |
| 272 |  | Dev: IPT aggregated - CRUD | 20h | 2009-04-23 | 2009-04-27 | 269 | 27.5d |  |
| 273 |  | Dev: IPT aggregated - CRUD | 20h | 2009-05-21 | 2009-05-25 | 272, 256 | 23.75d |  |
| 274 |  | Dev: IPT aggregated - query | 40h | 2009-04-27 | 2009-05-04 | 212, 272 | 27.5d |  |
| 275 |  | Dev: BE - IPT individual - CRUD | 20h | 2009-05-04 | 2009-05-07 | 274 | 27.5d |  |
| 276 |  | Dev: GUI - IPT individual - CRUD | 20h | 2009-05-25 | 2009-05-28 | 273 | 23.75d |  |
| 277 |  | Dev: IPT individual - query | 40h | 2009-05-07 | 2009-05-14 | 213, 275 | 27.5d |  |
| 278 |  | Dev: BE - Stock Control | 28.23h | 2009-04-28 | 2009-05-01 | 255 | 42.29d |  |
| 279 |  | Dev: GUI - Stock Control | 32h | 2009-05-11 | 2009-05-14 | 267 | 28d |  |
| 280 |  | Dev: Backup the data and configuration file | 40h | 2009-05-15 | 2009-05-21 | 279 | 28d |  |

| ID | WBS | Task | Duration | Start | Finish | Predecessors | Complete | Total float | Constraint |
| --- | --- | --- | --- | --- | --- | --- | --- | --- | --- |
| 281 |  | Dev: Select the user language | 0h | 2009-02-02 A | 2009-02-02 A |  | 100% |  |  |
| 282 |  | Dev: Change date/time format | 10h | 2009-05-14 | 2009-05-15 | 277 |  | 27.5d |  |
| 283 | 5 | **Complete Test Cases** | 35.25d? | 2009-02-11 | 2009-04-01 |  |  | 63.39d |  |
| 284 | 5.1 | **Entomology** | 4d? | 2009-03-17 | 2009-03-23 |  |  | 71.88d |  |
| 285 |  | TC: Biochemical cut-off values | 1d? | 2009-03-17 | 2009-03-18 | 184 |  | 71.88d |  |
| 286 |  | TC: Adult knock down assay | 1d? | 2009-03-18 | 2009-03-19 | 285 |  | 71.88d |  |
| 287 |  | TC: Larvae discriminating dose assay | 1d? | 2009-03-19 | 2009-03-20 | 286 |  | 71.88d |  |
| 288 |  | TC: Efficacy assay | 1d? | 2009-03-20 | 2009-03-23 | 287 |  | 71.88d |  |
| 289 | 5.2 | **System** | 11.25d | 2009-02-11 | 2009-02-26 |  |  | 83.75d |  |
| 290 |  | TC: Configure system variables | 10h | 2009-02-12 | 2009-02-13 | 306 |  | 82.5d | start no earlier than 2009-02-11 |
| 291 |  | TC: maintain catalogues | 10h | 2009-02-13 | 2009-02-16 | 290 |  | 82.5d |  |
| 292 |  | TC: Epi week - set or change | 10h | 2009-02-16 | 2009-02-17 | 291 |  | 82.5d |  |
| 293 |  | TC: define season start and end dates | 10h | 2009-02-18 | 2009-02-19 | 292 |  | 82.5d |  |
| 294 |  | TC: enter/maintain people in the system | 10h | 2009-02-19 | 2009-02-20 | 293 |  | 82.5d |  |
| 295 |  | TC: create synonyms for imported Geo entities | 10h | 2009-02-20 | 2009-02-23 | 294 |  | 82.5d |  |
| 296 |  | TC: User Admin Screen for account management | 10h | 2009-02-11 | 2009-02-12 |  |  | 88.75d | start no earlier than 2009-02-11 |
| 297 |  | TC: user Admin Screen for Role assignment | 10h | 2009-02-12 | 2009-02-13 | 296 |  | 88.75d | start no earlier than 2009-02-01 |
| 298 |  | TC: Add localisable character attributes | 10h | 2009-02-13 | 2009-02-16 | 297 |  | 88.75d |  |
| 299 |  | TC: CRUD on localisable fields | 10h | 2009-02-16 | 2009-02-17 | 298 |  | 88.75d |  |
| 300 |  | TC: CRUD screen for defining geography universals | 10h | 2009-02-18 | 2009-02-19 | 299 |  | 88.75d |  |
| 301 |  | TC: Change date/time format | 10h | 2009-02-19 | 2009-02-20 | 300 |  | 88.75d |  |
| 302 |  | TC: Change geo root | 10h | 2009-02-20 | 2009-02-23 | 301 |  | 88.75d |  |
| 303 |  | TC: Select the user language | 10h | 2009-02-23 | 2009-02-24 | 302 |  | 88.75d |  |
| 304 |  | TC: Change date/time format | 10h | 2009-02-25 | 2009-02-26 | 303 |  | 88.75d |  |
| 305 | 5.3 | **Indicator Survey** | 6.96d | 2009-02-11 | 2009-02-19 |  |  | 82.5d |  |
| 306 |  | TC: Indicator survey - CRUD | 10h | 2009-02-11 | 2009-02-12 |  |  | 82.5d | start no earlier than 2009-02-11 |
| 307 |  | TC:Indicator survey query | 10h | 2009-02-18 | 2009-02-19 | 207 |  | 93.04d |  |
| 308 | 5.4 | **Case Surveilance** | 68.58h | 2009-03-12 | 2009-03-25 |  |  | 41.71d |  |
| 309 |  | TC: aggregated cases - CRUD | 5.71h | 2009-03-12 | 2009-03-13 | 152 |  | 41.71d | start no earlier than 2009-02-01 |
| 310 |  | TC: calculate CFR | 5.71h | 2009-03-13 | 2009-03-16 | 309 |  | 41.71d |  |
| 311 |  | TC: aggregated cases - dynamic query | 5.71h | 2009-03-16 | 2009-03-16 | 310 |  | 41.71d |  |
| 312 |  | TC: Input or modify population data | 5.71h | 2009-03-16 | 2009-03-17 | 311 |  | 41.71d | start no earlier than 2009-02-01 |
| 313 |  | TC: Import population or annual growth rate data | 5.71h | 2009-03-17 | 2009-03-18 | 312 |  | 41.71d |  |
| 314 |  | TC: input/modify outbreak thresholds | 5.71h | 2009-03-18 | 2009-03-18 | 313 |  | 41.71d |  |
| 315 |  | TC :import outbreak thresholds | 5.71h | 2009-03-18 | 2009-03-19 | 314 |  | 41.71d |  |
| 316 |  | TC: Calculate annual or seasonal population | 5.71h | 2009-03-19 | 2009-03-20 | 315 |  | 41.71d |  |
| 317 |  | TC: calculate incidence | 5.71h | 2009-03-20 | 2009-03-23 | 316 |  | 41.71d |  |
| 318 |  | TC: individual cases - CRUD | 5.71h | 2009-03-23 | 2009-03-23 | 317 |  | 41.71d |  |
| 319 |  | TC: Outbreak notification | 5.71h | 2009-03-23 | 2009-03-24 | 318 |  | 41.71d |  |
| 320 |  | TC: individual case - dynamic query | 5.71h | 2009-03-24 | 2009-03-25 | 319 |  | 41.71d |  |
| 321 | 5.5 | **Intervention monitoring** | 282.04h | 2009-02-11 | 2009-04-01 |  |  | 64.75d |  |
| 322 | 5.5.1 | **IRS** | 34.29h | 2009-03-25 | 2009-03-31 |  |  | 41.71d |  |
| 323 |  | TC: enter/maintain spray team member | 5.71h | 2009-03-25 | 2009-03-25 | 320 |  | 41.71d |  |
| 324 |  | TC: enter/maintain IRS teams | 5.71h | 2009-03-25 | 2009-03-26 | 323 |  | 41.71d |  |
| 325 |  | TC: input or modify IRS targets | 5.71h | 2009-03-26 | 2009-03-27 | 324 |  | 41.71d |  |
| 326 |  | TC: Configure items relating to application rate | 5.71h | 2009-03-27 | 2009-03-30 | 325 |  | 41.71d |  |
| 327 |  | TC: IRS - CRUD | 5.71h | 2009-03-30 | 2009-03-30 | 326 |  | 41.71d |  |
| 328 |  | TC: IRS - dynamic query | 5.71h | 2009-03-30 | 2009-03-31 | 327 |  | 41.71d |  |
| 329 | 5.5.2 | **Larvaciding** | 20h | 2009-02-11 | 2009-02-13 |  |  | 90d |  |
| 330 |  | TC: larviciding - CRUD | 20h | 2009-02-11 | 2009-02-13 |  |  | 90d | start no earlier than 2009-02-11 |
| 331 | 5.5.3 | **ITN** | 70h | 2009-02-23 | 2009-03-06 |  |  | 82.5d |  |
| 332 |  | TC: ITN aggregated data - CRUD | 10h | 2009-02-23 | 2009-02-24 | 295 |  | 82.5d |  |
| 333 |  | TC: ITN aggregated data - query | 10h | 2009-02-25 | 2009-02-26 | 332 |  | 82.5d |  |
| 334 |  | TC: ITN facility distribution - CRUD | 10h | 2009-02-26 | 2009-02-27 | 333 |  | 82.5d |  |
| 335 |  | TC: ITN community distribution - CRUD | 10h | 2009-02-27 | 2009-03-02 | 334 |  | 82.5d |  |
| 336 |  | TC: ITN by facility/community - query | 10h | 2009-03-02 | 2009-03-03 | 335 |  | 82.5d |  |
| 337 |  | TC: ITN by household - CRUD | 10h | 2009-03-04 | 2009-03-05 | 336 |  | 82.5d | start no earlier than 2009-02-09 |
| 338 |  | TC: ITN by household - query | 10h | 2009-03-05 | 2009-03-06 | 337 |  | 82.5d | start no earlier than 2009-02-09 |
| 339 | 5.5.4 | **Intervention Planning** | 5.71h | 2009-03-31 | 2009-04-01 |  |  | 41.71d |  |
| 340 |  | TC: Intervention planning | 5.71h | 2009-03-31 | 2009-04-01 | 328 |  | 41.71d |  |
| 341 | 5.5.5 | **IPT** | 40h | 2009-02-13 | 2009-02-20 |  |  | 90d |  |
| 342 |  | TC: IPT aggregated - CRUD | 20h | 2009-02-13 | 2009-02-17 | 330 |  | 90d |  |
| 343 |  | TC: IPT individual - CRUD | 20h | 2009-02-18 | 2009-02-20 | 342 |  | 90d |  |
| 344 | 5.5.6 | **Stock Control** | 20h | 2009-02-20 | 2009-02-24 |  |  | 90d |  |
| 345 |  | TC: Stock Control | 20h | 2009-02-20 | 2009-02-24 | 343 |  | 90d |  |
| 346 |  | Create standard queries and reports | 114.28h | 2009-04-08 | 2009-04-29 | 213 |  | 44.75d |  |
| 347 |  | Receive all historical entomological data | 8h | 2009-05-04 | 2009-05-04 |  |  | 40d | start no earlier than 2009-05-04 |
| 348 |  | Import historical entomological data | 8h | 2009-05-05 | 2009-05-05 | 347 |  | 40d |  |
| 349 |  | Receive all historical IRS data | 8h | 2009-05-04 | 2009-05-04 |  |  | 40d | start no earlier than 2009-05-04 |
| 350 |  | Import all historical IRS data | 8h | 2009-05-05 | 2009-05-05 | 349 |  | 40d |  |

| ID | Task | Duration | Start | Finish | Predecessors | Total float | Constraint |
| --- | --- | --- | --- | --- | --- | --- | --- |
| 351 | Order MDSS Hardware | 0h | 2009-02-02 | 2009-02-02 |  | 107d |  |
| 352 | Appoint MDSS Administrators | 0h | 2009-02-02 | 2009-02-02 |  | 107d |  |
| 353 | Complete system translation into Portuguese | 20d | 2009-04-06 | 2009-05-01 |  | 42d | start no earlier than 2009-04-06 |
| 354 | Dev: Installation (minimal or full) | 40h | 2009-05-15 | 2009-05-22 | 282 | 27.5d |  |
| 355 | Complete Test and Fix Cycle | 20d | 2009-05-18 | 2009-06-12 |  | 10d | start no earlier than 2009-05-18 |
| 356 | Implementation planning | 16h | 2009-06-15 | 2009-06-16 | 355 | 10d |  |
| 357 | Project Buffer | 10d | 2009-06-16 | 2009-06-29 |  | 0d | start no earlier than 2009-06-16 |
| 358 | Ready for Pilot Roll-Out | 8h | 2009-06-30 | 2009-06-30 | 357 | 0d |  |

## Version 2 (saved 2009-02-16, file MDSS_Project_Plan.mpp)

Note of the change: release by Marlize 16.feb.09

Last finish stays 2009-06-30. Complete tasks 2 → 14.

Changed:

| ID | Task | Start | Finish | Complete | Total float | Other |
| --- | --- | --- | --- | --- | --- | --- |
| 1 | **MDSS Implementation** |  |  | 3% → 7% |  |  |
| 2 | **Create Prototype (Entomology)** |  |  | 13% → 22% |  |  |
| 3 | **System requirements** |  |  | 16% → 28% |  |  |
| 5 | Dev: Geography MOJO attributes (PostGIS phase 1) |  |  | 51% → 25% | 42.29d → 43.77d |  |
| 6 | Dev: Geography functions integrated into the query API | 2009-02-17 A |  | 0% → 25% |  |  |
| 8 | Dev: GIS visual tool integration | 2009-02-16 A |  | 0% → 75% | 23.24d → 28.24d |  |
| 9 | Dev: Geoserver integration | 2009-02-25 A |  | 0% → 50% | 23.24d → 24.71d |  |
| 16 | Dev: Generic GIS visualisation and output requirements | 2009-03-06 A |  | 0% → 25% |  |  |
| 17 | **Prototype Use cases** |  |  | 9% → 13% |  |  |
| 25 | Dev: login to MDSS | 2009-02-11 A |  | 0% → 50% |  |  |
| 26 | Dev: BE - Submit a mosquito collection |  | 2009-02-11 A | 50% → 100% | 25.62d → none |  |
| 28 | Dev: BE - Submit collection points |  | 2009-02-12 A | 50% → 100% | 25d → none |  |
| 52 | **Aquire Geo Data** | 2009-02-10 A |  | 0% → 7% |  |  |
| 53 | **Mozambique** | 2009-02-10 A |  | 0% → 25% |  |  |
| 57 | **Priority 1: District Boundaries** | 2009-02-10 A | 2009-02-13 A | 0% → 100% | 96d → none |  |
| 58 | Data set acquired | 2009-02-10 A | 2009-02-12 A | 0% → 100% | 96d → none |  |
| 59 | Data set ready for delivery | 2009-02-13 A | 2009-02-13 A | 0% → 100% | 96d → none |  |
| 60 | **Priority 1: Administrative Post Boundaries** | 2009-02-10 A | 2009-02-13 A | 0% → 100% | 96d → none |  |
| 61 | Data set acquired | 2009-02-10 A | 2009-02-12 A | 0% → 100% | 96d → none |  |
| 62 | Data set ready for delivery | 2009-02-13 A | 2009-02-13 A | 0% → 100% | 96d → none |  |
| 63 | **Priority 1: Locality Boundaries** | 2009-02-10 A | 2009-02-13 A | 0% → 100% | 96d → none |  |
| 64 | Data set acquired | 2009-02-10 A | 2009-02-10 A | 0% → 100% | 96d → none |  |
| 65 | Data set ready for delivery | 2009-02-11 A | 2009-02-13 A | 0% → 100% | 96d → none |  |
| 72 | **Priority 1: Sentinel Site Points** | 2009-02-10 A |  | 0% → 20% |  |  |
| 73 | Data set acquired | 2009-02-10 A | 2009-02-10 A | 0% → 100% | 95d → none |  |
| 128 | **Prototype Test Cases** | 2009-02-11 A |  | 0% → 50% |  |  |
| 129 | TC: Geo Tree | 2009-02-11 A |  | 0% → 50% | 1.86d → 2.57d |  |
| 130 | TC: Searching for a geo entity | 2009-02-12 A |  | 0% → 50% |  |  |
| 135 | **Test Prototype Submit Change Requests** | 2009-03-02 A |  | 0% → 1% | 0d → 72.43d |  |
| 174 | Submit defects: Adult discriminating dose assay | 2009-03-13 A |  | 0% → 50% |  |  |
| 283 | **Complete Test Cases** | 2009-02-11 A |  | 0% → 9% | 63.39d → 64.75d |  |
| 289 | **System** | 2009-02-11 A |  | 0% → 7% | 83.75d → 88.75d |  |
| 290 | TC: Configure system variables | 2009-02-12 A | 2009-02-13 A | 0% → 100% | 82.5d → none |  |
| 305 | **Indicator Survey** | 2009-02-11 A |  | 0% → 50% | 82.5d → 93.04d |  |
| 306 | TC: Indicator survey - CRUD | 2009-02-11 A | 2009-02-12 A | 0% → 100% | 82.5d → none |  |
| 321 | **Intervention monitoring** | 2009-02-11 A |  | 0% → 11% |  |  |
| 329 | **Larvaciding** | 2009-02-11 A | 2009-02-13 A | 0% → 100% | 90d → none |  |
| 330 | TC: larviciding - CRUD | 2009-02-11 A | 2009-02-13 A | 0% → 100% | 90d → none |  |
| 347 | Receive all historical entomological data | 2009-05-04 → 2009-02-12 (-81d) | 2009-05-04 → 2009-02-12 (-81d) |  | 40d → 97d | constraint start no earlier than 2009-05-04 → start no earlier than 2009-02-12 |
| 348 | Import historical entomological data | 2009-05-05 → 2009-02-13 (-81d) | 2009-05-05 → 2009-02-13 (-81d) |  | 40d → 97d |  |
| 351 | Order MDSS Hardware | 2009-02-02 → 2009-04-01 (+58d) | 2009-02-02 → 2009-04-01 (+58d) |  | 107d → 65d | constraint none → start no earlier than 2009-04-01 |
| 352 | Appoint MDSS Administrators | 2009-02-02 → 2009-06-01 (+119d) | 2009-02-02 → 2009-06-01 (+119d) |  | 107d → 22d | constraint none → start no earlier than 2009-06-01 |

## Version 3 (saved 2009-02-23, file MDSS_Project_Plan.mpp)

Note of the change: Status report 24.feb.09 with additional project planning files to support the Microsoft project plan

Last finish stays 2009-06-30. Complete tasks 14 → 27.

Added:

| ID | Task | Duration | Start | Finish | Predecessors | Constraint | Resources |
| --- | --- | --- | --- | --- | --- | --- | --- |
| 40 | Dev: MO Importer | 40h | 2009-03-02 | 2009-03-06 | 36 | start no earlier than 2009-03-02 | Eric |

Removed: 37 Dev: GUI - configure import interfaces; 298 TC: Add localisable character attributes; 299 TC: CRUD on localisable fields; 300 TC: CRUD screen for defining geography universals

Changed:

| ID | Task | Start | Finish | Duration | Complete | Total float | Predecessors | Other |
| --- | --- | --- | --- | --- | --- | --- | --- | --- |
| 1 | **MDSS Implementation** |  | 2009-05-28 → 2009-06-22 (+25d) | 83.76d? → 101d? | 7% → 14% | 23.24d → 6d |  |  |
| 2 | **Create Prototype (Entomology)** |  | 2009-03-20 → 2009-05-11 (+52d) | 34.12d? → 70.41d? | 22% → 43% | 71.88d → 35.59d |  |  |
| 3 | **System requirements** |  | 2009-03-13 → 2009-03-26 (+13d) | 30d? → 39d? | 28% → 56% | 76d → 67d |  |  |
| 4 | Dev: Ontology Schema MIRO |  | 2009-02-13 → 2009-02-23 A (+10d) | 10d → 15.5d | 60% → 100% | 23.24d → none |  |  |
| 5 | Dev: Geography MOJO attributes (PostGIS phase 1) |  | 2009-02-17 → 2009-02-24 (+7d) | 11.76d? → 17d | 25% → 88% | 43.77d → 83.65d |  | constraint none → finish no earlier than 2009-02-24 |
| 6 | Dev: Geography functions integrated into the query API | 2009-02-17 A → 2009-02-26 (+9d) | 2009-02-25 → 2009-03-02 (+5d) | 5.88d? → 3d | 25% → 0% | 42.29d → 82.65d |  | constraint none → finish no earlier than 2009-03-02 |
| 7 | Dev: Finalyse the MOJO schema for geo entities | 2009-02-25 → 2009-03-03 (+6d) | 2009-02-27 → 2009-03-05 (+6d) |  |  | 42.29d → 38.94d |  |  |
| 8 | Dev: GIS visual tool integration | 2009-02-16 A → 2009-02-02 (-14d) | 2009-02-25 → 2009-03-04 (+7d) | 7.06d? → 8d | 75% → 0% | 28.24d → 83d | 4 → none | resources Thomas (Oz) [85%] → Naifeh |
| 9 | Dev: Geoserver integration | 2009-02-25 A → 2009-02-16 (-9d) | 2009-03-06 → 2009-03-03 (-3d) | 7.06d? → 6d? | 50% → 0% | 24.71d → 21.24d | 8 → none | constraint none → start no earlier than 2009-02-15; resources Thomas (Oz) [85%] → Naifeh |
| 10 | Dev: DHTML tree widget selection and integration | 2009-02-11 A | 2009-02-17 → 2009-02-23 A (+6d) | 5d? → 8.5d | 0% → 100% | 50.29d → none |  | resources External TF1 → Naifeh |
| 11 | Dev: import/export an XLS file with a pre-populated headers | 2009-02-11 A | 2009-02-18 → 2009-02-19 A (+1d) | 6d? → 7d | 0% → 100% | 91d → none |  | resources External TF2 → Eric |
| 12 | Dev: Import XLS file. Map column headers to fields of a class | 2009-02-19 → 2009-02-20 A (+1d) | 2009-02-20 → 2009-02-23 A (+3d) |  | 0% → 100% | 91d → none |  | resources External TF2 → Eric |
| 13 | Dev: Represent query criteria as in a user interface | 2009-02-18 → 2009-03-05 (+15d) | 2009-02-24 → 2009-03-11 (+15d) |  |  | 78d → 20.24d | 10 → 10, 9 | constraint none → start no earlier than 2009-03-05; resources External TF1 → Naifeh |
| 14 | Dev: Represent query criteria in back-end | 2009-02-25 → 2009-03-19 (+22d) | 2009-03-03 → 2009-03-25 (+22d) |  |  | 78d → 62d | 13 → 13, 16 | resources External TF1 → Naifeh |
| 15 | Dev: Save query criteria to the database | 2009-03-04 → 2009-03-26 (+22d) | 2009-03-04 → 2009-03-26 (+22d) |  |  | 78d → 62d |  | resources External TF1 → Naifeh |
| 16 | Dev: Generic GIS visualisation and output requirements | 2009-03-06 A → 2009-03-12 (+6d) | 2009-03-13 → 2009-03-18 (+5d) | 47.06h → 40h | 25% → 0% | 23.24d → 20.24d | 9 → 9, 13 | resources Thomas (Oz) [85%] → Naifeh |
| 17 | **Prototype Use cases** |  | 2009-03-20 → 2009-05-11 (+52d) | 29.12d? → 65.41d? | 13% → 24% | 42.29d → 6d |  |  |
| 18 | **Search for a geo entity** | 2009-02-27 → 2009-02-20 (-7d) | 2009-03-20 → 2009-05-11 (+52d) | 14.12d? → 56.12d? |  | 42.29d → 6d |  |  |
| 19 | Dev: Search for a geo entity - ontology tree | 2009-02-27 → 2009-02-20 (-7d) | 2009-03-06 → 2009-04-27 (+52d) | 4.71d? → 5.71d? |  | 42.29d → 6d | 7, 10 → none | constraint none → finish no earlier than 2009-04-27 |
| 20 | Dev: Search for a geo entity - filtered | 2009-03-06 → 2009-04-28 (+53d) | 2009-03-11 → 2009-04-30 (+50d) |  |  | 42.29d → 6d |  |  |
| 21 | Dev: Search for a geo entity - Hierarchy table | 2009-03-11 → 2009-04-30 (+50d) | 2009-03-13 → 2009-05-04 (+52d) |  |  | 42.29d → 6d |  |  |
| 22 | Dev: Search for a geo entity - combo boxes | 2009-03-13 → 2009-05-04 (+52d) | 2009-03-18 → 2009-05-08 (+51d) |  |  | 42.29d → 6d |  |  |
| 23 | Dev: Search for a geo entity - finalise | 2009-03-18 → 2009-05-08 (+51d) | 2009-03-20 → 2009-05-11 (+52d) |  |  | 42.29d → 6d |  |  |
| 25 | Dev: login to MDSS |  | 2009-02-11 A |  | 50% → 100% | 37d → none |  |  |
| 27 | Dev: GUI - Submit a mosquito collection | 2009-02-11 → 2009-02-18 A (+7d) | 2009-02-13 → 2009-02-20 A (+7d) |  | 0% → 100% | 37d → none |  | constraint none → start no earlier than 2009-02-18 |
| 29 | Dev: GUI - Submit collection points | 2009-02-16 → 2009-02-24 (+8d) | 2009-02-17 → 2009-02-25 (+8d) |  |  | 37d → 31.25d |  | constraint none → start no earlier than 2009-02-24 |
| 30 | Dev: BE - Resistance Mechanisms |  | 2009-02-17 → 2009-02-24 (+7d) | 2.5d? → 5.75d | 50% → 80% | 23.75d → 32d |  |  |
| 31 | Dev: GUI - Resistance Mechanisms | 2009-02-17 → 2009-02-25 (+8d) | 2009-02-24 → 2009-03-04 (+8d) |  |  | 37d → 31.25d |  |  |
| 32 | Dev: BE - Resistance cut-off values | 2009-02-17 → 2009-02-20 A (+3d) | 2009-02-18 → 2009-02-23 A (+5d) |  | 0% → 100% | 23.75d → none | 30 → none |  |
| 33 | Dev: GUI - Resistance cut-off values | 2009-02-24 → 2009-03-04 (+8d) | 2009-02-25 → 2009-03-05 (+8d) |  |  | 37d → 31d |  |  |
| 34 | Dev: BE - Adult discriminating dose assay | 2009-02-18 → 2009-02-23 A (+5d) | 2009-02-20 → 2009-02-24 (+4d) | 2.5d? → 1.25d? | 0% → 50% | 23.75d → 23.5d |  |  |
| 35 | Dev: GUI - Adult discriminating dose assay | 2009-02-25 → 2009-03-05 (+8d) | 2009-02-27 → 2009-03-09 (+10d) |  |  | 37d → 31d |  |  |
| 36 | Dev: Configure import interfaces | 2009-02-23 → 2009-02-24 (+1d) | 2009-02-24 → 2009-02-25 (+1d) | 10h → 16h |  | 23.75d → 36.75d | 34 → none | was named Dev: BE - configure import interfaces; constraint none → start no earlier than 2009-02-24; resources Justin [80%] → Eric |
| 37 | Dev: BE - Entomology dynamic query |  |  |  |  | 23.75d → 23.5d | 36 → 34 |  |
| 38 | Dev: GUI - Entomology dynamic query | 2009-03-03 → 2009-03-10 (+7d) | 2009-03-05 → 2009-03-12 (+7d) |  |  | 37d → 31.25d | Dev: GUI - configure import interfaces, 37 → 37, 35 |  |
| 39 | Dev: Enquiry integration with selected reporting tool | 2009-02-26 → 2009-02-27 (+1d) |  |  |  | 23.75d → 23.5d |  |  |
| 41 | Dev: change visibility of fields on GUI | 2009-03-05 → 2009-03-12 (+7d) | 2009-03-11 → 2009-03-19 (+8d) | 32h → 40h |  | 37d → 31.25d | 38, 39 → 38, 40 | resources Darrell → Eric |
| 42 | Delivery of prototype | 2009-03-20 → 2009-05-11 (+52d) | 2009-03-23 → 2009-05-12 (+50d) |  |  | 71.88d → 35.59d |  |  |
| 44 | Dev:BE - Biochemical cut-off values | 2009-03-04 → 2009-03-05 (+1d) |  |  |  | 23.75d → 23.5d |  |  |
| 45 | Dev: GUI - Biochemical cut-off values | 2009-03-11 → 2009-03-19 (+8d) | 2009-03-12 → 2009-03-20 (+8d) |  |  | 37d → 31.25d |  |  |
| 46 | Dev: BE - Adult knock down assay | 2009-03-05 → 2009-03-06 (+1d) |  |  |  | 23.75d → 23.5d |  |  |
| 47 | Dev: GUI - Adult knock down assay | 2009-03-13 → 2009-03-20 (+7d) | 2009-03-16 → 2009-03-24 (+8d) |  |  | 37d → 31.25d |  |  |
| 49 | Dev: GUI - Larvae discriminating dose assay | 2009-03-16 → 2009-03-24 (+8d) | 2009-03-18 → 2009-03-26 (+8d) |  |  | 37d → 31.25d |  |  |
| 50 | Dev: BE - Efficacy assay | 2009-03-10 → 2009-03-11 (+1d) |  |  |  | 23.75d → 23.5d |  |  |
| 51 | Dev: GUI - Efficacy assay | 2009-03-18 → 2009-03-26 (+8d) | 2009-03-23 → 2009-03-30 (+7d) |  |  | 37d → 31.25d |  |  |
| 127 | Deliver entomology data to be imported | 2009-02-20 → 2009-02-18 A (-2d) | 2009-02-20 → 2009-02-27 (+7d) | 0h → 64h | 0% → 63% | 0d → 4.29d |  | constraint must finish on 2009-02-20 → start no earlier than 2009-02-18 |
| 128 | **Prototype Test Cases** | 2009-02-11 A → 2009-02-23 (+12d) | 2009-02-13 → 2009-02-25 (+12d) |  | 50% → 0% | 1.86d → 1.43d |  |  |
| 129 | TC: Geo Tree | 2009-02-11 A → 2009-02-23 (+12d) | 2009-02-12 → 2009-02-24 (+12d) |  | 50% → 0% | 2.57d → 1.43d |  | constraint start no earlier than 2009-02-11 → start no earlier than 2009-02-21 |
| 130 | TC: Searching for a geo entity | 2009-02-12 A → 2009-02-24 (+12d) | 2009-02-13 → 2009-02-25 (+12d) |  | 50% → 0% | 1.86d → 1.43d |  |  |
| 131 | Create test cases for entomology prototype | 2009-02-11 → 2009-02-16 A (+5d) | 2009-02-20 → 2009-02-25 (+5d) |  | 0% → 63% | 81.88d → 79d |  | constraint start no earlier than 2009-02-11 → start no earlier than 2009-02-15 |
| 132 | Test defect logging procedures | 2009-02-24 → 2009-03-02 (+6d) | 2009-02-25 → 2009-03-03 (+6d) |  |  | 1.86d → 1.43d |  |  |
| 133 | Prepare entomology test data | 2009-02-27 → 2009-03-04 (+5d) | 2009-02-27 → 2009-03-05 (+6d) |  |  | 78.52d → 1.43d |  |  |
| 134 | Learn BIRT report writer | 2009-02-25 → 2009-03-03 (+6d) | 2009-02-27 → 2009-03-04 (+5d) |  |  | 1.86d → 1.43d |  |  |
| 135 | **Test Prototype Submit Change Requests** | 2009-03-02 A → 2009-03-09 A (+7d) | 2009-03-20 → 2009-03-26 (+6d) |  |  | 72.43d → 68.43d |  |  |
| 136 | **Test: Geo entity search and maintanance** | 2009-03-02 → 2009-03-09 (+7d) | 2009-03-12 → 2009-03-18 (+6d) |  |  |  |  |  |
| 137 | Test: login to MDSS | 2009-03-02 → 2009-03-09 (+7d) | 2009-03-02 → 2009-03-09 (+7d) |  |  |  | none → 133 | constraint must start on 2009-03-02 → start no earlier than 2009-03-09 |
| 138 | Test: Search for a geo entity - tree | 2009-03-03 → 2009-03-09 (+6d) | 2009-03-03 → 2009-03-09 (+6d) |  |  | 41.71d → 37.71d | none → 137 |  |
| 139 | Submit defects: Search for a geo entity - tree | 2009-03-03 → 2009-03-09 (+6d) | 2009-03-04 → 2009-03-10 (+6d) |  |  | 41.71d → 37.71d |  |  |
| 140 | Test: create a geo entity | 2009-03-04 → 2009-03-10 (+6d) | 2009-03-04 → 2009-03-10 (+6d) |  |  | 41.71d → 37.71d |  |  |
| 141 | Submit defects: create a geo entity | 2009-03-04 → 2009-03-10 (+6d) | 2009-03-05 → 2009-03-11 (+6d) |  |  | 41.71d → 37.71d |  |  |
| 142 | Test: Search for a geo entity - filtered | 2009-03-05 → 2009-03-11 (+6d) | 2009-03-05 → 2009-03-11 (+6d) |  |  | 41.71d → 37.71d |  |  |
| 143 | Submit defects: Search for a geo entity - filtered | 2009-03-05 → 2009-03-11 (+6d) | 2009-03-05 → 2009-03-11 (+6d) |  |  | 41.71d → 37.71d |  |  |
| 144 | Test: Search for a geo entity - Hierarchy table | 2009-03-05 → 2009-03-11 (+6d) | 2009-03-09 → 2009-03-13 (+4d) |  |  | 41.71d → 37.71d |  |  |
| 145 | Submit defects: Search for a geo entity - Hierarchy table | 2009-03-09 → 2009-03-13 (+4d) | 2009-03-10 → 2009-03-16 (+6d) |  |  | 41.71d → 37.71d |  |  |
| 146 | Test: Search for a geo entity - combo boxes | 2009-03-10 → 2009-03-16 (+6d) | 2009-03-10 → 2009-03-16 (+6d) |  |  | 41.71d → 37.71d |  |  |
| 147 | Submit defects: Search for a geo entity - combo boxes | 2009-03-10 → 2009-03-16 (+6d) | 2009-03-10 → 2009-03-16 (+6d) |  |  | 41.71d → 37.71d |  |  |
| 148 | Test: Call 101 from 024, 016, 025 | 2009-03-10 → 2009-03-16 (+6d) | 2009-03-11 → 2009-03-17 (+6d) |  |  | 41.71d → 37.71d |  |  |
| 149 | Submit defects: Call 101 from 024, 016, 025 | 2009-03-11 → 2009-03-17 (+6d) | 2009-03-11 → 2009-03-17 (+6d) |  |  | 41.71d → 37.71d |  |  |
| 150 | Write change request MDSS101, MDSS111 | 2009-03-11 → 2009-03-17 (+6d) | 2009-03-12 → 2009-03-18 (+6d) |  |  | 41.71d → 37.71d |  |  |
| 151 | Test: changing visibility of fields in GUI | 2009-03-12 → 2009-03-18 (+6d) | 2009-03-12 → 2009-03-18 (+6d) |  |  | 41.71d → 37.71d |  |  |

| ID | Task | Start | Finish | Duration | Complete | Total float | Predecessors | Other |
| --- | --- | --- | --- | --- | --- | --- | --- | --- |
| 152 | Submit defects: changing visibility of fields in GUI | 2009-03-12 → 2009-03-18 (+6d) | 2009-03-12 → 2009-03-18 (+6d) |  |  | 41.71d → 37.71d |  |  |
| 185 | **Test: Entomology dynamic query and reports** | 2009-03-12 → 2009-03-18 (+6d) | 2009-03-20 → 2009-03-26 (+6d) |  |  | 72.43d → 68.43d |  |  |
| 186 | Test: add Geo-entity fields | 2009-03-12 → 2009-03-18 (+6d) | 2009-03-12 → 2009-03-18 (+6d) |  |  | 72.43d → 68.43d |  |  |
| 187 | Test: add other fields | 2009-03-12 → 2009-03-18 (+6d) | 2009-03-13 → 2009-03-19 (+6d) |  |  | 72.43d → 68.43d |  |  |
| 188 | Test: add functions | 2009-03-13 → 2009-03-19 (+6d) | 2009-03-13 → 2009-03-19 (+6d) |  |  | 72.43d → 68.43d |  |  |
| 189 | Test: date ranges on collection date or assay date | 2009-03-13 → 2009-03-19 (+6d) | 2009-03-13 → 2009-03-19 (+6d) |  |  | 72.43d → 68.43d |  |  |
| 190 | Submit defects: Build query | 2009-03-13 → 2009-03-19 (+6d) | 2009-03-13 → 2009-03-19 (+6d) |  |  | 72.43d → 68.43d |  |  |
| 191 | Test: save query | 2009-03-13 → 2009-03-19 (+6d) | 2009-03-13 → 2009-03-19 (+6d) |  |  | 72.43d → 68.43d |  |  |
| 192 | Test: run a saved query | 2009-03-13 → 2009-03-19 (+6d) | 2009-03-16 → 2009-03-20 (+4d) |  |  | 72.43d → 68.43d |  |  |
| 193 | Test: modify a saved query | 2009-03-16 → 2009-03-20 (+4d) | 2009-03-16 → 2009-03-20 (+4d) |  |  | 72.43d → 68.43d |  |  |
| 194 | Test: export query results | 2009-03-16 → 2009-03-20 (+4d) | 2009-03-16 → 2009-03-20 (+4d) |  |  | 72.43d → 68.43d |  |  |
| 195 | Test: dump functionality | 2009-03-16 → 2009-03-20 (+4d) | 2009-03-16 → 2009-03-20 (+4d) |  |  | 72.43d → 68.43d |  |  |
| 196 | Submit defects: deploy query | 2009-03-16 → 2009-03-20 (+4d) | 2009-03-17 → 2009-03-23 (+6d) |  |  | 72.43d → 68.43d |  |  |
| 197 | Test: create thematic map from query | 2009-03-17 → 2009-03-23 (+6d) | 2009-03-18 → 2009-03-24 (+6d) |  |  | 72.43d → 68.43d |  |  |
| 198 | Test: find query results in BIRT | 2009-03-18 → 2009-03-24 (+6d) | 2009-03-18 → 2009-03-24 (+6d) |  |  | 72.43d → 68.43d |  |  |
| 199 | Test: create a report template (table) | 2009-03-18 → 2009-03-24 (+6d) | 2009-03-18 → 2009-03-24 (+6d) |  |  | 72.43d → 68.43d |  |  |
| 200 | Test: Link a report template to query | 2009-03-18 → 2009-03-24 (+6d) | 2009-03-19 → 2009-03-25 (+6d) |  |  | 72.43d → 68.43d |  |  |
| 201 | Test: view/print/save a report | 2009-03-19 → 2009-03-25 (+6d) | 2009-03-19 → 2009-03-25 (+6d) |  |  | 72.43d → 68.43d |  |  |
| 202 | Test: change linked report | 2009-03-19 → 2009-03-25 (+6d) | 2009-03-19 → 2009-03-25 (+6d) |  |  | 72.43d → 68.43d |  |  |
| 203 | Submit defects: deploy query | 2009-03-19 → 2009-03-25 (+6d) | 2009-03-19 → 2009-03-25 (+6d) |  |  | 72.43d → 68.43d |  |  |
| 204 | Write change request: Dynamic query | 2009-03-19 → 2009-03-25 (+6d) | 2009-03-20 → 2009-03-26 (+6d) |  |  | 72.43d → 68.43d |  |  |
| 205 | **Finalise Query Use Cases** | 2009-02-13 → 2009-02-23 A (+10d) | 2009-04-08 → 2009-04-14 (+6d) | 38.11d → 36.97d | 0% → 6% | 1.86d → 40.75d |  |  |
| 206 | UC: Individual Cases - query | 2009-02-18 → 2009-02-23 A (+5d) | 2009-02-20 → 2009-02-24 (+4d) |  | 0% → 50% | 1.86d → 2.86d | 208 → none | constraint none → start no earlier than 2009-02-21; resources Marlize [70%] → Miguel [70%] |
| 207 | UC: Aggregated Cases - query | 2009-02-13 → 2009-02-25 (+12d) | 2009-02-17 → 2009-02-27 (+10d) |  |  | 1.86d → 33.71d |  | constraint none → start no earlier than 2009-02-24; resources Marlize [70%] → Miguel [70%] |
| 208 | UC: Indicator survey - query | 2009-02-17 → 2009-02-27 (+10d) | 2009-02-18 → 2009-03-02 (+12d) |  |  | 1.86d → 36.29d |  | resources Marlize [70%] → Miguel [70%] |
| 209 | UC: IRS - query | 2009-02-20 → 2009-02-25 (+5d) | 2009-02-24 → 2009-03-02 (+6d) |  |  | 1.86d → 1.43d | 206 → 206, 130 |  |
| 210 | UC: ITN FacilityCommunity distribution - query | 2009-04-01 → 2009-04-07 (+6d) | 2009-04-02 → 2009-04-08 (+6d) |  |  | 41.71d → 37.71d |  |  |
| 211 | UC: ITN household use - query | 2009-04-02 → 2009-04-08 (+6d) | 2009-04-06 → 2009-04-10 (+4d) |  |  | 41.71d → 37.71d |  |  |
| 212 | UC: IPT individual - query | 2009-04-06 → 2009-04-10 (+4d) | 2009-04-07 → 2009-04-13 (+6d) |  |  | 41.71d → 37.71d |  |  |
| 213 | UC: IPT aggregated - query | 2009-04-07 → 2009-04-13 (+6d) | 2009-04-08 → 2009-04-14 (+6d) |  |  | 44.75d → 40.75d |  |  |
| 214 | **Complete Development** |  | 2009-05-28 → 2009-06-22 (+25d) | 63.76d? → 81d? |  | 23.24d → 6d |  |  |
| 215 | **Generic Development** | 2009-03-05 → 2009-03-13 (+8d) | 2009-04-22 → 2009-06-11 (+50d) | 34.65d? → 64.44d? |  | 30d → 13.06d |  |  |
| 216 | Dev: Reconstruct saved query | 2009-03-20 → 2009-05-11 (+52d) | 2009-03-27 → 2009-05-19 (+53d) |  |  | 42.29d → 6d |  |  |
| 217 | Dev: Overall site layout | 2009-03-27 → 2009-05-19 (+53d) | 2009-04-06 → 2009-05-27 (+51d) |  |  | 42.29d → 6d |  |  |
| 218 | Dev: Configure system variables | 2009-03-23 → 2009-03-31 (+8d) | 2009-03-24 → 2009-03-31 (+7d) |  |  | 37d → 31.25d |  |  |
| 219 | Dev: maintain catalogues | 2009-04-06 → 2009-05-27 (+51d) | 2009-04-10 → 2009-06-01 (+52d) |  |  | 42.29d → 6d |  |  |
| 220 | Dev: Epi week - set or change | 2009-03-13 → 2009-03-19 (+6d) | 2009-03-18 → 2009-03-23 (+5d) |  |  | 23.24d → 20.24d |  |  |
| 221 | Dev: define season start and end dates | 2009-03-18 → 2009-03-23 (+5d) | 2009-03-20 → 2009-03-25 (+5d) |  |  | 23.24d → 20.24d |  |  |
| 222 | Dev: enter/maintain people in the system | 2009-03-20 → 2009-03-25 (+5d) | 2009-03-25 → 2009-03-30 (+5d) |  |  | 23.24d → 20.24d |  |  |
| 224 | Dev: User Admin Screen for account management |  |  |  |  |  |  | resources External TF1 → Naifeh |
| 225 | Dev: user Admin Screen for Role assignment | 2009-04-10 → 2009-06-01 (+52d) | 2009-04-14 → 2009-06-04 (+51d) |  |  | 42.29d → 6d |  |  |
| 226 | Dev: Add localisable character attributes | 2009-04-14 → 2009-06-04 (+51d) | 2009-04-17 → 2009-06-08 (+52d) |  |  | 42.29d → 6d |  |  |
| 227 | Dev: CRUD on localisable fields | 2009-03-05 → 2009-03-27 (+22d) | 2009-03-12 → 2009-04-03 (+22d) |  |  | 78d → 62d |  | resources External TF1 → Naifeh |
| 228 | Dev: CRUD screen for defining geography universals | 2009-04-17 → 2009-06-08 (+52d) | 2009-04-22 → 2009-06-11 (+50d) |  |  | 42.29d → 6d |  |  |
| 229 | Change date/time format | 2009-03-31 → 2009-04-08 (+8d) | 2009-04-01 → 2009-04-09 (+8d) |  |  | 37d → 31.25d |  |  |
| 230 | Change geo root | 2009-04-01 → 2009-04-09 (+8d) | 2009-04-03 → 2009-04-13 (+10d) |  |  | 37d → 31.25d |  |  |
| 231 | **Indicator survey** |  | 2009-03-31 → 2009-04-07 (+7d) | 8d → 13.5d |  | 23.75d → 23.5d |  |  |
| 232 | Dev: Indicator survey - CRUD | 2009-03-24 → 2009-04-01 (+8d) | 2009-03-31 → 2009-04-07 (+7d) |  |  | 37d → 31.25d |  |  |
| 234 | **Case Surveilance** |  |  | 48.25d → 48.5d |  | 23.75d → 23.5d |  |  |
| 236 | Dev: calculate CFR | 2009-03-25 → 2009-03-30 (+5d) | 2009-03-31 → 2009-04-03 (+3d) |  |  | 23.24d → 20.24d |  |  |
| 243 | Dev: calculate incidence | 2009-03-31 → 2009-04-03 (+3d) | 2009-04-08 → 2009-04-13 (+5d) |  |  | 23.24d → 20.24d |  |  |
| 245 | Dev: Outbreak notification | 2009-04-08 → 2009-04-13 (+5d) | 2009-04-16 → 2009-04-21 (+5d) |  |  | 23.24d → 20.24d |  |  |
| 247 | **Intervention monitoring** |  | 2009-05-28 → 2009-06-17 (+20d) | 44.26d → 57.72d |  | 23.24d → 9.53d |  |  |
| 248 | **IRS** |  | 2009-05-21 → 2009-06-17 (+27d) | 38.75d → 57.72d |  | 23.75d → 6d |  |  |
| 252 | Dev: GUI - input or modify IRS targets |  | 2009-05-12 → 2009-05-13 (+1d) |  |  | 23.75d → 23.5d |  |  |
| 255 | Dev: IRS - CRUD | 2009-04-22 → 2009-06-11 (+50d) | 2009-04-28 → 2009-06-17 (+50d) |  |  | 42.29d → 6d |  |  |
| 258 | **Larvaciding** | 2009-04-16 → 2009-04-21 (+5d) | 2009-04-23 → 2009-04-28 (+5d) |  |  | 23.24d → 20.24d |  |  |
| 259 | Dev: larviciding - CRUD | 2009-04-16 → 2009-04-21 (+5d) | 2009-04-23 → 2009-04-28 (+5d) |  |  | 23.24d → 20.24d |  |  |
| 260 | **ITN** | 2009-04-23 → 2009-04-28 (+5d) | 2009-05-28 → 2009-06-02 (+5d) |  |  | 23.24d → 20.24d |  |  |
| 261 | Dev: ITN aggregated data - CRUD | 2009-04-23 → 2009-04-28 (+5d) | 2009-05-01 → 2009-05-06 (+5d) |  |  | 23.24d → 20.24d |  |  |
| 262 | Dev: ITN aggregated data - query | 2009-05-01 → 2009-05-06 (+5d) | 2009-05-04 → 2009-05-07 (+3d) |  |  | 23.24d → 20.24d |  |  |
| 263 | Dev: ITN facility distribution - CRUD | 2009-05-04 → 2009-05-07 (+3d) | 2009-05-13 → 2009-05-18 (+5d) |  |  | 23.24d → 20.24d |  |  |
| 264 | Dev: ITN community distribution - CRUD | 2009-05-13 → 2009-05-18 (+5d) | 2009-05-19 → 2009-05-22 (+3d) |  |  | 23.24d → 20.24d |  |  |
| 265 | Dev: ITN by facility/community - query | 2009-05-19 → 2009-05-22 (+3d) | 2009-05-20 → 2009-05-25 (+5d) |  |  | 23.24d → 20.24d |  |  |
| 266 | Dev: ITN by household - CRUD | 2009-05-20 → 2009-05-25 (+5d) | 2009-05-28 → 2009-06-02 (+5d) |  |  | 23.24d → 20.24d |  |  |
| 268 | **Intervention Planning** |  | 2009-04-28 → 2009-04-29 (+1d) |  |  | 23.75d → 23.5d |  |  |
| 270 | Dev: GUI - Intervention planning |  | 2009-04-28 → 2009-04-29 (+1d) |  |  | 23.75d → 23.5d |  |  |
| 274 | Dev: IPT aggregated - query | 2009-04-27 → 2009-04-28 (+1d) |  |  |  | 27.5d → 27.25d |  |  |
| 275 | Dev: BE - IPT individual - CRUD | 2009-05-04 → 2009-05-05 (+1d) |  |  |  | 27.5d → 27.25d |  |  |
| 276 | Dev: GUI - IPT individual - CRUD | 2009-05-25 → 2009-05-26 (+1d) |  |  |  | 23.75d → 23.5d |  |  |

| ID | Task | Start | Finish | Duration | Complete | Total float | Predecessors | Other |
| --- | --- | --- | --- | --- | --- | --- | --- | --- |
| 278 | Dev: BE - Stock Control | 2009-04-28 → 2009-06-17 (+50d) | 2009-05-01 → 2009-06-22 (+52d) |  |  | 42.29d → 6d |  |  |
| 283 | **Complete Test Cases** |  | 2009-04-01 → 2009-04-07 (+6d) | 35.25d? → 39.25d? | 9% → 31% | 64.75d → 60.75d |  |  |
| 289 | **System** |  | 2009-02-26 → 2009-03-13 (+15d) | 11.25d → 23d | 7% → 37% | 88.75d → 77d |  |  |
| 291 | TC: maintain catalogues | 2009-02-13 A |  |  | 0% → 40% | 82.5d → 96.25d |  |  |
| 292 | TC: Epi week - set or change | 2009-02-16 A | 2009-02-17 A |  | 0% → 100% | 82.5d → none |  |  |
| 293 | TC: define season start and end dates | 2009-02-18 → 2009-02-23 (+5d) | 2009-02-19 → 2009-02-24 (+5d) |  |  | 82.5d → 78.25d |  | constraint none → start no earlier than 2009-02-21 |
| 294 | TC: enter/maintain people in the system | 2009-02-19 → 2009-02-24 (+5d) | 2009-02-20 → 2009-02-25 (+5d) |  |  | 82.5d → 78.25d |  | constraint none → start no earlier than 2009-02-21 |
| 295 | TC: create synonyms for imported Geo entities | 2009-02-20 → 2009-02-25 (+5d) | 2009-02-23 → 2009-02-26 (+3d) |  |  | 82.5d → 78.25d |  |  |
| 296 | TC: User Admin Screen for account management | 2009-02-11 A | 2009-02-12 A |  | 0% → 100% | 88.75d → none |  |  |
| 297 | TC: user Admin Screen for Role assignment | 2009-02-12 A | 2009-02-13 A |  | 0% → 100% | 88.75d → none |  |  |
| 298 | TC: Change date/time format | 2009-02-19 → 2009-03-09 (+18d) | 2009-02-20 → 2009-03-10 (+18d) |  |  | 88.75d → 77d | TC: CRUD screen for defining geography universals → 297 | constraint none → start no earlier than 2009-02-21 |
| 299 | TC: Change geo root | 2009-02-20 → 2009-03-10 (+18d) | 2009-02-23 → 2009-03-11 (+16d) |  |  | 88.75d → 77d |  |  |
| 300 | TC: Select the user language | 2009-02-23 → 2009-03-11 (+16d) | 2009-02-24 → 2009-03-12 (+16d) |  |  | 88.75d → 77d |  |  |
| 301 | TC: Change date/time format | 2009-02-25 → 2009-03-12 (+15d) | 2009-02-26 → 2009-03-13 (+15d) |  |  | 88.75d → 77d |  |  |
| 302 | **Indicator Survey** |  | 2009-02-19 → 2009-02-27 (+8d) | 6.96d → 13d |  | 93.04d → 78.25d |  |  |
| 304 | TC:Indicator survey query | 2009-02-18 → 2009-02-26 (+8d) | 2009-02-19 → 2009-02-27 (+8d) |  |  | 93.04d → 78.25d | 208 → 295 |  |
| 305 | **Case Surveilance** | 2009-03-12 → 2009-03-18 (+6d) | 2009-03-25 → 2009-03-31 (+6d) |  |  | 41.71d → 37.71d |  |  |
| 306 | TC: aggregated cases - CRUD | 2009-03-12 → 2009-03-18 (+6d) | 2009-03-13 → 2009-03-19 (+6d) |  |  | 41.71d → 37.71d |  |  |
| 307 | TC: calculate CFR | 2009-03-13 → 2009-03-19 (+6d) | 2009-03-16 → 2009-03-20 (+4d) |  |  | 41.71d → 37.71d |  |  |
| 308 | TC: aggregated cases - dynamic query | 2009-03-16 → 2009-03-20 (+4d) | 2009-03-16 → 2009-03-20 (+4d) |  |  | 41.71d → 37.71d |  |  |
| 309 | TC: Input or modify population data | 2009-03-16 → 2009-03-20 (+4d) | 2009-03-17 → 2009-03-23 (+6d) |  |  | 41.71d → 37.71d |  |  |
| 310 | TC: Import population or annual growth rate data | 2009-03-17 → 2009-03-23 (+6d) | 2009-03-18 → 2009-03-24 (+6d) |  |  | 41.71d → 37.71d |  |  |
| 311 | TC: input/modify outbreak thresholds | 2009-03-18 → 2009-03-24 (+6d) | 2009-03-18 → 2009-03-24 (+6d) |  |  | 41.71d → 37.71d |  |  |
| 312 | TC :import outbreak thresholds | 2009-03-18 → 2009-03-24 (+6d) | 2009-03-19 → 2009-03-25 (+6d) |  |  | 41.71d → 37.71d |  |  |
| 313 | TC: Calculate annual or seasonal population | 2009-03-19 → 2009-03-25 (+6d) | 2009-03-20 → 2009-03-26 (+6d) |  |  | 41.71d → 37.71d |  |  |
| 314 | TC: calculate incidence | 2009-03-20 → 2009-03-26 (+6d) | 2009-03-23 → 2009-03-27 (+4d) |  |  | 41.71d → 37.71d |  |  |
| 315 | TC: individual cases - CRUD | 2009-03-23 → 2009-03-27 (+4d) | 2009-03-23 → 2009-03-27 (+4d) |  |  | 41.71d → 37.71d |  |  |
| 316 | TC: Outbreak notification | 2009-03-23 → 2009-03-27 (+4d) | 2009-03-24 → 2009-03-30 (+6d) |  |  | 41.71d → 37.71d |  |  |
| 317 | TC: individual case - dynamic query | 2009-03-24 → 2009-03-30 (+6d) | 2009-03-25 → 2009-03-31 (+6d) |  |  | 41.71d → 37.71d |  |  |
| 318 | **Intervention monitoring** |  | 2009-04-01 → 2009-04-07 (+6d) | 282.04h → 314.04h | 11% → 42% | 64.75d → 60.75d |  |  |
| 319 | **IRS** | 2009-03-25 → 2009-03-31 (+6d) | 2009-03-31 → 2009-04-06 (+6d) |  |  | 41.71d → 37.71d |  |  |
| 320 | TC: enter/maintain spray team member | 2009-03-25 → 2009-03-31 (+6d) | 2009-03-25 → 2009-03-31 (+6d) |  |  | 41.71d → 37.71d |  |  |
| 321 | TC: enter/maintain IRS teams | 2009-03-25 → 2009-03-31 (+6d) | 2009-03-26 → 2009-04-01 (+6d) |  |  | 41.71d → 37.71d |  |  |
| 322 | TC: input or modify IRS targets | 2009-03-26 → 2009-04-01 (+6d) | 2009-03-27 → 2009-04-02 (+6d) |  |  | 41.71d → 37.71d |  |  |
| 323 | TC: Configure items relating to application rate | 2009-03-27 → 2009-04-02 (+6d) | 2009-03-30 → 2009-04-03 (+4d) |  |  | 41.71d → 37.71d |  |  |
| 324 | TC: IRS - CRUD | 2009-03-30 → 2009-04-03 (+4d) | 2009-03-30 → 2009-04-03 (+4d) |  |  | 41.71d → 37.71d |  |  |
| 325 | TC: IRS - dynamic query | 2009-03-30 → 2009-04-03 (+4d) | 2009-03-31 → 2009-04-06 (+6d) |  |  | 41.71d → 37.71d |  |  |
| 328 | **ITN** | 2009-02-23 → 2009-03-02 (+7d) | 2009-03-06 → 2009-03-12 (+6d) |  |  | 82.5d → 78.25d |  |  |
| 329 | TC: ITN aggregated data - CRUD | 2009-02-23 → 2009-03-02 (+7d) | 2009-02-24 → 2009-03-03 (+7d) |  |  | 82.5d → 78.25d | 295 → 304 |  |
| 330 | TC: ITN aggregated data - query | 2009-02-25 → 2009-03-03 (+6d) | 2009-02-26 → 2009-03-04 (+6d) |  |  | 82.5d → 78.25d |  |  |
| 331 | TC: ITN facility distribution - CRUD | 2009-02-26 → 2009-03-04 (+6d) | 2009-02-27 → 2009-03-05 (+6d) |  |  | 82.5d → 78.25d |  |  |
| 332 | TC: ITN community distribution - CRUD | 2009-02-27 → 2009-03-05 (+6d) | 2009-03-02 → 2009-03-06 (+4d) |  |  | 82.5d → 78.25d |  |  |
| 333 | TC: ITN by facility/community - query | 2009-03-02 → 2009-03-09 (+7d) | 2009-03-03 → 2009-03-10 (+7d) |  |  | 82.5d → 78.25d |  |  |
| 334 | TC: ITN by household - CRUD | 2009-03-04 → 2009-03-10 (+6d) | 2009-03-05 → 2009-03-11 (+6d) |  |  | 82.5d → 78.25d |  |  |
| 335 | TC: ITN by household - query | 2009-03-05 → 2009-03-11 (+6d) | 2009-03-06 → 2009-03-12 (+6d) |  |  | 82.5d → 78.25d |  |  |
| 336 | **Intervention Planning** | 2009-03-31 → 2009-04-06 (+6d) | 2009-04-01 → 2009-04-07 (+6d) |  |  | 41.71d → 37.71d |  |  |
| 337 | TC: Intervention planning | 2009-03-31 → 2009-04-06 (+6d) | 2009-04-01 → 2009-04-07 (+6d) |  |  | 41.71d → 37.71d |  |  |
| 338 | **IPT** | 2009-02-13 A | 2009-02-20 A |  | 0% → 100% | 90d → none |  |  |
| 339 | TC: IPT aggregated - CRUD | 2009-02-13 A | 2009-02-17 A |  | 0% → 100% | 90d → none |  |  |
| 340 | TC: IPT individual - CRUD | 2009-02-18 A | 2009-02-20 A |  | 0% → 100% | 90d → none |  |  |
| 341 | **Stock Control** | 2009-02-20 A | 2009-02-24 A |  | 0% → 100% | 90d → none |  |  |
| 342 | TC: Stock Control | 2009-02-20 A | 2009-02-24 A |  | 0% → 100% | 90d → none |  |  |
| 343 | Create standard queries and reports | 2009-04-08 → 2009-04-14 (+6d) | 2009-04-29 → 2009-05-05 (+6d) |  |  | 44.75d → 40.75d |  |  |
| 344 | Receive all historical entomological data | 2009-02-12 → 2009-03-06 (+22d) | 2009-02-12 → 2009-03-06 (+22d) |  |  | 97d → 81d |  | constraint start no earlier than 2009-02-12 → start no earlier than 2009-03-06 |
| 345 | Import historical entomological data | 2009-02-13 → 2009-03-09 (+24d) | 2009-02-13 → 2009-03-09 (+24d) |  |  | 97d → 81d |  |  |

## Version 4 (saved 2009-02-26, file 09 02 26 MDSS_Project_Plan selected.mpp)

Note of the change: Release of selected tasks of Project Plan from Marlize 26.Feb.09

Last finish stays 2009-06-30. Complete tasks 27 → 33.

Removed: 7 Dev: Finalyse the MOJO schema for geo entities; 256 Dev: IRS - CRUD

Changed:

| ID | Task | Start | Finish | Duration | Complete | Total float | Predecessors | Other |
| --- | --- | --- | --- | --- | --- | --- | --- | --- |
| 1 | **MDSS Implementation** |  | 2009-06-22 → 2009-06-11 (-11d) | 101d? → 93.76d? | 14% → 15% | 6d → 13.24d |  |  |
| 2 | **Create Prototype (Entomology)** |  | 2009-05-11 → 2009-04-06 (-35d) | 70.41d? → 46d? | 43% → 48% | 35.59d → 60d |  |  |
| 3 | **System requirements** |  | 2009-03-26 → 2009-04-06 (+11d) | 39d? → 46d? | 56% → 65% | 67d → 60d |  |  |
| 5 | Dev: Geography MOJO attributes (PostGIS phase 1) |  |  |  | 88% → 95% |  |  |  |
| 7 | Dev: GIS visual tool integration | 2009-02-02 A |  |  | 0% → 35% |  |  |  |
| 8 | Dev: Geoserver integration | 2009-02-16 → 2009-02-12 A (-4d) |  | 6d? → 8d | 0% → 38% | 21.24d → 26.24d |  | constraint start no earlier than 2009-02-15 → finish no earlier than 2009-03-03 |
| 12 | Dev: Represent query criteria as in a user interface | 2009-03-05 → 2009-03-16 (+11d) | 2009-03-11 → 2009-03-20 (+9d) |  |  | 20.24d → 13.24d | 9, 8 → 9 | constraint start no earlier than 2009-03-05 → start no earlier than 2009-03-14 |
| 13 | Dev: Represent query criteria in back-end | 2009-03-19 → 2009-03-30 (+11d) | 2009-03-25 → 2009-04-03 (+9d) |  |  | 62d → 55d |  |  |
| 14 | Dev: Save query criteria to the database | 2009-03-26 → 2009-04-06 (+11d) | 2009-03-26 → 2009-04-06 (+11d) |  |  | 62d → 55d |  |  |
| 15 | Dev: Generic GIS visualisation and output requirements | 2009-03-12 → 2009-03-23 (+11d) | 2009-03-18 → 2009-03-27 (+9d) |  |  | 20.24d → 13.24d |  |  |
| 16 | **Prototype Use cases** |  | 2009-05-11 → 2009-03-16 (-56d) | 65.41d? → 25.41d? | 24% → 23% | 6d → 75.59d |  |  |
| 17 | **Search for a geo entity** |  | 2009-05-11 → 2009-03-16 (-56d) | 56.12d? → 15.76d? |  | 6d → 52.35d |  |  |
| 18 | Dev: Search for a geo entity - ontology tree |  | 2009-04-27 → 2009-03-02 (-56d) | 5.71d? → 4d? |  | 6d → 85d |  | constraint finish no earlier than 2009-04-27 → finish no earlier than 2009-03-02; resources Nathan [85%] → Naifeh |
| 19 | Dev: Search for a geo entity - filtered | 2009-04-28 → 2009-03-03 (-56d) | 2009-04-30 → 2009-03-05 (-56d) |  |  | 6d → 46d | 18 → 6 |  |
| 20 | Dev: Search for a geo entity - Hierarchy table | 2009-04-30 → 2009-03-05 (-56d) | 2009-05-04 → 2009-03-09 (-56d) |  |  | 6d → 46d |  |  |
| 21 | Dev: Search for a geo entity - combo boxes | 2009-05-04 → 2009-03-09 (-56d) | 2009-05-08 → 2009-03-13 (-56d) |  |  | 6d → 46d |  |  |
| 22 | Dev: Search for a geo entity - finalise | 2009-05-08 → 2009-03-13 (-56d) | 2009-05-11 → 2009-03-16 (-56d) |  |  | 6d → 46d |  |  |
| 27 | Dev: GUI - Adult discriminating dose assay | 2009-03-05 → 2009-02-24 A (-9d) | 2009-03-09 → 2009-02-26 (-11d) |  | 0% → 50% | 31d → 47.5d | 33, 34 → 34, 26 |  |
| 29 | Dev: GUI - Submit collection points | 2009-02-24 → 2009-02-27 (+3d) | 2009-02-25 → 2009-03-02 (+5d) |  |  | 31.25d → 47.5d | 26, 28 → 28, 27 |  |
| 30 | Dev: BE - Resistance Mechanisms | 2009-02-12 A → 2009-02-23 (+11d) | 2009-02-24 → 2009-03-02 (+6d) |  | 80% → 0% | 32d → 25.25d |  | constraint none → finish no earlier than 2009-03-02 |
| 31 | Dev: GUI - Resistance Mechanisms | 2009-02-25 → 2009-03-03 (+6d) |  | 40h → 16h |  | 31.25d → 46.75d |  | constraint none → finish no earlier than 2009-03-04; resources Darrell [80%] → Darrell [200%] |
| 33 | Dev: GUI - Resistance cut-off values | 2009-03-04 → 2009-03-05 (+1d) | 2009-03-05 → 2009-03-06 (+1d) |  |  | 31d → 46.75d |  |  |
| 36 | Dev: BE - Entomology dynamic query | 2009-02-24 A |  |  | 0% → 70% | 23.5d → 52d |  |  |
| 37 | Dev: GUI - Entomology dynamic query | 2009-03-10 → 2009-03-06 (-4d) | 2009-03-12 → 2009-03-10 (-2d) |  |  | 31.25d → 46.75d | 36, 27 → 36, 33, 27 |  |
| 38 | Dev: Enquiry integration with selected reporting tool | 2009-02-27 → 2009-03-03 (+4d) | 2009-03-04 → 2009-03-06 (+2d) |  |  | 23.5d → 25.25d | 36 → 30 |  |
| 40 | Dev: change visibility of fields on GUI | 2009-03-12 → 2009-03-09 (-3d) | 2009-03-19 → 2009-03-13 (-6d) |  |  | 31.25d → 43.5d | 37, 39 → 39 |  |
| 41 | Delivery of prototype | 2009-05-11 → 2009-04-07 (-34d) | 2009-05-12 → 2009-04-07 (-35d) |  |  | 35.59d → 60d |  |  |
| 43 | Dev:BE - Biochemical cut-off values | 2009-03-05 → 2009-03-09 (+4d) | 2009-03-05 → 2009-03-09 (+4d) |  |  | 23.5d → 25.25d |  |  |
| 44 | Dev: GUI - Biochemical cut-off values | 2009-03-19 → 2009-03-16 (-3d) | 2009-03-20 → 2009-03-17 (-3d) |  |  | 31.25d → 43.5d | 43, 40 → 43, 40, 37 |  |
| 45 | Dev: BE - Adult knock down assay | 2009-03-06 → 2009-03-10 (+4d) | 2009-03-09 → 2009-03-11 (+2d) |  |  | 23.5d → 25.25d |  |  |
| 46 | Dev: GUI - Adult knock down assay | 2009-03-20 → 2009-03-17 (-3d) | 2009-03-24 → 2009-03-19 (-5d) |  |  | 31.25d → 43.5d |  |  |
| 47 | Dev: BE - Larvae discriminating dose assay | 2009-03-09 → 2009-03-11 (+2d) | 2009-03-10 → 2009-03-12 (+2d) |  |  | 23.5d → 25.25d |  |  |
| 48 | Dev: GUI - Larvae discriminating dose assay | 2009-03-24 → 2009-03-19 (-5d) | 2009-03-26 → 2009-03-20 (-6d) |  |  | 31.25d → 43.5d |  |  |
| 49 | Dev: BE - Efficacy assay | 2009-03-11 → 2009-03-13 (+2d) | 2009-03-13 → 2009-03-17 (+4d) |  |  | 23.5d → 25.25d |  |  |
| 50 | Dev: GUI - Efficacy assay | 2009-03-26 → 2009-03-23 (-3d) | 2009-03-30 → 2009-03-25 (-5d) |  |  | 31.25d → 43.5d |  |  |
| 127 | **Prototype Test Cases** | 2009-02-23 A | 2009-02-25 A |  | 0% → 100% | 1.43d → none |  |  |
| 128 | TC: Geo Tree | 2009-02-23 A | 2009-02-24 A |  | 0% → 100% | 1.43d → none |  |  |
| 129 | TC: Searching for a geo entity | 2009-02-24 A | 2009-02-25 A |  | 0% → 100% | 1.43d → none |  |  |
| 130 | Create test cases for entomology prototype |  | 2009-02-25 → 2009-03-02 (+5d) | 64h → 88h | 63% → 60% | 79d → 76d |  | constraint start no earlier than 2009-02-15 → finish no earlier than 2009-03-02 |
| 132 | Prepare entomology test data | 2009-03-04 → 2009-03-05 (+1d) | 2009-03-05 → 2009-03-06 (+1d) |  |  | 1.43d → 0.86d |  |  |
| 133 | Learn BIRT report writer | 2009-03-03 → 2009-03-04 (+1d) | 2009-03-04 → 2009-03-05 (+1d) |  |  | 1.43d → 0.86d |  | constraint none → start no earlier than 2009-03-04 |
| 204 | **Finalise Query Use Cases** |  |  |  | 6% → 11% |  |  |  |
| 205 | UC: Individual Cases - query |  | 2009-02-24 A |  | 50% → 100% | 2.86d → none |  |  |
| 213 | **Complete Development** |  | 2009-06-22 → 2009-06-11 (-11d) | 81d? → 73.76d? |  | 6d → 13.24d |  |  |
| 214 | **Generic Development** | 2009-03-13 → 2009-03-16 (+3d) | 2009-06-11 → 2009-04-16 (-56d) | 64.44d? → 23.53d? |  | 13.06d → 22.82d |  |  |
| 215 | Dev: Reconstruct saved query | 2009-05-11 → 2009-03-16 (-56d) | 2009-05-19 → 2009-03-24 (-56d) |  |  | 6d → 46d |  |  |
| 216 | Dev: Overall site layout | 2009-05-19 → 2009-03-24 (-56d) | 2009-05-27 → 2009-04-01 (-56d) |  |  | 6d → 46d |  |  |
| 217 | Dev: Configure system variables | 2009-03-31 → 2009-03-25 (-6d) | 2009-03-31 → 2009-03-26 (-5d) |  |  | 31.25d → 43.5d |  |  |
| 218 | Dev: maintain catalogues | 2009-05-27 → 2009-04-01 (-56d) | 2009-06-01 → 2009-04-06 (-56d) |  |  | 6d → 46d |  |  |
| 219 | Dev: Epi week - set or change | 2009-03-19 → 2009-03-30 (+11d) | 2009-03-23 → 2009-04-01 (+9d) |  |  | 20.24d → 13.24d |  |  |
| 220 | Dev: define season start and end dates | 2009-03-23 → 2009-04-01 (+9d) | 2009-03-25 → 2009-04-03 (+9d) |  |  | 20.24d → 13.24d |  |  |
| 221 | Dev: enter/maintain people in the system | 2009-03-25 → 2009-04-03 (+9d) | 2009-03-30 → 2009-04-08 (+9d) |  |  | 20.24d → 13.24d |  |  |
| 222 | Dev: create synonyms for imported Geo entities | 2009-03-13 → 2009-03-17 (+4d) | 2009-03-19 → 2009-03-23 (+4d) |  |  | 23.5d → 25.25d |  |  |
| 223 | Dev: User Admin Screen for account management | 2009-04-06 → 2009-04-07 (+1d) | 2009-04-08 → 2009-04-09 (+1d) |  |  | 59d → 58d |  |  |
| 224 | Dev: user Admin Screen for Role assignment | 2009-06-01 → 2009-04-06 (-56d) | 2009-06-04 → 2009-04-09 (-56d) |  |  | 6d → 46d |  |  |
| 225 | Dev: Add localisable character attributes | 2009-06-04 → 2009-04-09 (-56d) | 2009-06-08 → 2009-04-13 (-56d) |  |  | 6d → 46d |  |  |
| 226 | Dev: CRUD on localisable fields | 2009-03-27 → 2009-04-07 (+11d) | 2009-04-03 → 2009-04-14 (+11d) |  |  | 62d → 55d |  |  |
| 227 | Dev: CRUD screen for defining geography universals | 2009-06-08 → 2009-04-13 (-56d) | 2009-06-11 → 2009-04-16 (-56d) |  |  | 6d → 46d |  |  |
| 228 | Change date/time format | 2009-04-08 → 2009-04-02 (-6d) | 2009-04-09 → 2009-04-03 (-6d) |  |  | 31.25d → 43.5d |  |  |
| 229 | Change geo root | 2009-04-09 → 2009-04-03 (-6d) | 2009-04-13 → 2009-04-08 (-5d) |  |  | 31.25d → 43.5d |  |  |
| 230 | **Indicator survey** | 2009-03-19 → 2009-03-23 (+4d) | 2009-04-07 → 2009-04-02 (-5d) | 13.5d → 8d |  | 23.5d → 25.25d |  |  |
| 231 | Dev: Indicator survey - CRUD | 2009-04-01 → 2009-03-26 (-6d) | 2009-04-07 → 2009-04-02 (-5d) |  |  | 31.25d → 43.5d |  |  |
| 232 | Dev - Indicator survey - dynamic query | 2009-03-19 → 2009-03-23 (+4d) | 2009-03-27 → 2009-03-31 (+4d) |  |  | 23.5d → 25.25d |  |  |
| 233 | **Case Surveilance** |  | 2009-05-07 → 2009-05-11 (+4d) | 48.5d → 50.5d |  | 23.5d → 28d |  |  |
| 235 | Dev: calculate CFR | 2009-03-30 → 2009-04-08 (+9d) | 2009-04-03 → 2009-04-14 (+11d) |  |  | 20.24d → 13.24d |  |  |
| 241 | Dev: Calculate annual or seasonal population | 2009-04-29 → 2009-05-01 (+2d) | 2009-05-07 → 2009-05-11 (+4d) |  |  | 23.5d → 30.25d |  |  |
| 242 | Dev: calculate incidence | 2009-04-03 → 2009-04-14 (+11d) | 2009-04-13 → 2009-04-22 (+9d) |  |  | 20.24d → 13.24d |  |  |
| 244 | Dev: Outbreak notification | 2009-04-13 → 2009-04-22 (+9d) | 2009-04-21 → 2009-04-30 (+9d) |  |  | 20.24d → 13.24d |  |  |
| 246 | **Intervention monitoring** | 2009-03-27 → 2009-03-31 (+4d) | 2009-06-17 → 2009-06-11 (-6d) | 57.72d → 52.01d |  | 9.53d → 13.24d |  |  |
| 247 | **IRS** | 2009-03-27 → 2009-03-31 (+4d) | 2009-06-17 → 2009-05-19 (-29d) | 57.72d → 35d |  | 6d → 25.25d |  |  |

| ID | Task | Start | Finish | Duration | Complete | Total float | Predecessors |
| --- | --- | --- | --- | --- | --- | --- | --- |
| 250 | Dev: BE - input or modify IRS targets | 2009-03-27 → 2009-03-31 (+4d) | 2009-04-02 → 2009-04-06 (+4d) |  |  | 23.5d → 25.25d |  |
| 251 | Dev: GUI - input or modify IRS targets | 2009-05-07 → 2009-05-11 (+4d) | 2009-05-13 → 2009-05-15 (+2d) |  |  | 23.5d → 30.25d |  |
| 252 | Dev: Configure items relating to application rate | 2009-04-02 → 2009-04-06 (+4d) | 2009-04-10 → 2009-04-14 (+4d) |  |  | 23.5d → 25.25d |  |
| 253 | Dev: Configure items relating to application rate | 2009-05-13 → 2009-05-15 (+2d) | 2009-05-15 → 2009-05-19 (+4d) |  |  | 23.5d → 30.25d |  |
| 254 | Dev: IRS - CRUD | 2009-06-11 → 2009-04-16 (-56d) | 2009-06-17 → 2009-04-22 (-56d) |  |  | 6d → 46d |  |
| 255 | Dev: IRS - dynamic query | 2009-04-10 → 2009-04-14 (+4d) | 2009-04-17 → 2009-04-21 (+4d) |  |  | 23.5d → 25.25d |  |
| 256 | **Larvaciding** | 2009-04-21 → 2009-04-30 (+9d) | 2009-04-28 → 2009-05-07 (+9d) |  |  | 20.24d → 13.24d |  |
| 257 | Dev: larviciding - CRUD | 2009-04-21 → 2009-04-30 (+9d) | 2009-04-28 → 2009-05-07 (+9d) |  |  | 20.24d → 13.24d |  |
| 258 | **ITN** | 2009-04-28 → 2009-05-04 (+6d) | 2009-06-02 → 2009-06-11 (+9d) | 25.53d → 28.76d |  | 20.24d → 13.24d |  |
| 259 | Dev: ITN aggregated data - CRUD | 2009-04-28 → 2009-05-07 (+9d) | 2009-05-06 → 2009-05-15 (+9d) |  |  | 20.24d → 13.24d |  |
| 260 | Dev: ITN aggregated data - query | 2009-05-06 → 2009-05-15 (+9d) | 2009-05-07 → 2009-05-18 (+11d) |  |  | 20.24d → 13.24d |  |
| 261 | Dev: ITN facility distribution - CRUD | 2009-05-07 → 2009-05-18 (+11d) | 2009-05-18 → 2009-05-27 (+9d) |  |  | 20.24d → 13.24d |  |
| 262 | Dev: ITN community distribution - CRUD | 2009-05-18 → 2009-05-27 (+9d) | 2009-05-22 → 2009-06-02 (+11d) |  |  | 20.24d → 13.24d |  |
| 263 | Dev: ITN by facility/community - query | 2009-05-22 → 2009-06-02 (+11d) | 2009-05-25 → 2009-06-03 (+9d) |  |  | 20.24d → 13.24d |  |
| 264 | Dev: ITN by household - CRUD | 2009-05-25 → 2009-06-03 (+9d) | 2009-06-02 → 2009-06-11 (+9d) |  |  | 20.24d → 13.24d |  |
| 266 | **Intervention Planning** | 2009-04-17 → 2009-04-21 (+4d) | 2009-04-29 → 2009-05-01 (+2d) |  |  | 23.5d → 25.25d |  |
| 267 | Dev: BE - Intervention planning | 2009-04-17 → 2009-04-21 (+4d) | 2009-04-23 → 2009-04-27 (+4d) |  |  | 23.5d → 25.25d |  |
| 268 | Dev: GUI - Intervention planning | 2009-04-23 → 2009-04-27 (+4d) | 2009-04-29 → 2009-05-01 (+2d) |  |  | 23.5d → 30.25d |  |
| 269 | **IPT** | 2009-04-23 → 2009-04-27 (+4d) | 2009-05-28 → 2009-05-18 (-10d) | 25d → 15d |  | 23.5d → 25.25d |  |
| 270 | Dev: IPT aggregated - CRUD | 2009-04-23 → 2009-04-27 (+4d) | 2009-04-27 → 2009-04-29 (+2d) |  |  | 27.25d → 25.25d |  |
| 271 | Dev: IPT aggregated - CRUD | 2009-05-21 → 2009-04-30 (-21d) | 2009-05-25 → 2009-05-04 (-21d) |  |  | 23.5d → 39d | 270, Dev: IRS - CRUD → 270 |
| 272 | Dev: IPT aggregated - query | 2009-04-28 → 2009-04-30 (+2d) | 2009-05-04 → 2009-05-06 (+2d) |  |  | 27.25d → 25.25d |  |
| 273 | Dev: BE - IPT individual - CRUD | 2009-05-05 → 2009-05-07 (+2d) | 2009-05-07 → 2009-05-11 (+4d) |  |  | 27.25d → 25.25d |  |
| 274 | Dev: GUI - IPT individual - CRUD | 2009-05-26 → 2009-05-04 (-22d) | 2009-05-28 → 2009-05-06 (-22d) |  |  | 23.5d → 39d |  |
| 275 | Dev: IPT individual - query | 2009-05-07 → 2009-05-11 (+4d) | 2009-05-14 → 2009-05-18 (+4d) |  |  | 27.25d → 25.25d |  |
| 276 | Dev: BE - Stock Control | 2009-06-17 → 2009-04-22 (-56d) | 2009-06-22 → 2009-04-27 (-56d) |  |  | 6d → 46d |  |
| 280 | Dev: Change date/time format | 2009-05-14 → 2009-05-18 (+4d) | 2009-05-15 → 2009-05-19 (+4d) |  |  | 27.25d → 25.25d |  |
| 281 | **Complete Test Cases** |  |  |  | 31% → 37% |  |  |
| 287 | **System** |  |  |  | 37% → 58% |  |  |
| 289 | TC: maintain catalogues |  | 2009-02-16 A |  | 40% → 100% | 96.25d → none |  |
| 291 | TC: define season start and end dates | 2009-02-23 A | 2009-02-24 A |  | 0% → 100% | 78.25d → none |  |
| 292 | TC: enter/maintain people in the system | 2009-02-24 A | 2009-02-25 A |  | 0% → 100% | 78.25d → none |  |
| 300 | **Indicator Survey** |  | 2009-02-27 → 2009-02-12 A (-15d) | 13d → 1.25d | 50% → 100% | 78.25d → none |  |
| 315 | **Intervention monitoring** |  |  |  | 42% → 40% |  |  |
| 325 | **ITN** | 2009-03-02 → 2009-02-26 (-4d) |  | 70h → 80h |  |  |  |
| 326 | TC: ITN aggregated data - CRUD | 2009-03-02 → 2009-02-26 (-4d) | 2009-03-03 → 2009-02-27 (-4d) |  |  |  | 330 → 293, 330 |
| 327 | TC: ITN aggregated data - query | 2009-03-03 → 2009-03-02 (-1d) | 2009-03-04 → 2009-03-03 (-1d) |  |  |  |  |
| 328 | TC: ITN facility distribution - CRUD | 2009-03-04 → 2009-03-03 (-1d) | 2009-03-05 → 2009-03-04 (-1d) |  |  |  |  |
| 329 | TC: ITN community distribution - CRUD | 2009-03-05 → 2009-03-04 (-1d) | 2009-03-06 → 2009-03-05 (-1d) |  |  |  |  |
| 330 | TC:Indicator survey query | 2009-02-26 → 2009-03-05 (+7d) | 2009-02-27 → 2009-03-06 (+7d) |  |  |  | 293 → 207, 329, 293 |
| 331 | TC: ITN by facility/community - query |  |  |  |  |  | 329 → 330 |
| 349 | Dev: Installation (minimal or full) | 2009-05-15 → 2009-05-19 (+4d) | 2009-05-22 → 2009-05-26 (+4d) |  |  | 27.25d → 25.25d |  |

## Version 5 (saved 2009-03-03, file 09 02 26 MDSS_Project_Plan.mpp)

Note of the change: XLS version of development tasks

Last finish stays 2009-06-30.

Added:

| ID | Task | Duration | Start | Finish | Resources |
| --- | --- | --- | --- | --- | --- |
| 34 | Dev: GUI - Resistance cut-off values | 10h | 2009-02-02 | 2009-02-03 | Darrell [80%] |

Changed:

| ID | Task | Start | Duration | Complete |
| --- | --- | --- | --- | --- |
| 2 | **Create Prototype (Entomology)** |  |  | 48% → 47% |
| 16 | **Prototype Use cases** | 2009-02-09 A → 2009-02-02 A (-7d) | 25.41d? → 30.41d? |  |

## Version 6 (saved 2009-03-12, file MDSS_Project_Plan.mpp)

Note of the change: clean up - delete obsolete versions, rename for consistency New release of Software Requirements and Project Plans including PDF version of project plan.

Last finish stays 2009-06-30. Complete tasks 33 → 60.

Added:

| ID | Task | Duration | Start | Finish | Predecessors | Resources |
| --- | --- | --- | --- | --- | --- | --- |
| 39 | Dev: Create formatted dynamic reports | 8h | 2009-03-16 | 2009-03-17 | 38, 35 | Justin [80%] |

Removed: 12 Dev: Represent query criteria as in a user interface; 20 Dev: Search for a geo entity - Hierarchy table; 21 Dev: Search for a geo entity - combo boxes; 22 Dev: Search for a geo entity - finalise; 80 Data set acquired; 83 Data set acquired; 86 Data set acquired; 89 Data set acquired; 92 Data set acquired; 95 Data set acquired; 98 Data set acquired; 102 Data set acquired; 105 Data set acquired; 108 Data set acquired; 111 Data set acquired; 114 Data set acquired; 117 Data set acquired; 120 Data set acquired; 123 Data set acquired

Changed:

| ID | Task | Start | Finish | Duration | Complete | Total float | Predecessors | Other |
| --- | --- | --- | --- | --- | --- | --- | --- | --- |
| 1 | **MDSS Implementation** |  | 2009-06-11 → 2009-05-28 (-14d) | 93.76d? → 84d? | 15% → 32% | 13.24d → 23d |  |  |
| 2 | **Create Prototype (Entomology)** |  | 2009-04-06 → 2009-04-07 (+1d) | 46d? → 47d? | 47% → 72% | 60d → 59d |  |  |
| 3 | **System requirements** |  | 2009-04-06 → 2009-04-07 (+1d) | 46d? → 47d? | 65% → 88% | 60d → 59d |  |  |
| 5 | Dev: Geography MOJO attributes (PostGIS phase 1) |  | 2009-02-24 → 2009-02-27 A (+3d) | 17d → 20d | 95% → 100% | 83.65d → none |  |  |
| 6 | Dev: Geography functions integrated into the query API | 2009-02-26 → 2009-03-02 A (+4d) | 2009-03-02 → 2009-03-06 A (+4d) | 3d → 5d | 0% → 100% | 46d → none |  | constraint finish no earlier than 2009-03-02 → finish no earlier than 2009-03-06 |
| 7 | Dev: GIS visual tool integration |  | 2009-03-04 A |  | 35% → 100% | 83d → none |  |  |
| 8 | Dev: Geoserver integration |  | 2009-03-03 A |  | 38% → 100% | 26.24d → none |  |  |
| 12 | Dev: Represent query criteria in back-end | 2009-03-30 → 2009-03-09 A (-21d) | 2009-04-03 → 2009-03-13 (-21d) |  | 0% → 15% | 55d → 46.41d | Dev: Represent query criteria as in a user interface, 14 → 6 | resources Naifeh → Nathan |
| 13 | Dev: Save query criteria to the database | 2009-04-06 → 2009-04-07 (+1d) | 2009-04-06 → 2009-04-07 (+1d) |  |  | 55d → 59d | 12 → 37 |  |
| 14 | Dev: Generic GIS visualisation and output requirements | 2009-03-23 → 2009-03-16 (-7d) | 2009-03-27 → 2009-03-20 (-7d) |  |  | 13.24d → 63.5d | 8, Dev: Represent query criteria as in a user interface → 18 | constraint none → start no earlier than 2009-03-14 |
| 15 | **Prototype Use cases** | 2009-02-02 A → 2009-02-09 A (+7d) | 2009-03-16 → 2009-04-06 (+21d) | 30.41d? → 41d? | 23% → 53% | 75.59d → 60d |  |  |
| 16 | **Search for a geo entity** | 2009-02-20 A | 2009-03-16 → 2009-03-13 (-3d) | 15.76d? → 15.35d? | 0% → 73% | 52.35d → 63.5d |  |  |
| 17 | Dev: Search for a geo entity - ontology tree | 2009-02-20 A | 2009-03-02 → 2009-03-09 (+7d) | 4d? → 9d | 0% → 89% | 85d → 78d |  | constraint finish no earlier than 2009-03-02 → finish no earlier than 2009-03-09 |
| 18 | Dev: Search for a geo entity | 2009-03-03 → 2009-03-12 (+9d) | 2009-03-05 → 2009-03-13 (+8d) | 2.35d? → 2d? |  | 46d → 63.5d | 6 → 6, 17 | was named Dev: Search for a geo entity - filtered; constraint none → finish no earlier than 2009-03-13; resources Nathan [85%] → Naifeh |
| 23 | Dev: GUI - Adult discriminating dose assay |  | 2009-02-26 A |  | 50% → 100% | 47.5d → none |  |  |
| 25 | Dev: BE - Resistance Mechanisms | 2009-02-23 A | 2009-03-02 A |  | 0% → 100% | 25.25d → none |  |  |
| 26 | Dev: GUI - Resistance Mechanisms | 2009-03-03 A | 2009-03-04 → 2009-03-06 (+2d) | 16h → 28.27h | 0% → 91% | 46.75d → 49.5d | 27, 25 → 25, 23 | constraint finish no earlier than 2009-03-04 → finish no earlier than 2009-03-06; resources Darrell [200%] → Darrell [80%] |
| 27 | Dev: GUI - Submit collection points | 2009-02-27 → 2009-03-12 (+13d) | 2009-03-02 → 2009-03-13 (+11d) |  |  | 47.5d → 73.88d | 24, 23 → 32 |  |
| 28 | Dev: GUI - Efficacy assay | 2009-03-23 → 2009-03-16 (-7d) | 2009-03-25 → 2009-03-18 (-7d) |  |  | 43.5d → 73d | 33 → 27, 35 |  |
| 30 | Dev: GUI - Resistance cut-off values | 2009-03-05 → 2009-02-27 A (-6d) | 2009-03-06 → 2009-02-27 A (-7d) | 10h → 8h | 0% → 100% | 46.75d → none | 29, 26 → 29 | constraint none → start no earlier than 2009-02-27; resources Darrell [80%] → Darrell |
| 31 | Dev: BE - Adult knock down assay | 2009-03-10 → 2009-03-09 (-1d) | 2009-03-11 → 2009-03-10 (-1d) |  |  | 25.25d → 49.5d | 44 → 26 | resources Justin [80%] → Darrell [80%] |
| 32 | Dev: GUI - Adult knock down assay | 2009-03-17 → 2009-03-10 (-7d) | 2009-03-19 → 2009-03-12 (-7d) |  |  | 43.5d → 49.5d | 31, 45 → 31 |  |
| 33 | Dev: GUI - Larvae discriminating dose assay | 2009-03-19 → 2009-03-12 (-7d) | 2009-03-20 → 2009-03-16 (-4d) |  |  | 43.5d → 49.5d | 46, 32 → 32 |  |
| 34 | Dev: BE - Adult discriminating dose assay |  | 2009-02-24 A |  | 50% → 100% | 48.75d → none |  |  |
| 35 | Dev: BE - Efficacy assay | 2009-03-13 → 2009-03-12 (-1d) | 2009-03-17 → 2009-03-16 (-1d) |  |  | 25.25d → 22.75d | 46 → 38 |  |
| 36 | Dev: Configure import interfaces | 2009-02-24 A | 2009-02-25 → 2009-02-27 A (+2d) | 16h → 32h | 0% → 100% | 45.5d → none |  | resources Eric → Eric [50%] |
| 37 | Dev: BE - Entomology dynamic query | 2009-02-24 A → 2009-03-23 (+27d) | 2009-02-26 → 2009-04-06 (+39d) | 2.5d? → 6d | 70% → 0% | 52d → 58.5d | 34 → 34, 14 | constraint none → start no earlier than 2009-02-27; resources Justin [80%] → Naifeh [80%] |
| 38 | Dev: Enquiry integration with selected reporting tool | 2009-03-03 → 2009-03-06 A (+3d) | 2009-03-06 → 2009-03-11 (+5d) |  | 0% → 50% | 25.25d → 22.75d |  | constraint none → finish no earlier than 2009-03-11 |
| 40 | Dev: MO Importer | 2009-03-02 → 2009-03-27 (+25d) | 2009-03-06 → 2009-04-02 (+27d) |  |  | 43.5d → 62d | 36 → 206 | constraint start no earlier than 2009-03-02 → start no earlier than 2009-03-20 |
| 41 | Dev: change visibility of fields on GUI | 2009-03-09 → 2009-03-17 (+8d) | 2009-03-13 → 2009-03-23 (+10d) |  |  | 43.5d → 62d | 40 → 209 |  |
| 42 | Delivery of prototype | 2009-04-07 → 2009-04-08 (+1d) | 2009-04-07 → 2009-04-08 (+1d) |  |  | 60d → 59d |  |  |
| 44 | Dev:BE - Biochemical cut-off values | 2009-03-09 → 2009-03-17 (+8d) | 2009-03-09 → 2009-03-18 (+9d) |  |  | 25.25d → 22.75d | 38 → 38, 39 |  |
| 45 | Dev: GUI - Biochemical cut-off values |  |  |  |  | 43.5d → 49.5d | 44, 41, 47 → 33 |  |
| 46 | Dev: BE - Larvae discriminating dose assay | 2009-03-11 → 2009-03-18 (+7d) | 2009-03-12 → 2009-03-19 (+7d) |  |  | 25.25d → 22.75d | 31 → 44 |  |
| 47 | Dev: GUI - Entomology dynamic query | 2009-03-06 → 2009-04-07 (+32d) | 2009-03-10 → 2009-04-09 (+30d) |  |  | 46.75d → 58.5d | 37, 30, 23 → 37 |  |
| 48 | **Aquire Geo Data** | 2009-02-10 A → 2009-02-09 A (-1d) | 2009-02-24 → 2009-03-13 (+17d) | 11d? → 25d? | 7% → 25% | 89d → 76d |  |  |
| 49 | **Mozambique** |  | 2009-02-24 → 2009-03-13 (+17d) | 11d? → 24d? | 25% → 51% | 89d → 76d |  |  |
| 50 | **Priority 1: Province Boundaries** | 2009-02-10 A | 2009-02-23 → 2009-03-13 (+18d) | 10d → 24d | 0% → 88% | 90d → 76d |  |  |
| 51 | Data set acquired | 2009-02-10 A | 2009-02-18 → 2009-03-10 A (+20d) | 7d → 21d | 0% → 100% | 90d → none |  |  |
| 52 | Data set ready for delivery | 2009-02-19 → 2009-03-11 (+20d) | 2009-02-23 → 2009-03-13 (+18d) |  |  | 90d → 76d |  |  |
| 74 | **Malawi** | 2009-02-10 → 2009-02-09 (-1d) | 2009-02-23 → 2009-02-13 (-10d) | 10d? → 5d? |  | 90d → 96d |  |  |
| 75 | **Priority 1: Province / Region Boundaries** | 2009-02-10 → 2009-02-09 (-1d) | 2009-02-23 → 2009-02-13 (-10d) | 10d? → 5d? |  | 90d → 96d |  |  |
| 76 | Data set delivered | 2009-02-17 → 2009-02-09 (-8d) | 2009-02-23 → 2009-02-13 (-10d) |  |  | 90d → 96d | Data set acquired → none | was named Data set ready for delivery |
| 77 | **Priority 1: District Boundaries** | 2009-02-10 → 2009-02-09 (-1d) | 2009-02-23 → 2009-02-13 (-10d) | 10d? → 5d? |  | 90d → 96d |  |  |
| 78 | Data set delivered | 2009-02-17 → 2009-02-09 (-8d) | 2009-02-23 → 2009-02-13 (-10d) |  |  | 90d → 96d | Data set acquired → none | was named Data set ready for delivery |
| 79 | **Priority 1: Traditional Authority Boundaries** | 2009-02-10 → 2009-02-09 (-1d) | 2009-02-23 → 2009-02-13 (-10d) | 10d? → 5d? |  | 90d → 96d |  |  |
| 80 | Data set delivered | 2009-02-17 → 2009-02-09 (-8d) | 2009-02-23 → 2009-02-13 (-10d) |  |  | 90d → 96d | Data set acquired → none | was named Data set ready for delivery |
| 81 | **Priority 1: Village Points** | 2009-02-10 → 2009-02-09 (-1d) | 2009-02-23 → 2009-02-13 (-10d) | 10d? → 5d? |  | 90d → 96d |  |  |
| 82 | Data set delivered | 2009-02-17 → 2009-02-09 (-8d) | 2009-02-23 → 2009-02-13 (-10d) |  |  | 90d → 96d | Data set acquired → none | was named Data set ready for delivery |
| 83 | **Priority 1: Health Facility Points** | 2009-02-10 → 2009-02-09 (-1d) | 2009-02-23 → 2009-02-13 (-10d) | 10d? → 5d? |  | 90d → 96d |  |  |
| 84 | Data set delivered | 2009-02-17 → 2009-02-09 (-8d) | 2009-02-23 → 2009-02-13 (-10d) |  |  | 90d → 96d | Data set acquired → none | was named Data set ready for delivery |
| 85 | **Priority 1: Sentinel Site Points** |  | 2009-02-19 → 2009-02-13 (-6d) | 8d? → 4d? |  | 92d → 96d |  |  |
| 86 | Data set delivered | 2009-02-16 → 2009-02-10 (-6d) | 2009-02-19 → 2009-02-13 (-6d) |  |  | 92d → 96d | Data set acquired → none | was named Data set ready for delivery |
| 87 | **Priority 1: Window Trap Points** | 2009-02-10 → 2009-02-13 (+3d) | 2009-02-17 → 2009-02-13 (-4d) | 6d? → 1d? |  | 94d → 96d |  |  |
| 88 | Data set delivered | 2009-02-17 → 2009-02-13 (-4d) | 2009-02-17 → 2009-02-13 (-4d) |  |  | 94d → 96d | Data set acquired → none | was named Data set ready for delivery |
| 89 | **Zambia** | 2009-02-10 → 2009-02-09 (-1d) | 2009-02-23 → 2009-02-20 (-3d) |  |  | 90d → 91d |  |  |
| 90 | **Priority 1: Province Boundaries** | 2009-02-10 → 2009-02-09 (-1d) | 2009-02-23 → 2009-02-13 (-10d) | 10d? → 5d? |  | 90d → 96d |  |  |
| 91 | Data set delivered | 2009-02-17 → 2009-02-09 (-8d) | 2009-02-23 → 2009-02-13 (-10d) |  |  | 90d → 96d | Data set acquired → none | was named Data set ready for delivery |
| 92 | **Priority 1: District Boundaries** | 2009-02-10 → 2009-02-09 (-1d) | 2009-02-23 → 2009-02-13 (-10d) | 10d? → 5d? |  | 90d → 96d |  |  |
| 93 | Data set delivered | 2009-02-17 → 2009-02-09 (-8d) | 2009-02-23 → 2009-02-13 (-10d) |  |  | 90d → 96d | Data set acquired → none | was named Data set ready for delivery |
| 94 | **Priority 1: Constituency Boundaries** | 2009-02-10 → 2009-02-09 (-1d) | 2009-02-23 → 2009-02-13 (-10d) | 10d? → 5d? |  | 90d → 96d |  |  |
| 95 | Data set delivered | 2009-02-17 → 2009-02-09 (-8d) | 2009-02-23 → 2009-02-13 (-10d) |  |  | 90d → 96d | Data set acquired → none | was named Data set ready for delivery |
| 96 | **Priority 1: Ward Boundaries** | 2009-02-10 → 2009-02-09 (-1d) | 2009-02-23 → 2009-02-13 (-10d) | 10d? → 5d? |  | 90d → 96d |  |  |
| 97 | Data set delivered | 2009-02-17 → 2009-02-09 (-8d) | 2009-02-23 → 2009-02-13 (-10d) |  |  | 90d → 96d | Data set acquired → none | was named Data set ready for delivery |
| 98 | **Priority 1: Village Points** | 2009-02-10 → 2009-02-16 (+6d) | 2009-02-23 → 2009-02-20 (-3d) | 10d? → 5d? |  | 90d → 91d |  |  |
| 99 | Data set delivered | 2009-02-17 → 2009-02-16 (-1d) | 2009-02-23 → 2009-02-20 (-3d) |  |  | 90d → 91d | Data set acquired → none | was named Data set ready for delivery |
| 100 | **Priority 1: Health Facility Points** | 2009-02-10 → 2009-02-16 (+6d) |  | 9d? → 5d? |  |  |  |  |
| 101 | Data set delivered |  |  |  |  |  | Data set acquired → none | was named Data set ready for delivery |
| 102 | **Priority 1: Sentinel Site Points** | 2009-02-10 → 2009-02-16 (+6d) |  | 9d? → 5d? |  |  |  |  |
| 103 | Data set delivered |  |  |  |  |  | Data set acquired → none | was named Data set ready for delivery |

| ID | Task | Start | Finish | Duration | Complete | Total float | Predecessors | Other |
| --- | --- | --- | --- | --- | --- | --- | --- | --- |
| 104 | **Priority 1: Window Trap Points** | 2009-02-10 → 2009-02-16 (+6d) |  | 9d? → 5d? |  |  |  |  |
| 105 | Data set delivered |  |  |  |  |  | Data set acquired → none | was named Data set ready for delivery |
| 106 | Deliver Population data | 2009-02-24 → 2009-03-13 (+17d) | 2009-02-24 → 2009-03-13 (+17d) |  |  | 89d → 76d |  |  |
| 107 | Import Geo data into MDSS schema | 2009-02-25 → 2009-03-16 (+19d) | 2009-02-25 → 2009-03-16 (+19d) |  |  | 89d → 76d |  |  |
| 108 | Deliver entomology data to be imported |  | 2009-02-27 → 2009-03-04 A (+5d) | 64h → 84h | 63% → 100% | 4.29d → none |  |  |
| 112 | Create test cases for entomology prototype |  | 2009-03-02 A |  | 60% → 100% | 76d → none |  |  |
| 113 | Test defect logging procedures | 2009-03-02 → 2009-03-04 A (+2d) | 2009-03-03 → 2009-03-04 A (+1d) |  | 0% → 100% | 1.43d → none |  | constraint none → start no earlier than 2009-03-04 |
| 114 | Prepare entomology test data | 2009-03-05 → 2009-03-06 A (+1d) | 2009-03-06 A | 5.71h → 5.72h | 0% → 100% | 0.86d → none |  | resources Marlize [70%] → Marlize [69.9%] |
| 115 | Learn BIRT report writer | 2009-03-04 → 2009-03-16 (+12d) | 2009-03-05 → 2009-03-17 (+12d) |  |  | 0.86d → 0d |  | constraint start no earlier than 2009-03-04 → start no earlier than 2009-03-16 |
| 116 | **Test Prototype Submit Change Requests** | 2009-03-09 A → 2009-03-17 A (+8d) | 2009-03-26 → 2009-04-06 (+11d) | 13.57d? → 14.29d? | 1% → 0% | 68.43d → 57.28d |  |  |
| 117 | **Test: Geo entity search and maintanance** | 2009-03-09 → 2009-03-17 A (+8d) | 2009-03-18 → 2009-03-27 (+9d) | 7.15d? → 7.86d? |  | 0d → 38.25d |  |  |
| 118 | Test: login to MDSS | 2009-03-09 → 2009-03-17 A (+8d) | 2009-03-09 → 2009-03-17 A (+8d) |  | 0% → 100% | 0d → none |  |  |
| 119 | Test: Search for a geo entity - tree | 2009-03-09 → 2009-03-17 (+8d) | 2009-03-09 → 2009-03-17 (+8d) |  |  | 37.71d → 38.25d |  |  |
| 120 | Submit defects: Search for a geo entity - tree | 2009-03-09 → 2009-03-17 (+8d) | 2009-03-10 → 2009-03-18 (+8d) |  |  | 37.71d → 38.25d |  |  |
| 121 | Test: create a geo entity | 2009-03-10 → 2009-03-18 (+8d) | 2009-03-10 → 2009-03-18 (+8d) |  |  | 37.71d → 38.25d |  |  |
| 122 | Submit defects: create a geo entity | 2009-03-10 → 2009-03-18 (+8d) | 2009-03-11 → 2009-03-19 (+8d) |  |  | 37.71d → 38.25d |  |  |
| 123 | Test: Search for a geo entity - filtered | 2009-03-11 → 2009-03-19 (+8d) | 2009-03-11 → 2009-03-19 (+8d) |  |  | 37.71d → 38.25d |  |  |
| 124 | Submit defects: Search for a geo entity - filtered | 2009-03-11 → 2009-03-19 (+8d) | 2009-03-11 → 2009-03-20 (+9d) |  |  | 37.71d → 38.25d |  |  |
| 125 | Test: Search for a geo entity - Hierarchy table | 2009-03-11 → 2009-03-20 (+9d) | 2009-03-13 → 2009-03-23 (+10d) |  |  | 37.71d → 38.25d |  |  |
| 126 | TC: IRS - dynamic query | 2009-04-03 → 2009-03-23 (-11d) | 2009-04-06 → 2009-03-24 (-13d) |  |  | 37.71d → 38.25d | 304 → 125 |  |
| 127 | Submit defects: Search for a geo entity - Hierarchy table | 2009-03-13 → 2009-03-24 (+11d) | 2009-03-16 → 2009-03-25 (+9d) |  |  | 37.71d → 38.25d | 125 → 126 |  |
| 128 | Test: Search for a geo entity - combo boxes | 2009-03-16 → 2009-03-25 (+9d) | 2009-03-16 → 2009-03-25 (+9d) |  |  | 37.71d → 38.25d |  |  |
| 129 | Submit defects: Search for a geo entity - combo boxes | 2009-03-16 → 2009-03-25 (+9d) | 2009-03-16 → 2009-03-25 (+9d) |  |  | 37.71d → 38.25d |  |  |
| 130 | Test: Call 101 from 024, 016, 025 | 2009-03-16 → 2009-03-25 (+9d) | 2009-03-17 → 2009-03-26 (+9d) |  |  | 37.71d → 38.25d |  |  |
| 131 | Submit defects: Call 101 from 024, 016, 025 | 2009-03-17 → 2009-03-26 (+9d) | 2009-03-17 → 2009-03-26 (+9d) |  |  | 37.71d → 38.25d |  |  |
| 132 | Write change request MDSS101, MDSS111 | 2009-03-17 → 2009-03-26 (+9d) | 2009-03-18 → 2009-03-27 (+9d) |  |  | 37.71d → 38.25d |  |  |
| 133 | Test: changing visibility of fields in GUI | 2009-03-18 → 2009-03-27 (+9d) | 2009-03-18 → 2009-03-27 (+9d) |  |  | 37.71d → 38.25d |  |  |
| 134 | Submit defects: changing visibility of fields in GUI | 2009-03-18 → 2009-03-27 (+9d) | 2009-03-18 → 2009-03-27 (+9d) |  |  | 37.71d → 38.25d |  |  |
| 135 | Test: Submit a mosquito collection | 2009-03-09 → 2009-03-17 (+8d) | 2009-03-09 → 2009-03-17 (+8d) |  |  | 72d → 65.45d |  | constraint start no earlier than 2009-03-09 → none |
| 136 | Submit defects: Submit a mosquito collection | 2009-03-09 → 2009-03-17 (+8d) | 2009-03-09 → 2009-03-17 (+8d) |  |  | 72d → 65.45d |  |  |
| 137 | Test: search/update/delete record | 2009-03-09 → 2009-03-17 (+8d) | 2009-03-09 → 2009-03-17 (+8d) |  |  | 72d → 65.45d |  |  |
| 138 | Submit defects: search/update/delete | 2009-03-09 → 2009-03-17 (+8d) | 2009-03-09 → 2009-03-18 (+9d) |  |  | 72d → 65.45d |  |  |
| 139 | Test: Submit collection points | 2009-03-09 → 2009-03-18 (+9d) | 2009-03-09 → 2009-03-18 (+9d) |  |  | 72d → 65.45d |  |  |
| 140 | Submit defects: Submit collection points | 2009-03-09 → 2009-03-18 (+9d) | 2009-03-09 → 2009-03-18 (+9d) |  |  | 72d → 65.45d |  |  |
| 141 | Write change request: Collections | 2009-03-10 → 2009-03-18 (+8d) | 2009-03-10 → 2009-03-18 (+8d) |  |  | 72d → 65.45d |  |  |
| 142 | Test: Import assay and collection data | 2009-03-10 → 2009-03-18 (+8d) | 2009-03-10 → 2009-03-19 (+9d) |  |  | 72d → 65.45d |  |  |
| 143 | Submit defects: generic import functionality | 2009-03-10 → 2009-03-19 (+9d) | 2009-03-10 → 2009-03-19 (+9d) |  |  | 72d → 65.45d |  |  |
| 144 | Test:Species identification | 2009-03-10 → 2009-03-19 (+9d) | 2009-03-10 → 2009-03-19 (+9d) |  |  | 72d → 65.45d |  |  |
| 145 | Submit defects: Species identification | 2009-03-11 → 2009-03-19 (+8d) | 2009-03-11 → 2009-03-19 (+8d) |  |  | 72d → 65.45d |  |  |
| 146 | Test: Infectivity assay | 2009-03-11 → 2009-03-19 (+8d) | 2009-03-11 → 2009-03-19 (+8d) |  |  | 72d → 65.45d |  |  |
| 147 | Submit defects: Infectivity assay | 2009-03-11 → 2009-03-19 (+8d) | 2009-03-11 → 2009-03-19 (+8d) |  |  | 72d → 65.45d |  |  |
| 148 | Test: Molecular assay | 2009-03-11 → 2009-03-19 (+8d) | 2009-03-11 → 2009-03-20 (+9d) |  |  | 72d → 65.45d |  |  |
| 149 | Submit defects: Molecular assay | 2009-03-11 → 2009-03-20 (+9d) | 2009-03-11 → 2009-03-20 (+9d) |  |  | 72d → 65.45d |  |  |
| 150 | Test: Biochemical assay | 2009-03-11 → 2009-03-20 (+9d) | 2009-03-11 → 2009-03-20 (+9d) |  |  | 72d → 65.45d |  |  |
| 151 | Submit defects: Biochemical assay | 2009-03-12 → 2009-03-20 (+8d) | 2009-03-12 → 2009-03-20 (+8d) |  |  | 72d → 65.45d |  |  |
| 152 | Test: Biochemical cut-off values | 2009-03-12 → 2009-03-20 (+8d) | 2009-03-12 → 2009-03-20 (+8d) |  |  | 72d → 65.45d |  |  |
| 153 | Submit defects: Biochemical cut-off values | 2009-03-12 → 2009-03-20 (+8d) | 2009-03-12 → 2009-03-20 (+8d) |  |  | 72d → 65.45d |  |  |
| 154 | Write change request: Mechanisms | 2009-03-12 → 2009-03-20 (+8d) | 2009-03-12 → 2009-03-23 (+11d) |  |  | 72d → 65.45d |  |  |
| 155 | Test: Adult discriminating dose assay | 2009-03-12 → 2009-03-23 (+11d) | 2009-03-13 → 2009-03-23 (+10d) |  |  | 72d → 65.45d |  |  |
| 156 | Submit defects: Adult discriminating dose assay | 2009-03-13 A → 2009-03-23 (+10d) | 2009-03-13 → 2009-03-23 (+10d) |  | 50% → 0% | 71.88d → 65.45d |  |  |
| 157 | Test: Larvae discriminating dose assay | 2009-03-13 → 2009-03-23 (+10d) | 2009-03-13 → 2009-03-23 (+10d) |  |  | 71.88d → 65.45d |  |  |
| 158 | Submit defects: Larvae discriminating dose assay | 2009-03-13 → 2009-03-23 (+10d) | 2009-03-13 → 2009-03-24 (+11d) |  |  | 71.88d → 65.45d |  |  |
| 159 | Test: Adult knock down assay | 2009-03-13 → 2009-03-24 (+11d) | 2009-03-13 → 2009-03-24 (+11d) |  |  | 71.88d → 65.45d |  |  |
| 160 | Submit defects: Adult knock down assay | 2009-03-13 → 2009-03-24 (+11d) | 2009-03-13 → 2009-03-24 (+11d) |  |  | 71.88d → 65.45d |  |  |
| 161 | Test: Resistance cut-off values | 2009-03-13 → 2009-03-24 (+11d) | 2009-03-13 → 2009-03-24 (+11d) |  |  | 71.88d → 65.45d |  |  |
| 162 | Submit defects: Resistance cut-off values | 2009-03-16 → 2009-03-24 (+8d) | 2009-03-16 → 2009-03-24 (+8d) |  |  | 71.88d → 65.45d |  |  |
| 163 | Write change request: resistance assays | 2009-03-16 → 2009-03-24 (+8d) | 2009-03-16 → 2009-03-25 (+9d) |  |  | 71.88d → 65.45d |  |  |
| 164 | Test: Efficacy assay | 2009-03-16 → 2009-03-25 (+9d) | 2009-03-16 → 2009-03-25 (+9d) |  |  | 71.88d → 65.45d |  |  |
| 165 | Submit defects: Efficacy assay | 2009-03-16 → 2009-03-25 (+9d) | 2009-03-16 → 2009-03-25 (+9d) |  |  | 71.88d → 65.45d |  |  |
| 166 | Write change request: Efficacy assay | 2009-03-16 → 2009-03-25 (+9d) | 2009-03-17 → 2009-03-25 (+8d) |  |  | 71.88d → 65.45d |  |  |
| 167 | **Test: Entomology dynamic query and reports** | 2009-03-18 → 2009-03-27 (+9d) | 2009-03-26 → 2009-04-06 (+11d) |  |  | 68.43d → 38.25d |  |  |
| 168 | Test: add Geo-entity fields | 2009-03-18 → 2009-03-27 (+9d) | 2009-03-18 → 2009-03-30 (+12d) |  |  | 68.43d → 38.25d |  |  |
| 169 | Test: add other fields | 2009-03-18 → 2009-03-30 (+12d) | 2009-03-19 → 2009-03-30 (+11d) |  |  | 68.43d → 38.25d |  |  |
| 170 | Test: add functions | 2009-03-19 → 2009-03-30 (+11d) | 2009-03-19 → 2009-03-30 (+11d) |  |  | 68.43d → 38.25d |  |  |
| 171 | Test: date ranges on collection date or assay date | 2009-03-19 → 2009-03-30 (+11d) | 2009-03-19 → 2009-03-30 (+11d) |  |  | 68.43d → 38.25d |  |  |
| 172 | Submit defects: Build query | 2009-03-19 → 2009-03-30 (+11d) | 2009-03-19 → 2009-03-30 (+11d) |  |  | 68.43d → 38.25d |  |  |
| 173 | Test: save query | 2009-03-19 → 2009-03-30 (+11d) | 2009-03-19 → 2009-03-31 (+12d) |  |  | 68.43d → 38.25d |  |  |
| 174 | Test: run a saved query | 2009-03-19 → 2009-03-31 (+12d) | 2009-03-20 → 2009-03-31 (+11d) |  |  | 68.43d → 38.25d |  |  |
| 175 | Test: modify a saved query | 2009-03-20 → 2009-03-31 (+11d) | 2009-03-20 → 2009-03-31 (+11d) |  |  | 68.43d → 38.25d |  |  |
| 176 | Test: export query results | 2009-03-20 → 2009-03-31 (+11d) | 2009-03-20 → 2009-03-31 (+11d) |  |  | 68.43d → 38.25d |  |  |

| ID | Task | Start | Finish | Duration | Complete | Total float | Predecessors | Other |
| --- | --- | --- | --- | --- | --- | --- | --- | --- |
| 177 | Test: dump functionality | 2009-03-20 → 2009-03-31 (+11d) | 2009-03-20 → 2009-03-31 (+11d) |  |  | 68.43d → 38.25d |  |  |
| 178 | Submit defects: deploy query | 2009-03-20 → 2009-03-31 (+11d) | 2009-03-23 → 2009-04-01 (+9d) |  |  | 68.43d → 38.25d |  |  |
| 179 | Test: create thematic map from query | 2009-03-23 → 2009-04-01 (+9d) | 2009-03-24 → 2009-04-02 (+9d) |  |  | 68.43d → 38.25d |  |  |
| 180 | Test: find query results in BIRT | 2009-03-24 → 2009-04-02 (+9d) | 2009-03-24 → 2009-04-02 (+9d) |  |  | 68.43d → 38.25d |  |  |
| 181 | Test: create a report template (table) | 2009-03-24 → 2009-04-02 (+9d) | 2009-03-24 → 2009-04-03 (+10d) |  |  | 68.43d → 38.25d |  |  |
| 182 | Test: Link a report template to query | 2009-03-24 → 2009-04-03 (+10d) | 2009-03-25 → 2009-04-03 (+9d) |  |  | 68.43d → 38.25d |  |  |
| 183 | Test: view/print/save a report | 2009-03-25 → 2009-04-03 (+9d) | 2009-03-25 → 2009-04-03 (+9d) |  |  | 68.43d → 38.25d |  |  |
| 184 | Test: change linked report | 2009-03-25 → 2009-04-03 (+9d) | 2009-03-25 → 2009-04-03 (+9d) |  |  | 68.43d → 38.25d |  |  |
| 185 | Submit defects: deploy query | 2009-03-25 → 2009-04-03 (+9d) | 2009-03-25 → 2009-04-06 (+12d) |  |  | 68.43d → 38.25d |  |  |
| 186 | Write change request: Dynamic query | 2009-03-25 → 2009-04-06 (+12d) | 2009-03-26 → 2009-04-06 (+11d) |  |  | 68.43d → 38.25d |  |  |
| 187 | **Finalise Query Use Cases** |  |  | 36.97d → 36.43d | 11% → 72% | 40.75d → 39.85d |  |  |
| 189 | UC: Aggregated Cases - query | 2009-02-25 A | 2009-02-27 A |  | 0% → 100% | 33.71d → none |  |  |
| 190 | UC: Indicator survey - query | 2009-02-27 → 2009-03-03 A (+4d) | 2009-03-02 → 2009-03-04 A (+2d) |  | 0% → 100% | 40.04d → none |  | constraint none → start no earlier than 2009-03-03 |
| 191 | UC: IRS - query | 2009-02-25 A | 2009-03-02 → 2009-03-11 (+9d) | 22.86h → 81.14h | 0% → 99% | 1.43d → 49d |  | constraint none → finish no earlier than 2009-03-11 |
| 192 | UC: ITN FacilityCommunity distribution - query | 2009-04-07 → 2009-04-06 (-1d) |  |  |  | 37.71d → 38.25d | 318 → 186 |  |
| 193 | UC: ITN household use - query |  | 2009-04-10 → 2009-04-09 (-1d) |  |  | 37.71d → 38.25d |  |  |
| 194 | UC: IPT individual - query | 2009-04-10 → 2009-04-09 (-1d) |  |  |  | 37.71d → 38.25d |  |  |
| 196 | **Complete Development** | 2009-03-02 → 2009-03-09 A (+7d) | 2009-06-11 → 2009-05-28 (-14d) | 73.76d? → 59d? |  | 13.24d → 23d |  |  |
| 197 | **Generic Development** | 2009-03-16 → 2009-03-09 A (-7d) |  | 23.53d? → 28.53d? | 0% → 2% | 22.82d → 47.47d |  |  |
| 198 | Dev: Reconstruct saved query |  | 2009-03-24 → 2009-03-23 (-1d) |  |  | 46d → 46.41d | Dev: Search for a geo entity - finalise → 6, 12 |  |
| 199 | Dev: Overall site layout | 2009-03-24 → 2009-03-23 (-1d) | 2009-04-01 → 2009-03-31 (-1d) |  |  | 46d → 46.41d |  |  |
| 200 | Dev: Configure system variables | 2009-03-25 → 2009-03-17 (-8d) | 2009-03-26 → 2009-03-18 (-8d) |  |  | 43.5d → 49.5d | 28 → 45 |  |
| 201 | Dev: maintain catalogues | 2009-04-01 → 2009-03-31 (-1d) |  |  |  | 46d → 46.41d |  |  |
| 202 | Dev: Epi week - set or change | 2009-03-30 → 2009-03-11 (-19d) | 2009-04-01 → 2009-03-13 (-19d) |  |  | 13.24d → 26.24d | 14 → none | constraint none → start no earlier than 2009-03-11 |
| 203 | Dev: define season start and end dates | 2009-04-01 → 2009-03-13 (-19d) | 2009-04-03 → 2009-03-17 (-17d) |  |  | 13.24d → 26.24d |  |  |
| 204 | Dev: enter/maintain people in the system | 2009-04-03 → 2009-03-17 (-17d) | 2009-04-08 → 2009-03-20 (-19d) |  |  | 13.24d → 26.24d |  |  |
| 205 | Dev: create synonyms for imported Geo entities | 2009-03-17 → 2009-03-20 (+3d) | 2009-03-23 → 2009-03-25 (+2d) |  |  | 25.25d → 22.75d | 35 → 46 |  |
| 206 | Dev: User Admin Screen for account management | 2009-04-07 → 2009-03-24 (-14d) | 2009-04-09 → 2009-03-26 (-14d) |  |  | 58d → 62d | 13 → 41 | constraint start no earlier than 2009-04-06 → start no earlier than 2009-03-17; resources Naifeh → Eric |
| 207 | Dev: user Admin Screen for Role assignment |  | 2009-04-09 → 2009-04-08 (-1d) |  |  | 46d → 46.41d |  |  |
| 208 | Dev: Add localisable character attributes | 2009-04-09 → 2009-04-08 (-1d) | 2009-04-13 → 2009-04-10 (-3d) |  |  | 46d → 46.41d |  |  |
| 209 | Dev: CRUD on localisable fields | 2009-04-07 → 2009-03-09 A (-29d) | 2009-04-14 → 2009-03-16 (-29d) |  | 0% → 15% | 55d → 62d | 13 → 36 | constraint none → finish no earlier than 2009-03-16; resources Naifeh → Eric |
| 210 | Dev: CRUD screen for defining geography universals | 2009-04-13 → 2009-04-10 (-3d) |  |  |  | 46d → 46.41d |  |  |
| 211 | Change date/time format | 2009-04-02 → 2009-03-25 (-8d) | 2009-04-03 → 2009-03-26 (-8d) |  |  | 43.5d → 49.5d |  |  |
| 212 | Change geo root | 2009-04-03 → 2009-03-26 (-8d) | 2009-04-08 → 2009-03-31 (-8d) |  |  | 43.5d → 49.5d |  |  |
| 213 | **Indicator survey** | 2009-03-23 → 2009-03-18 (-5d) | 2009-04-02 → 2009-04-03 (+1d) | 8d → 11.75d |  | 25.25d → 28.25d |  |  |
| 214 | Dev: Indicator survey - CRUD | 2009-03-26 → 2009-03-18 (-8d) | 2009-04-02 → 2009-03-25 (-8d) |  |  | 43.5d → 49.5d |  |  |
| 215 | Dev - Indicator survey - dynamic query | 2009-03-23 → 2009-03-26 (+3d) | 2009-03-31 → 2009-04-03 (+3d) |  |  | 25.25d → 22.75d |  |  |
| 216 | **Case Surveilance** | 2009-03-02 → 2009-03-16 (+14d) | 2009-05-11 → 2009-05-13 (+2d) | 50.5d → 43d |  | 28d → 18d |  |  |
| 217 | Dev: aggregated cases - CRUD | 2009-03-02 → 2009-03-16 (+14d) | 2009-03-06 → 2009-03-20 (+14d) |  |  | 28d → 18d |  | constraint start no earlier than 2009-03-01 → start no earlier than 2009-03-16 |
| 218 | Dev: calculate CFR | 2009-04-08 → 2009-03-20 (-19d) | 2009-04-14 → 2009-03-26 (-19d) |  |  | 13.24d → 26.24d |  |  |
| 219 | Dev: aggregated cases - dynamic query | 2009-03-09 → 2009-03-23 (+14d) | 2009-03-13 → 2009-03-27 (+14d) |  |  | 28d → 18d |  |  |
| 220 | Dev: Input or modify population data | 2009-03-16 → 2009-03-30 (+14d) | 2009-03-19 → 2009-04-02 (+14d) |  |  | 28d → 18d |  |  |
| 221 | Dev: Import population or annual growth rate data | 2009-03-20 → 2009-04-03 (+14d) | 2009-03-26 → 2009-04-09 (+14d) |  |  | 28d → 18d |  |  |
| 222 | Dev: input/modify outbreak thresholds | 2009-03-27 → 2009-04-10 (+14d) | 2009-04-01 → 2009-04-15 (+14d) |  |  | 28d → 18d |  |  |
| 223 | Dev :import outbreak thresholds | 2009-04-02 → 2009-04-16 (+14d) | 2009-04-07 → 2009-04-21 (+14d) |  |  | 28d → 18d |  |  |
| 224 | Dev: Calculate annual or seasonal population | 2009-05-01 → 2009-05-05 (+4d) | 2009-05-11 → 2009-05-13 (+2d) |  |  | 30.25d → 27.75d |  |  |
| 225 | Dev: calculate incidence | 2009-04-14 → 2009-03-26 (-19d) | 2009-04-22 → 2009-04-03 (-19d) |  |  | 13.24d → 26.24d |  |  |
| 226 | Dev: individual cases - CRUD | 2009-04-08 → 2009-04-22 (+14d) | 2009-04-14 → 2009-04-28 (+14d) |  |  | 28d → 18d |  |  |
| 227 | Dev: Outbreak notification | 2009-04-22 → 2009-04-03 (-19d) | 2009-04-30 → 2009-04-13 (-17d) |  |  | 13.24d → 26.24d |  |  |
| 228 | Dev: individual case - dynamic query | 2009-04-15 → 2009-04-29 (+14d) | 2009-04-21 → 2009-05-05 (+14d) |  |  | 28d → 18d |  |  |
| 229 | **Intervention monitoring** | 2009-03-31 → 2009-04-03 (+3d) | 2009-06-11 → 2009-05-25 (-17d) | 52.01d → 36.51d |  | 13.24d → 22.75d |  |  |
| 230 | **IRS** | 2009-03-31 → 2009-04-03 (+3d) | 2009-05-19 → 2009-05-22 (+3d) |  |  | 25.25d → 22.75d |  |  |
| 231 | Dev: enter/maintain spray team member | 2009-04-22 → 2009-05-06 (+14d) | 2009-04-27 → 2009-05-11 (+14d) |  |  | 28d → 18d | 217, 228 → 228 |  |
| 232 | Dev: enter/maintain IRS teams | 2009-04-28 → 2009-05-12 (+14d) | 2009-05-01 → 2009-05-15 (+14d) |  |  | 28d → 18d |  |  |
| 233 | Dev: BE - input or modify IRS targets | 2009-03-31 → 2009-04-03 (+3d) | 2009-04-06 → 2009-04-08 (+2d) |  |  | 25.25d → 22.75d |  |  |
| 234 | Dev: GUI - input or modify IRS targets | 2009-05-11 → 2009-05-14 (+3d) | 2009-05-15 → 2009-05-19 (+4d) |  |  | 30.25d → 27.75d |  |  |
| 235 | Dev: Configure items relating to application rate | 2009-04-06 → 2009-04-09 (+3d) | 2009-04-14 → 2009-04-17 (+3d) |  |  | 25.25d → 22.75d |  |  |
| 236 | Dev: Configure items relating to application rate | 2009-05-15 → 2009-05-19 (+4d) | 2009-05-19 → 2009-05-22 (+3d) |  |  | 30.25d → 27.75d |  |  |
| 238 | Dev: IRS - dynamic query | 2009-04-14 → 2009-04-17 (+3d) | 2009-04-21 → 2009-04-24 (+3d) |  |  | 25.25d → 22.75d |  |  |
| 239 | **Larvaciding** | 2009-04-30 → 2009-04-13 (-17d) | 2009-05-07 → 2009-04-20 (-17d) |  |  | 13.24d → 26.24d |  |  |
| 240 | Dev: larviciding - CRUD | 2009-04-30 → 2009-04-13 (-17d) | 2009-05-07 → 2009-04-20 (-17d) |  |  | 13.24d → 26.24d |  |  |
| 241 | **ITN** | 2009-05-04 → 2009-04-20 (-14d) | 2009-06-11 → 2009-05-25 (-17d) | 28.76d → 25.53d |  | 13.24d → 26.24d |  |  |
| 242 | Dev: ITN aggregated data - CRUD | 2009-05-07 → 2009-04-20 (-17d) | 2009-05-15 → 2009-04-28 (-17d) |  |  | 13.24d → 26.24d |  |  |
| 243 | Dev: ITN aggregated data - query | 2009-05-15 → 2009-04-28 (-17d) | 2009-05-18 → 2009-04-29 (-19d) |  |  | 13.24d → 26.24d |  |  |
| 244 | Dev: ITN facility distribution - CRUD | 2009-05-18 → 2009-04-29 (-19d) | 2009-05-27 → 2009-05-08 (-19d) |  |  | 13.24d → 26.24d |  |  |
| 245 | Dev: ITN community distribution - CRUD | 2009-05-27 → 2009-05-08 (-19d) | 2009-06-02 → 2009-05-14 (-19d) |  |  | 13.24d → 26.24d |  |  |
| 246 | Dev: ITN by facility/community - query | 2009-06-02 → 2009-05-14 (-19d) | 2009-06-03 → 2009-05-15 (-19d) |  |  | 13.24d → 26.24d |  |  |
| 247 | Dev: ITN by household - CRUD | 2009-06-03 → 2009-05-15 (-19d) | 2009-06-11 → 2009-05-25 (-17d) |  |  | 13.24d → 26.24d |  |  |
| 248 | Dev: ITN by household - query | 2009-05-04 → 2009-05-18 (+14d) | 2009-05-08 → 2009-05-22 (+14d) |  |  | 28d → 18d |  |  |
| 249 | **Intervention Planning** | 2009-04-21 → 2009-04-24 (+3d) | 2009-05-01 → 2009-05-05 (+4d) |  |  | 25.25d → 22.75d |  |  |

| ID | Task | Start | Finish | Duration | Complete | Total float | Predecessors | Other |
| --- | --- | --- | --- | --- | --- | --- | --- | --- |
| 250 | Dev: BE - Intervention planning | 2009-04-21 → 2009-04-24 (+3d) | 2009-04-27 → 2009-04-29 (+2d) |  |  | 25.25d → 22.75d |  |  |
| 251 | Dev: GUI - Intervention planning | 2009-04-27 → 2009-04-30 (+3d) | 2009-05-01 → 2009-05-05 (+4d) |  |  | 30.25d → 27.75d |  |  |
| 252 | **IPT** | 2009-04-27 → 2009-04-30 (+3d) | 2009-05-18 → 2009-05-20 (+2d) |  |  | 25.25d → 22.75d |  |  |
| 253 | Dev: IPT aggregated - CRUD | 2009-04-27 → 2009-04-30 (+3d) | 2009-04-29 → 2009-05-04 (+5d) |  |  | 25.25d → 22.75d |  |  |
| 254 | Dev: IPT aggregated - CRUD | 2009-04-30 → 2009-05-04 (+4d) | 2009-05-04 → 2009-05-06 (+2d) |  |  | 39d → 36.5d |  |  |
| 255 | Dev: IPT aggregated - query | 2009-04-30 → 2009-05-04 (+4d) | 2009-05-06 → 2009-05-11 (+5d) |  |  | 25.25d → 22.75d |  |  |
| 256 | Dev: BE - IPT individual - CRUD | 2009-05-07 → 2009-05-11 (+4d) | 2009-05-11 → 2009-05-13 (+2d) |  |  | 25.25d → 22.75d |  |  |
| 257 | Dev: GUI - IPT individual - CRUD | 2009-05-04 → 2009-05-07 (+3d) | 2009-05-06 → 2009-05-11 (+5d) |  |  | 39d → 36.5d |  |  |
| 258 | Dev: IPT individual - query | 2009-05-11 → 2009-05-14 (+3d) | 2009-05-18 → 2009-05-20 (+2d) |  |  | 25.25d → 22.75d |  |  |
| 260 | Dev: GUI - Stock Control | 2009-05-11 → 2009-05-25 (+14d) | 2009-05-14 → 2009-05-28 (+14d) |  |  | 28d → 18d |  |  |
| 261 | Dev: Backup the data and configuration file | 2009-05-15 → 2009-05-29 (+14d) | 2009-05-21 → 2009-06-04 (+14d) |  |  | 28d → 18d |  |  |
| 263 | Dev: Change date/time format | 2009-05-18 → 2009-05-21 (+3d) | 2009-05-19 → 2009-05-22 (+3d) |  |  | 25.25d → 22.75d |  |  |
| 264 | **Complete Test Cases** |  | 2009-04-07 → 2009-04-15 (+8d) | 39.25d? → 45.86d? | 37% → 55% | 60.75d → 54.14d |  |  |
| 265 | **Entomology** | 2009-03-17 → 2009-03-25 (+8d) | 2009-03-23 → 2009-03-31 (+8d) |  |  | 71.88d → 65.45d |  |  |
| 266 | TC: Biochemical cut-off values | 2009-03-17 → 2009-03-25 (+8d) | 2009-03-18 → 2009-03-26 (+8d) |  |  | 71.88d → 65.45d |  |  |
| 267 | TC: Adult knock down assay | 2009-03-18 → 2009-03-26 (+8d) | 2009-03-19 → 2009-03-27 (+8d) |  |  | 71.88d → 65.45d |  |  |
| 268 | TC: Larvae discriminating dose assay | 2009-03-19 → 2009-03-27 (+8d) | 2009-03-20 → 2009-03-30 (+10d) |  |  | 71.88d → 65.45d |  |  |
| 269 | TC: Efficacy assay | 2009-03-20 → 2009-03-30 (+10d) | 2009-03-23 → 2009-03-31 (+8d) |  |  | 71.88d → 65.45d |  |  |
| 270 | **System** |  | 2009-03-13 → 2009-03-06 A (-7d) | 23d → 18d | 58% → 100% | 77d → none |  |  |
| 276 | TC: create synonyms for imported Geo entities | 2009-02-25 A | 2009-02-26 A |  | 0% → 100% | 78.25d → none |  |  |
| 279 | TC: Change date/time format | 2009-03-09 → 2009-03-02 A (-7d) | 2009-03-10 → 2009-03-03 A (-7d) |  | 0% → 100% | 77d → none |  | constraint start no earlier than 2009-02-21 → start no earlier than 2009-03-02 |
| 280 | TC: Change geo root | 2009-03-10 → 2009-03-03 A (-7d) | 2009-03-11 → 2009-03-04 A (-7d) |  | 0% → 100% | 77d → none |  |  |
| 281 | TC: Select the user language | 2009-03-11 → 2009-03-04 A (-7d) | 2009-03-12 → 2009-03-05 A (-7d) |  | 0% → 100% | 77d → none |  |  |
| 282 | TC: Change date/time format | 2009-03-12 → 2009-03-05 A (-7d) | 2009-03-13 → 2009-03-06 A (-7d) |  | 0% → 100% | 77d → none |  |  |
| 285 | **Case Surveilance** | 2009-03-18 → 2009-03-11 (-7d) | 2009-03-31 → 2009-04-15 (+15d) | 68.58h → 199.16h |  | 37.71d → 54.85d |  |  |
| 286 | TC: aggregated cases - CRUD | 2009-03-18 → 2009-03-11 (-7d) | 2009-03-19 → 2009-03-12 (-7d) | 5.71h → 8h |  | 37.71d → 68.75d | 134 → 311 | constraint start no earlier than 2009-02-01 → start no earlier than 2009-03-10; resources Marlize [70%] → Dave [50%] |
| 287 | TC: calculate CFR | 2009-03-19 → 2009-03-12 (-7d) | 2009-03-20 → 2009-03-13 (-7d) | 5.71h → 8h |  | 37.71d → 68.75d |  | resources Marlize [70%] → Dave [50%] |
| 288 | TC: aggregated cases - dynamic query | 2009-03-20 → 2009-03-13 (-7d) | 2009-03-20 → 2009-03-16 (-4d) | 5.71h → 8h |  | 37.71d → 68.75d |  | resources Marlize [70%] → Dave [50%] |
| 289 | TC: Input or modify population data | 2009-03-20 → 2009-03-16 (-4d) | 2009-03-23 → 2009-03-17 (-6d) | 5.71h → 8h |  | 37.71d → 68.75d |  | resources Marlize [70%] → Dave [50%] |
| 290 | TC: Import population or annual growth rate data | 2009-03-23 → 2009-03-17 (-6d) | 2009-03-24 → 2009-03-18 (-6d) | 5.71h → 8h |  | 37.71d → 68.75d |  | resources Marlize [70%] → Dave [50%] |
| 291 | TC: input/modify outbreak thresholds | 2009-03-24 → 2009-03-18 (-6d) | 2009-03-24 → 2009-03-19 (-5d) | 5.71h → 8h |  | 37.71d → 68.75d |  | resources Marlize [70%] → Dave [50%] |
| 292 | TC :import outbreak thresholds | 2009-03-24 → 2009-03-19 (-5d) | 2009-03-25 → 2009-03-20 (-5d) | 5.71h → 8h |  | 37.71d → 68.75d |  | resources Marlize [70%] → Dave [50%] |
| 293 | TC: Calculate annual or seasonal population | 2009-03-25 → 2009-03-20 (-5d) | 2009-03-26 → 2009-03-23 (-3d) | 5.71h → 8h |  | 37.71d → 68.75d |  | resources Marlize [70%] → Dave [50%] |
| 294 | TC: calculate incidence | 2009-03-26 → 2009-03-23 (-3d) | 2009-03-27 → 2009-03-24 (-3d) | 5.71h → 8h |  | 37.71d → 68.75d |  | resources Marlize [70%] → Dave [50%] |
| 295 | TC: individual cases - CRUD | 2009-03-27 → 2009-03-24 (-3d) | 2009-03-27 → 2009-03-25 (-2d) | 5.71h → 8h |  | 37.71d → 68.75d |  | resources Marlize [70%] → Dave [50%] |
| 296 | TC: Outbreak notification | 2009-03-27 → 2009-03-25 (-2d) | 2009-03-30 → 2009-03-26 (-4d) | 5.71h → 8h |  | 37.71d → 68.75d |  | resources Marlize [70%] → Dave [50%] |
| 297 | TC: individual case - query | 2009-03-30 → 2009-04-14 (+15d) | 2009-03-31 → 2009-04-15 (+15d) |  |  | 37.71d → 39.85d | 296 → 195 | was named TC: individual case - dynamic query |
| 298 | **Intervention monitoring** |  | 2009-04-07 → 2009-04-15 (+8d) | 314.04h → 366.88h | 40% → 60% | 60.75d → 54.14d |  |  |
| 299 | **IRS** | 2009-03-31 → 2009-03-10 (-21d) | 2009-04-06 → 2009-03-16 (-21d) | 34.29h → 40h |  | 37.71d → 71d |  |  |
| 300 | TC: enter/maintain spray team member | 2009-03-31 → 2009-03-10 (-21d) | 2009-03-31 → 2009-03-10 (-21d) | 5.71h → 8h |  | 37.71d → 71d | 297 → none | constraint none → start no earlier than 2009-03-10; resources Marlize [70%] → Saul [50%] |
| 301 | TC: enter/maintain IRS teams | 2009-03-31 → 2009-03-11 (-20d) | 2009-04-01 → 2009-03-11 (-21d) | 5.71h → 8h |  | 37.71d → 71d |  | resources Marlize [70%] → Saul [50%] |
| 302 | TC: input or modify IRS targets | 2009-04-01 → 2009-03-12 (-20d) | 2009-04-02 → 2009-03-12 (-21d) | 5.71h → 8h |  | 37.71d → 71d |  | resources Marlize [70%] → Saul [50%] |
| 303 | TC: Configure items relating to application rate | 2009-04-02 → 2009-03-13 (-20d) | 2009-04-03 → 2009-03-13 (-21d) | 5.71h → 8h |  | 37.71d → 71d |  | resources Marlize [70%] → Saul [50%] |
| 304 | TC: IRS - CRUD | 2009-04-03 → 2009-03-16 (-18d) | 2009-04-03 → 2009-03-16 (-18d) | 5.71h → 8h |  | 37.71d → 71d |  | resources Marlize [70%] → Saul [50%] |
| 307 | **ITN** | 2009-02-26 A | 2009-03-12 → 2009-03-23 (+11d) | 80h → 138h | 0% → 55% | 78.25d → 71d |  |  |
| 308 | TC: ITN aggregated data - CRUD | 2009-02-26 A | 2009-02-27 A |  | 0% → 100% | 78.25d → none | 276, 313 → 276 |  |
| 309 | TC: ITN facility distribution - CRUD | 2009-03-03 → 2009-03-02 A (-1d) | 2009-03-04 → 2009-03-03 A (-1d) |  | 0% → 100% | 78.25d → none | 314 → 308 |  |
| 310 | TC: ITN community distribution - CRUD | 2009-03-04 → 2009-03-03 A (-1d) | 2009-03-05 → 2009-03-04 A (-1d) |  | 0% → 100% | 78.25d → none |  |  |
| 311 | TC: ITN by household - CRUD | 2009-03-10 A | 2009-03-11 A |  | 0% → 100% | 78.25d → none | 315 → 310 | constraint start no earlier than 2009-02-09 → start no earlier than 2009-03-10; resources Sanika [40%] → Dave [40%] |
| 312 | TC: Change visibility of a GUI field | 2009-02-02 → 2009-03-05 A (+31d) | 2009-02-03 → 2009-03-06 A (+31d) | 10h → 8h | 0% → 100% | 104.75d → none |  | was named Dev: GUI - Resistance cut-off values; resources Darrell [80%] → Sanika [40%]; baseline start 2009-02-24 → none; baseline finish 2009-02-25 → none |
| 313 | TC:Indicator survey query | 2009-03-05 → 2009-03-17 (+12d) | 2009-03-06 → 2009-03-18 (+12d) |  |  | 78.25d → 71d | 190, 310, 276 → 304 |  |
| 314 | TC: ITN aggregated data - query | 2009-03-02 → 2009-03-18 (+16d) | 2009-03-03 → 2009-03-19 (+16d) |  |  | 78.25d → 71d | 308 → 313 |  |
| 315 | TC: ITN by facility/community - query | 2009-03-09 → 2009-03-19 (+10d) | 2009-03-10 → 2009-03-20 (+10d) |  |  | 78.25d → 71d | 313 → 314 |  |
| 316 | TC: ITN by household - query | 2009-03-11 → 2009-03-20 (+9d) | 2009-03-12 → 2009-03-23 (+11d) |  |  | 78.25d → 71d | 311 → 315 |  |
| 317 | **Intervention Planning** | 2009-04-06 → 2009-04-15 (+9d) | 2009-04-07 → 2009-04-15 (+8d) |  |  | 37.71d → 39.85d |  |  |
| 318 | TC: Intervention planning | 2009-04-06 → 2009-04-15 (+9d) | 2009-04-07 → 2009-04-15 (+8d) |  |  | 37.71d → 39.85d | 126 → 297 |  |
| 324 | Create standard queries and reports | 2009-04-14 → 2009-04-15 (+1d) | 2009-05-05 → 2009-05-06 (+1d) |  |  | 40.75d → 39.85d | 195 → 318 |  |
| 332 | Dev: Installation (minimal or full) | 2009-05-19 → 2009-05-22 (+3d) | 2009-05-26 → 2009-05-29 (+3d) |  |  | 25.25d → 22.75d |  |  |

## Version 7 (saved 2009-03-13, file MDSS_Project_Plan.mpp)

Note of the change: minor edits for viewing

Last finish stays 2009-06-30.

Changed:

| ID | Task | Start | Duration | Total float | Other |
| --- | --- | --- | --- | --- | --- |
| 4 | Ontology Schema MIRO |  |  |  | was named Dev: Ontology Schema MIRO |
| 5 | Geography MOJO attributes (PostGIS phase 1) |  |  |  | was named Dev: Geography MOJO attributes (PostGIS phase 1) |
| 6 | Geography functions integrated into the query API |  |  |  | was named Dev: Geography functions integrated into the query API |
| 7 | GIS visual tool integration |  |  |  | was named Dev: GIS visual tool integration |
| 8 | Geoserver integration |  |  |  | was named Dev: Geoserver integration |
| 9 | DHTML tree widget selection and integration |  |  |  | was named Dev: DHTML tree widget selection and integration |
| 10 | import/export an XLS file with a pre-populated headers |  |  |  | was named Dev: import/export an XLS file with a pre-populated headers |
| 11 | Import XLS file. Map column headers to fields of a class |  |  |  | was named Dev: Import XLS file. Map column headers to fields of a class |
| 12 | Represent query criteria in back-end |  |  |  | was named Dev: Represent query criteria in back-end |
| 13 | Save query criteria to the database |  |  |  | was named Dev: Save query criteria to the database |
| 14 | Generic GIS visualisation and output requirements |  |  |  | was named Dev: Generic GIS visualisation and output requirements |
| 17 | Search for a geo entity - ontology tree |  |  | 78d → 65.5d | was named Dev: Search for a geo entity - ontology tree |
| 18 | Search for a geo entity |  |  |  | was named Dev: Search for a geo entity |
| 20 | login to MDSS |  |  |  | was named Dev: login to MDSS |
| 21 | BE - Submit a mosquito collection |  |  |  | was named Dev: BE - Submit a mosquito collection |
| 22 | GUI - Submit a mosquito collection |  |  |  | was named Dev: GUI - Submit a mosquito collection |
| 23 | GUI - Adult discriminating dose assay |  |  |  | was named Dev: GUI - Adult discriminating dose assay |
| 24 | BE - Submit collection points |  |  |  | was named Dev: BE - Submit collection points |
| 25 | BE - Resistance Mechanisms |  |  |  | was named Dev: BE - Resistance Mechanisms |
| 26 | GUI - Resistance Mechanisms |  |  | 49.5d → 49.25d | was named Dev: GUI - Resistance Mechanisms |
| 27 | GUI - Submit collection points |  |  |  | was named Dev: GUI - Submit collection points |
| 28 | GUI - Efficacy assay |  |  |  | was named Dev: GUI - Efficacy assay |
| 29 | BE - Resistance cut-off values |  |  |  | was named Dev: BE - Resistance cut-off values |
| 30 | GUI - Resistance cut-off values |  |  |  | was named Dev: GUI - Resistance cut-off values; resources Darrell → Darrell [80%] |
| 31 | BE - Adult knock down assay |  |  | 49.5d → 49.25d | was named Dev: BE - Adult knock down assay |
| 32 | GUI - Adult knock down assay |  |  | 49.5d → 49.25d | was named Dev: GUI - Adult knock down assay |
| 33 | GUI - Larvae discriminating dose assay |  |  | 49.5d → 49.25d | was named Dev: GUI - Larvae discriminating dose assay |
| 34 | BE - Adult discriminating dose assay |  |  |  | was named Dev: BE - Adult discriminating dose assay |
| 35 | BE - Efficacy assay |  |  |  | was named Dev: BE - Efficacy assay |
| 36 | Configure import interfaces |  |  |  | was named Dev: Configure import interfaces; resources Eric [50%] → Eric |
| 37 | BE - Entomology dynamic query |  |  |  | was named Dev: BE - Entomology dynamic query |
| 38 | Enquiry integration with selected reporting tool |  |  |  | was named Dev: Enquiry integration with selected reporting tool |
| 39 | Create formatted dynamic reports |  |  |  | was named Dev: Create formatted dynamic reports |
| 40 | MO Importer |  |  |  | was named Dev: MO Importer |
| 41 | change visibility of fields on GUI |  |  |  | was named Dev: change visibility of fields on GUI |
| 45 | GUI - Biochemical cut-off values |  |  | 49.5d → 49.25d | was named Dev: GUI - Biochemical cut-off values |
| 46 | BE - Larvae discriminating dose assay |  |  |  | was named Dev: BE - Larvae discriminating dose assay |
| 47 | GUI - Entomology dynamic query |  |  |  | was named Dev: GUI - Entomology dynamic query |
| 198 | Reconstruct saved query |  |  |  | was named Dev: Reconstruct saved query |
| 199 | Overall site layout |  |  |  | was named Dev: Overall site layout |
| 200 | Configure system variables |  | 8h → 10h | 49.5d → 49.25d | was named Dev: Configure system variables; resources Darrell → Darrell [80%] |
| 201 | maintain catalogues |  |  |  | was named Dev: maintain catalogues |
| 202 | Epi week - set or change |  |  |  | was named Dev: Epi week - set or change |
| 203 | define season start and end dates |  |  |  | was named Dev: define season start and end dates |
| 204 | enter/maintain people in the system |  |  |  | was named Dev: enter/maintain people in the system |
| 205 | create synonyms for imported Geo entities |  |  |  | was named Dev: create synonyms for imported Geo entities |
| 206 | User Admin Screen for account management |  |  |  | was named Dev: User Admin Screen for account management |
| 207 | user Admin Screen for Role assignment |  |  |  | was named Dev: user Admin Screen for Role assignment |
| 208 | Add localisable character attributes |  |  |  | was named Dev: Add localisable character attributes |
| 209 | CRUD on localisable fields |  |  |  | was named Dev: CRUD on localisable fields |
| 210 | CRUD screen for defining geography universals |  |  |  | was named Dev: CRUD screen for defining geography universals |
| 212 | Change geo root | 2009-03-26 → 2009-03-27 (+1d) |  | 49.5d → 49.25d |  |
| 213 | **Indicator survey** |  | 11.75d → 11.5d | 28.25d → 28d |  |
| 214 | Indicator survey - CRUD |  |  | 49.5d → 49.25d | was named Dev: Indicator survey - CRUD |
| 217 | aggregated cases - CRUD |  |  |  | was named Dev: aggregated cases - CRUD |
| 218 | calculate CFR |  |  |  | was named Dev: calculate CFR |
| 219 | aggregated cases - dynamic query |  |  |  | was named Dev: aggregated cases - dynamic query |
| 220 | Input or modify population data |  |  |  | was named Dev: Input or modify population data |
| 221 | Import population or annual growth rate data |  |  |  | was named Dev: Import population or annual growth rate data |
| 222 | input/modify outbreak thresholds |  |  |  | was named Dev: input/modify outbreak thresholds |
| 224 | Calculate annual or seasonal population |  |  |  | was named Dev: Calculate annual or seasonal population |
| 225 | calculate incidence |  |  |  | was named Dev: calculate incidence |
| 226 | individual cases - CRUD |  |  |  | was named Dev: individual cases - CRUD |
| 227 | Outbreak notification |  |  |  | was named Dev: Outbreak notification |
| 228 | individual case - dynamic query |  |  |  | was named Dev: individual case - dynamic query |
| 231 | enter/maintain spray team member |  |  |  | was named Dev: enter/maintain spray team member |
| 232 | enter/maintain IRS teams |  |  |  | was named Dev: enter/maintain IRS teams |
| 233 | BE - input or modify IRS targets |  |  |  | was named Dev: BE - input or modify IRS targets |
| 234 | GUI - input or modify IRS targets |  |  |  | was named Dev: GUI - input or modify IRS targets |
| 235 | Configure items relating to application rate |  |  |  | was named Dev: Configure items relating to application rate |

| ID | Task | Other |
| --- | --- | --- |
| 236 | Configure items relating to application rate | was named Dev: Configure items relating to application rate |
| 237 | IRS - CRUD | was named Dev: IRS - CRUD |
| 238 | IRS - dynamic query | was named Dev: IRS - dynamic query |
| 240 | larviciding - CRUD | was named Dev: larviciding - CRUD |
| 242 | ITN aggregated data - CRUD | was named Dev: ITN aggregated data - CRUD |
| 244 | ITN facility distribution - CRUD | was named Dev: ITN facility distribution - CRUD |
| 245 | ITN community distribution - CRUD | was named Dev: ITN community distribution - CRUD |
| 247 | ITN by household - CRUD | was named Dev: ITN by household - CRUD |
| 248 | ITN by household - query | was named Dev: ITN by household - query |
| 250 | BE - Intervention planning | was named Dev: BE - Intervention planning |
| 251 | GUI - Intervention planning | was named Dev: GUI - Intervention planning |
| 253 | IPT aggregated - CRUD | was named Dev: IPT aggregated - CRUD |
| 254 | IPT aggregated - CRUD | was named Dev: IPT aggregated - CRUD |
| 255 | IPT aggregated - query | was named Dev: IPT aggregated - query |
| 256 | BE - IPT individual - CRUD | was named Dev: BE - IPT individual - CRUD |
| 257 | GUI - IPT individual - CRUD | was named Dev: GUI - IPT individual - CRUD |
| 258 | IPT individual - query | was named Dev: IPT individual - query |
| 259 | BE - Stock Control | was named Dev: BE - Stock Control |
| 260 | GUI - Stock Control | was named Dev: GUI - Stock Control |
| 261 | Backup the data and configuration file | was named Dev: Backup the data and configuration file |
| 263 | Change date/time format | was named Dev: Change date/time format |
| 332 | Installation (minimal or full) | was named Dev: Installation (minimal or full) |

## Version 8 (saved 2009-03-22, file MDSS_Project_Plan.mpp)

Note of the change: Progress Report for 24.Mar.09 Project Plan released 23.Mar by Marlize - with PDF and HTML versions for viewing

Last finish stays 2009-06-30. Complete tasks 60 → 93.

Added:

| ID | Task | Duration | Start | Finish | Predecessors | Constraint | Resources |
| --- | --- | --- | --- | --- | --- | --- | --- |
| 46 | CR: BE - Submit Collection Points | 4h | 2009-03-18 A | 2009-03-18 A | 31 |  | Justin |
| 47 | CR: BE - Mechanisms | 4h | 2009-03-18 | 2009-03-18 | 46 |  | Justin |
| 48 | CR: GUI - Mechanisms | 4h | 2009-03-20 | 2009-03-23 | 47, 27 |  | Darrell |
| 49 | CR: BE - Resistance cut-off values | 4h | 2009-03-19 A | 2009-03-19 A | 47 |  | Justin |
| 50 | CR: GUI - Resistance cut-off values | 4h | 2009-03-23 | 2009-03-23 | 49, 48 |  | Darrell |
| 176 | Dev: BE - Indicator survey - CRUD | 16h | 2009-03-25 | 2009-03-26 | 180 | finish no earlier than 2009-03-26 | Justin |
| 181 | Dev: GUI - aggregated cases - CRUD | 16h | 2009-03-25 | 2009-03-26 | 180, 50 | finish no earlier than 2009-03-26 | Darrell |
| 190 | Dev: BE - individual cases - CRUD | 16h | 2009-03-27 | 2009-03-30 | 176 | start no earlier than 2009-03-26 | Justin |
| 203 | Dev: GUI - IRS - CRUD | 16h | 2009-04-13 | 2009-04-14 | 202, 201 | start no earlier than 2009-04-10 | Darrell |
| 206 | Dev: BE - larviciding - CRUD | 16h | 2009-04-15 | 2009-04-17 | 221 | start no earlier than 2009-03-14 | Justin |
| 210 | Dev: GUI - ITN aggregated data - CRUD | 16h | 2009-04-23 | 2009-04-27 | 209, 207 |  | Darrell |
| 213 | Dev: GUI - ITN facility distribution - CRUD | 16h | 2009-04-27 | 2009-04-29 | 212, 210 |  | Darrell |
| 215 | Dev: GUI - ITN community distribution - CRUD | 8h | 2009-04-29 | 2009-04-30 | 214, 213 |  | Darrell |
| 218 | Dev: GUI - ITN by household - CRUD | 8h | 2009-04-30 | 2009-05-01 | 217, 215 |  | Darrell |

Removed: 44 Dev:BE - Biochemical cut-off values; 45 GUI - Biochemical cut-off values; 51 Data set acquired; 52 Data set ready for delivery; 54 Data set acquired; 55 Data set ready for delivery; 57 Data set acquired; 58 Data set ready for delivery; 60 Data set acquired; 61 Data set ready for delivery; 63 Data set acquired; 64 Data set ready for delivery; 66 Data set acquired; 67 Data set ready for delivery; 69 Data set acquired; 70 Data set ready for delivery; 72 Data set acquired; 73 Data set ready for delivery; 76 Data set delivered; 78 Data set delivered; 80 Data set delivered; 82 Data set delivered; 84 Data set delivered; 86 Data set delivered; 88 Data set delivered; 91 Data set delivered; 93 Data set delivered; 95 Data set delivered; 97 Data set delivered; 99 Data set delivered; 101 Data set delivered; 103 Data set delivered; 105 Data set delivered; 146 Test: Infectivity assay; 147 Submit defects: Infectivity assay; 148 Test: Molecular assay; 149 Submit defects: Molecular assay; 150 Test: Biochemical assay; 151 Submit defects: Biochemical assay; 152 Test: Biochemical cut-off values; 153 Submit defects: Biochemical cut-off values; 199 Overall site layout; 211 Change date/time format; 263 Change date/time format; 266 TC: Biochemical cut-off values

Changed:

| ID | Task | Start | Finish | Duration | Complete | Total float | Predecessors | Other |
| --- | --- | --- | --- | --- | --- | --- | --- | --- |
| 1 | **MDSS Implementation** |  | 2009-05-28 → 2009-06-08 (+11d) | 84d? → 91d? | 32% → 37% | 23d → 16d |  |  |
| 2 | **Create Prototype (Entomology)** |  | 2009-04-07 → 2009-04-08 (+1d) | 47d? → 48d? | 72% → 88% | 59d → 27.24d |  |  |
| 3 | **System requirements** |  | 2009-04-07 → 2009-04-08 (+1d) | 47d? → 48d? | 88% → 93% | 59d → 16d |  |  |
| 4 | Dev: Ontology Schema MIRO |  |  |  |  |  |  | was named Ontology Schema MIRO |
| 5 | Dev: Geography MOJO attributes (PostGIS phase 1) |  |  |  |  |  |  | was named Geography MOJO attributes (PostGIS phase 1) |
| 6 | Dev: Geography functions integrated into the query API |  |  |  |  |  |  | was named Geography functions integrated into the query API |
| 7 | Dev: GIS visual tool integration |  |  |  |  |  |  | was named GIS visual tool integration |
| 8 | Dev: Geoserver integration |  |  |  |  |  |  | was named Geoserver integration |
| 9 | Dev: DHTML tree widget selection and integration |  |  |  |  |  |  | was named DHTML tree widget selection and integration |
| 10 | Dev: import/export an XLS file with a pre-populated headers |  |  |  |  |  |  | was named import/export an XLS file with a pre-populated headers |
| 11 | Dev: Import XLS file. Map column headers to fields of a class |  |  |  |  |  |  | was named Import XLS file. Map column headers to fields of a class |
| 12 | Dev: Represent query criteria in back-end |  | 2009-03-13 → 2009-03-16 A (+3d) | 5d? → 6d? | 15% → 100% | 46.41d → none |  | was named Represent query criteria in back-end; constraint none → finish no earlier than 2009-03-16 |
| 13 | Dev: Save query criteria to the database | 2009-04-07 → 2009-04-08 (+1d) | 2009-04-07 → 2009-04-08 (+1d) |  |  | 59d → 16d | 37 → 45 | was named Save query criteria to the database |
| 14 | Dev: Generic GIS visualisation and output requirements | 2009-03-16 → 2009-03-19 (+3d) | 2009-03-20 → 2009-03-25 (+5d) |  |  | 63.5d → 18.94d |  | was named Generic GIS visualisation and output requirements; resources Naifeh → Naifeh [60%] |
| 15 | **Prototype Use cases** |  |  |  | 53% → 81% | 60d → 29.24d |  |  |
| 16 | **Search for a geo entity** |  | 2009-03-13 → 2009-03-18 A (+5d) | 15.35d? → 18.35d? | 73% → 100% | 63.5d → none |  |  |
| 17 | Dev: Search for a geo entity - ontology tree |  | 2009-03-09 A |  | 89% → 100% | 65.5d → none |  | was named Search for a geo entity - ontology tree |
| 18 | Dev: Search for a geo entity | 2009-03-12 → 2009-03-17 A (+5d) | 2009-03-13 → 2009-03-18 A (+5d) |  | 0% → 100% | 63.5d → none |  | was named Search for a geo entity; constraint finish no earlier than 2009-03-13 → finish no earlier than 2009-03-18 |
| 20 | Dev: login to MDSS |  |  |  |  |  |  | was named login to MDSS |
| 21 | Dev: BE - Submit a mosquito collection |  |  |  |  |  |  | was named BE - Submit a mosquito collection |
| 22 | Dev: GUI - Submit a mosquito collection |  |  |  |  |  |  | was named GUI - Submit a mosquito collection |
| 23 | Dev: GUI - Adult discriminating dose assay |  |  |  |  |  |  | was named GUI - Adult discriminating dose assay |
| 24 | Dev: BE - Submit collection points |  |  |  |  |  |  | was named BE - Submit collection points |
| 25 | Dev: BE - Resistance Mechanisms |  |  |  |  |  |  | was named BE - Resistance Mechanisms |
| 26 | Dev: GUI - Resistance Mechanisms |  | 2009-03-06 → 2009-03-10 A (+4d) | 28.27h → 48h | 91% → 100% | 49.25d → none |  | was named GUI - Resistance Mechanisms; resources Darrell [80%] → Darrell [200%] |
| 27 | Dev: GUI - Submit collection points | 2009-03-12 → 2009-03-19 (+7d) | 2009-03-13 → 2009-03-20 (+7d) |  |  | 73.88d → 27.07d |  | was named GUI - Submit collection points |
| 28 | Dev: GUI - Efficacy assay | 2009-03-16 → 2009-03-13 A (-3d) | 2009-03-18 → 2009-03-16 A (-2d) | 20h → 5h | 0% → 100% | 73d → none | 27, 35 → 35 | was named GUI - Efficacy assay; constraint none → finish no earlier than 2009-03-13 |
| 29 | Dev: BE - Resistance cut-off values |  |  |  |  |  |  | was named BE - Resistance cut-off values |
| 30 | Dev: GUI - Resistance cut-off values |  |  |  |  |  |  | was named GUI - Resistance cut-off values; resources Darrell [80%] → Darrell |
| 31 | Dev: BE - Adult knock down assay | 2009-03-09 → 2009-03-16 (+7d) | 2009-03-10 → 2009-03-17 (+7d) | 1.5d? → 1.25d? |  | 49.25d → 25d | 26 → 28, 44 | was named BE - Adult knock down assay; resources Darrell [80%] → Justin [80%] |
| 32 | Dev: GUI - Adult knock down assay | 2009-03-10 → 2009-03-18 (+8d) | 2009-03-12 → 2009-03-19 (+7d) | 15h → 10h |  | 49.25d → 27.07d | 31 → 31, 33 | was named GUI - Adult knock down assay |
| 33 | Dev: GUI - Larvae discriminating dose assay | 2009-03-12 → 2009-03-17 (+5d) | 2009-03-16 → 2009-03-18 (+2d) | 15h → 10h |  | 49.25d → 27.07d | 32 → none | was named GUI - Larvae discriminating dose assay; constraint none → start no earlier than 2009-03-17 |
| 34 | Dev: BE - Adult discriminating dose assay |  |  |  |  |  |  | was named BE - Adult discriminating dose assay |
| 35 | Dev: BE - Efficacy assay | 2009-03-12 → 2009-03-11 A (-1d) | 2009-03-16 → 2009-03-13 A (-3d) |  | 0% → 100% | 22.75d → none | 38 → none | was named BE - Efficacy assay; constraint none → start no earlier than 2009-03-11 |
| 36 | Dev: Configure import interfaces |  |  |  |  |  |  | was named Configure import interfaces; resources Eric → Eric [50%] |
| 37 | Dev: BE - Entomology dynamic query | 2009-03-23 → 2009-03-26 (+3d) |  | 6d → 3d |  | 58.5d → 16d |  | was named BE - Entomology dynamic query; resources Naifeh [80%] → Naifeh |
| 38 | Dev: Enquiry integration with selected reporting tool |  | 2009-03-11 A |  | 50% → 100% | 22.75d → none |  | was named Enquiry integration with selected reporting tool |
| 39 | Dev: Create formatted dynamic reports | 2009-03-16 → 2009-03-12 A (-4d) | 2009-03-17 → 2009-03-12 A (-5d) |  | 0% → 100% | 22.75d → none | 38, 35 → 38 | was named Create formatted dynamic reports; constraint none → start no earlier than 2009-03-12 |
| 40 | Dev: MO Importer | 2009-03-27 → 2009-03-02 A (-25d) | 2009-04-02 → 2009-03-06 A (-27d) |  | 0% → 100% | 62d → none | 169 → none | was named MO Importer; constraint start no earlier than 2009-03-20 → start no earlier than 2009-03-02 |
| 41 | Dev: change visibility of fields on GUI | 2009-03-17 → 2009-03-24 (+7d) | 2009-03-23 → 2009-03-30 (+7d) |  |  | 62d → 34.24d |  | was named change visibility of fields on GUI |
| 42 | Delivery of prototype | 2009-04-08 → 2009-04-09 (+1d) | 2009-04-08 → 2009-04-09 (+1d) |  |  | 59d → 58d |  |  |
| 43 | Required delivery of prototype | 2009-03-09 A | 2009-03-09 A |  | 0% → 100% | 81d → none |  |  |
| 44 | Dev: BE - Larvae discriminating dose assay | 2009-03-18 → 2009-03-13 A (-5d) | 2009-03-19 → 2009-03-16 A (-3d) | 1.5d? → 1.25d? | 0% → 100% | 22.75d → none | Dev:BE - Biochemical cut-off values → 35 | was named BE - Larvae discriminating dose assay; constraint none → finish no earlier than 2009-03-13 |
| 45 | Dev: GUI - Entomology dynamic query |  | 2009-04-09 → 2009-04-07 (-2d) | 20h → 8h |  | 58.5d → 16d |  | was named GUI - Entomology dynamic query; resources Darrell [80%] → Naifeh |
| 51 | **Aquire Geo Data** | 2009-02-09 A → 2009-03-24 (+43d) | 2009-03-13 → 2009-04-22 (+40d) | 25d? → 22d? | 25% → 0% | 76d → 49d |  |  |
| 52 | **Mozambique** | 2009-02-10 A → 2009-03-24 (+42d) | 2009-03-13 → 2009-03-24 (+11d) | 24d? → 0d | 51% → 0% | 76d → 71d |  |  |
| 53 | Priority 1: Province Boundaries | 2009-02-10 A → 2009-03-24 (+42d) | 2009-03-13 → 2009-03-24 (+11d) | 24d → 0h | 88% → 0% | 76d → 71d |  | constraint none → start no earlier than 2009-03-24 |
| 54 | Priority 1: District Boundaries | 2009-02-10 A → 2009-03-24 (+42d) | 2009-02-13 A → 2009-03-24 (+39d) | 4d? → 0h | 100% → 0% | none → 71d |  | constraint none → start no earlier than 2009-03-24 |
| 55 | Priority 1: Administrative Post Boundaries | 2009-02-10 A → 2009-03-24 (+42d) | 2009-02-13 A → 2009-03-24 (+39d) | 4d? → 0h | 100% → 0% | none → 71d |  | constraint none → start no earlier than 2009-03-24 |
| 56 | Priority 1: Locality Boundaries | 2009-02-10 A → 2009-03-24 (+42d) | 2009-02-13 A → 2009-03-24 (+39d) | 4d? → 0h | 100% → 0% | none → 71d |  | constraint none → start no earlier than 2009-03-24 |
| 57 | Priority 1: Village Points | 2009-02-10 → 2009-03-24 (+42d) | 2009-02-23 → 2009-03-24 (+29d) | 10d? → 0h |  | 90d → 71d |  | constraint none → start no earlier than 2009-03-24 |
| 58 | Priority 1: Health Facility Points | 2009-02-10 → 2009-03-24 (+42d) | 2009-02-24 → 2009-03-24 (+28d) | 11d? → 0h |  | 89d → 71d |  | constraint none → start no earlier than 2009-03-24 |
| 59 | Priority 1: Sentinel Site Points | 2009-02-10 A → 2009-03-24 (+42d) | 2009-02-16 → 2009-03-24 (+36d) | 5d? → 0h | 20% → 0% | 95d → 71d |  | constraint none → start no earlier than 2009-03-24 |
| 60 | Priority 1: Window Trap Points | 2009-02-10 → 2009-03-24 (+42d) | 2009-02-16 → 2009-03-24 (+36d) | 5d? → 0h |  | 95d → 71d |  | constraint none → start no earlier than 2009-03-24 |
| 61 | **Malawi** | 2009-02-09 → 2009-03-31 (+50d) | 2009-02-13 → 2009-03-31 (+46d) | 5d? → 1d |  | 96d → 65d |  |  |
| 62 | Priority 1: Province / Region Boundaries | 2009-02-09 → 2009-03-31 (+50d) | 2009-02-13 → 2009-03-31 (+46d) | 5d? → 1d |  | 96d → 65d |  | constraint none → start no earlier than 2009-03-31 |
| 63 | Priority 1: District Boundaries | 2009-02-09 → 2009-03-31 (+50d) | 2009-02-13 → 2009-03-31 (+46d) | 5d? → 1d |  | 96d → 65d |  | constraint none → start no earlier than 2009-03-31 |
| 64 | Priority 1: Traditional Authority Boundaries | 2009-02-09 → 2009-03-31 (+50d) | 2009-02-13 → 2009-03-31 (+46d) | 5d? → 1d |  | 96d → 65d |  | constraint none → start no earlier than 2009-03-31 |
| 65 | Priority 1: Village Points | 2009-02-09 → 2009-03-31 (+50d) | 2009-02-13 → 2009-03-31 (+46d) | 5d? → 1d |  | 96d → 65d |  | constraint none → start no earlier than 2009-03-31 |
| 66 | Priority 1: Health Facility Points | 2009-02-09 → 2009-03-31 (+50d) | 2009-02-13 → 2009-03-31 (+46d) | 5d? → 1d |  | 96d → 65d |  | constraint none → start no earlier than 2009-03-31 |
| 67 | Priority 1: Sentinel Site Points | 2009-02-10 → 2009-03-31 (+49d) | 2009-02-13 → 2009-03-31 (+46d) | 4d? → 1d |  | 96d → 65d |  | constraint none → start no earlier than 2009-03-31 |
| 68 | Priority 1: Window Trap Points | 2009-02-13 → 2009-03-31 (+46d) | 2009-02-13 → 2009-03-31 (+46d) | 1d? → 1d |  | 96d → 65d |  | constraint none → start no earlier than 2009-03-31 |
| 69 | **Zambia** | 2009-02-09 → 2009-04-09 (+59d) | 2009-02-20 → 2009-04-22 (+61d) |  |  | 91d → 49d |  |  |
| 70 | Priority 1: Province Boundaries | 2009-02-09 → 2009-04-09 (+59d) | 2009-02-13 → 2009-04-22 (+68d) | 5d? → 10d? |  | 96d → 49d |  | constraint none → start no earlier than 2009-04-09 |
| 71 | Priority 1: District Boundaries | 2009-02-09 → 2009-04-09 (+59d) | 2009-02-13 → 2009-04-22 (+68d) | 5d? → 10d? |  | 96d → 49d |  | constraint none → start no earlier than 2009-04-09 |
| 72 | Priority 1: Constituency Boundaries | 2009-02-09 → 2009-04-09 (+59d) | 2009-02-13 → 2009-04-22 (+68d) | 5d? → 10d? |  | 96d → 49d |  | constraint none → start no earlier than 2009-04-09 |
| 73 | Priority 1: Ward Boundaries | 2009-02-09 → 2009-04-09 (+59d) | 2009-02-13 → 2009-04-22 (+68d) | 5d? → 10d? |  | 96d → 49d |  | constraint none → start no earlier than 2009-04-09 |
| 74 | Priority 1: Village Points | 2009-02-16 → 2009-04-09 (+52d) | 2009-02-20 → 2009-04-22 (+61d) | 5d? → 10d? |  | 91d → 49d |  | constraint none → start no earlier than 2009-04-09 |
| 75 | Priority 1: Health Facility Points | 2009-02-16 → 2009-04-09 (+52d) | 2009-02-20 → 2009-04-22 (+61d) | 5d? → 10d? |  | 91d → 49d |  | constraint none → start no earlier than 2009-04-09 |
| 76 | Priority 1: Sentinel Site Points | 2009-02-16 → 2009-04-09 (+52d) | 2009-02-20 → 2009-04-22 (+61d) | 5d? → 10d? |  | 91d → 49d |  | constraint none → start no earlier than 2009-04-09 |

| ID | Task | Start | Finish | Duration | Complete | Total float | Predecessors | Other |
| --- | --- | --- | --- | --- | --- | --- | --- | --- |
| 77 | Priority 1: Window Trap Points | 2009-02-16 → 2009-04-09 (+52d) | 2009-02-20 → 2009-04-22 (+61d) | 5d? → 10d? |  | 91d → 49d |  | constraint none → start no earlier than 2009-04-09 |
| 78 | Deliver Population data | 2009-03-13 → 2009-04-09 (+27d) | 2009-03-13 → 2009-04-09 (+27d) |  |  | 76d → 58d | 51 → none | constraint start no earlier than 2009-02-18 → start no earlier than 2009-04-09 |
| 79 | Import Geo data into MDSS schema | 2009-03-16 → 2009-04-09 (+24d) | 2009-03-16 → 2009-04-09 (+24d) |  |  | 76d → 58d |  |  |
| 87 | Learn BIRT report writer | 2009-03-16 → 2009-03-19 (+3d) | 2009-03-17 → 2009-03-20 (+3d) |  |  | 0d → 72.57d |  | constraint start no earlier than 2009-03-16 → start no earlier than 2009-03-19 |
| 88 | **Test Prototype Submit Change Requests** | 2009-03-17 A → 2009-03-16 A (-1d) | 2009-04-06 → 2009-04-16 (+10d) | 14.29d? → 23.57d? | 0% → 9% | 57.28d → 53.43d | 87 → none |  |
| 89 | **Test: Geo entity search and maintanance** |  | 2009-03-27 → 2009-04-08 (+12d) | 7.86d? → 15.72d? |  | 38.25d → 53.43d |  |  |
| 91 | Test: Search for a geo entity - tree | 2009-03-17 → 2009-03-27 (+10d) | 2009-03-17 → 2009-03-27 (+10d) |  |  | 38.25d → 53.43d | 90 → 90, 158 |  |
| 92 | Submit defects: Search for a geo entity - tree | 2009-03-17 → 2009-03-27 (+10d) | 2009-03-18 → 2009-03-30 (+12d) |  |  | 38.25d → 53.43d |  |  |
| 93 | Test: create a geo entity | 2009-03-18 → 2009-03-30 (+12d) | 2009-03-18 → 2009-03-30 (+12d) |  |  | 38.25d → 53.43d |  |  |
| 94 | Submit defects: create a geo entity | 2009-03-18 → 2009-03-30 (+12d) | 2009-03-19 → 2009-03-31 (+12d) |  |  | 38.25d → 53.43d |  |  |
| 95 | Test: Search for a geo entity - filtered | 2009-03-19 → 2009-03-31 (+12d) | 2009-03-19 → 2009-03-31 (+12d) |  |  | 38.25d → 53.43d |  |  |
| 96 | Submit defects: Search for a geo entity - filtered | 2009-03-19 → 2009-03-31 (+12d) | 2009-03-20 → 2009-04-01 (+12d) |  |  | 38.25d → 53.43d |  |  |
| 97 | Test: Search for a geo entity - Hierarchy table | 2009-03-20 → 2009-04-01 (+12d) | 2009-03-23 → 2009-04-02 (+10d) |  |  | 38.25d → 53.43d |  |  |
| 98 | TC: IRS - dynamic query | 2009-03-23 → 2009-04-02 (+10d) | 2009-03-24 → 2009-04-03 (+10d) |  |  | 38.25d → 53.43d |  |  |
| 99 | Submit defects: Search for a geo entity - Hierarchy table | 2009-03-24 → 2009-04-03 (+10d) | 2009-03-25 → 2009-04-06 (+12d) |  |  | 38.25d → 53.43d |  |  |
| 100 | Test: Search for a geo entity - combo boxes | 2009-03-25 → 2009-04-06 (+12d) | 2009-03-25 → 2009-04-06 (+12d) |  |  | 38.25d → 53.43d |  |  |
| 101 | Submit defects: Search for a geo entity - combo boxes | 2009-03-25 → 2009-04-06 (+12d) | 2009-03-25 → 2009-04-06 (+12d) |  |  | 38.25d → 53.43d |  |  |
| 102 | Test: Call 101 from 024, 016, 025 | 2009-03-25 → 2009-04-06 (+12d) | 2009-03-26 → 2009-04-07 (+12d) |  |  | 38.25d → 53.43d |  |  |
| 103 | Submit defects: Call 101 from 024, 016, 025 | 2009-03-26 → 2009-04-07 (+12d) | 2009-03-26 → 2009-04-07 (+12d) |  |  | 38.25d → 53.43d |  |  |
| 104 | Write change request MDSS101, MDSS111 | 2009-03-26 → 2009-04-07 (+12d) | 2009-03-27 → 2009-04-08 (+12d) |  |  | 38.25d → 53.43d |  |  |
| 105 | Test: changing visibility of fields in GUI | 2009-03-27 → 2009-04-08 (+12d) | 2009-03-27 → 2009-04-08 (+12d) |  |  | 38.25d → 53.43d |  |  |
| 106 | Submit defects: changing visibility of fields in GUI | 2009-03-27 → 2009-04-08 (+12d) | 2009-03-27 → 2009-04-08 (+12d) |  |  | 38.25d → 53.43d |  |  |
| 107 | Test: Resistance cut-off values | 2009-03-24 → 2009-03-16 A (-8d) | 2009-03-24 → 2009-03-16 A (-8d) |  | 0% → 100% | 65.45d → none | 123 → none | constraint none → start no earlier than 2009-03-14 |
| 108 | Submit defects: Resistance cut-off values | 2009-03-24 → 2009-03-16 A (-8d) | 2009-03-24 → 2009-03-16 A (-8d) |  | 0% → 100% | 65.45d → none |  |  |
| 109 | Test:Species identification | 2009-03-19 → 2009-03-16 A (-3d) | 2009-03-19 → 2009-03-16 A (-3d) |  | 0% → 100% | 65.45d → none | 130 → 108 |  |
| 110 | Submit defects: Species identification | 2009-03-19 → 2009-03-16 A (-3d) | 2009-03-19 → 2009-03-16 A (-3d) |  | 0% → 100% | 65.45d → none |  |  |
| 111 | Write change request: Mechanisms | 2009-03-20 → 2009-03-16 A (-4d) | 2009-03-23 → 2009-03-16 A (-7d) | 4h → 1h | 0% → 100% | 65.45d → none | Submit defects: Biochemical cut-off values → 110 |  |
| 112 | Test: Submit a mosquito collection | 2009-03-17 → 2009-03-16 A (-1d) | 2009-03-17 → 2009-03-16 A (-1d) | 0.12d? → 0.13d? | 0% → 100% | 65.45d → none | 84 → 111 |  |
| 113 | Submit defects: Submit a mosquito collection | 2009-03-17 → 2009-03-16 A (-1d) | 2009-03-17 → 2009-03-16 A (-1d) | 2h → 1h | 0% → 100% | 65.45d → none |  |  |
| 114 | Write change request: Collections | 2009-03-18 → 2009-03-23 (+5d) | 2009-03-18 → 2009-03-23 (+5d) | 4h → 1h |  | 65.45d → 71d | 128 → 113 | constraint none → finish no earlier than 2009-03-23; resources Mike → Miguel |
| 115 | Test: search/update/delete record | 2009-03-17 A | 2009-03-17 A |  | 0% → 100% | 65.45d → none | 113 → 114 |  |
| 116 | Submit defects: search/update/delete | 2009-03-17 A | 2009-03-18 → 2009-03-17 A (-1d) | 2h → 1h | 0% → 100% | 65.45d → none |  |  |
| 117 | Test: Efficacy assay | 2009-03-25 → 2009-03-17 A (-8d) | 2009-03-25 → 2009-03-17 A (-8d) |  | 0% → 100% | 65.45d → none | 126 → 116 |  |
| 118 | Submit defects: Efficacy assay | 2009-03-25 → 2009-03-17 A (-8d) | 2009-03-25 → 2009-03-17 A (-8d) |  | 0% → 100% | 65.45d → none |  |  |
| 119 | Write change request: Efficacy assay | 2009-03-25 → 2009-03-23 (-2d) | 2009-03-25 → 2009-03-23 (-2d) | 2h → 1h |  | 65.45d → 71d |  | constraint none → finish no earlier than 2009-03-23; resources Mike → Miguel |
| 120 | Test: Adult discriminating dose assay | 2009-03-23 → 2009-03-17 A (-6d) | 2009-03-23 → 2009-03-17 A (-6d) | 0.25d? → 0.12d? | 0% → 100% | 65.45d → none | 111 → 119 |  |
| 121 | Submit defects: Adult discriminating dose assay | 2009-03-23 → 2009-03-17 A (-6d) | 2009-03-23 → 2009-03-17 A (-6d) | 2h → 1h | 0% → 100% | 65.45d → none |  |  |
| 122 | Test: Adult knock down assay | 2009-03-24 → 2009-03-25 (+1d) | 2009-03-24 → 2009-03-25 (+1d) |  |  | 65.45d → 68.88d | 125 → 121 | constraint none → start no earlier than 2009-03-25 |
| 123 | Submit defects: Adult knock down assay | 2009-03-24 → 2009-03-25 (+1d) | 2009-03-24 → 2009-03-25 (+1d) |  |  | 65.45d → 68.88d |  |  |
| 124 | Test: Larvae discriminating dose assay | 2009-03-23 → 2009-03-25 (+2d) | 2009-03-23 → 2009-03-25 (+2d) |  |  | 65.45d → 68.88d | 121 → 123 |  |
| 125 | Submit defects: Larvae discriminating dose assay | 2009-03-23 → 2009-03-25 (+2d) | 2009-03-24 → 2009-03-25 (+1d) |  |  | 65.45d → 68.88d |  |  |
| 126 | Write change request: resistance assays | 2009-03-24 → 2009-03-25 (+1d) |  | 4h → 1h |  | 65.45d → 68.88d | 108 → 125 |  |
| 127 | Test: Submit collection points | 2009-03-18 → 2009-03-25 (+7d) | 2009-03-18 → 2009-03-25 (+7d) |  |  | 65.45d → 68.88d | 116 → 126 |  |
| 128 | Submit defects: Submit collection points | 2009-03-18 → 2009-03-25 (+7d) | 2009-03-18 → 2009-03-25 (+7d) |  |  | 65.45d → 68.88d |  |  |
| 129 | Test: Import assay and collection data | 2009-03-18 → 2009-03-25 (+7d) | 2009-03-19 → 2009-03-25 (+6d) |  |  | 65.45d → 68.88d | 114, 86 → 86, 128 |  |
| 130 | Submit defects: generic import functionality | 2009-03-19 → 2009-03-26 (+7d) | 2009-03-19 → 2009-03-26 (+7d) | 2h → 1h |  | 65.45d → 68.88d |  |  |
| 131 | **Test: Entomology dynamic query and reports** | 2009-03-27 → 2009-04-08 (+12d) | 2009-04-06 → 2009-04-16 (+10d) |  |  | 38.25d → 53.43d |  |  |
| 132 | Test: add Geo-entity fields | 2009-03-27 → 2009-04-08 (+12d) | 2009-03-30 → 2009-04-08 (+9d) |  |  | 38.25d → 53.43d |  |  |
| 133 | Test: add other fields | 2009-03-30 → 2009-04-08 (+9d) | 2009-03-30 → 2009-04-09 (+10d) |  |  | 38.25d → 53.43d |  |  |
| 134 | Test: add functions | 2009-03-30 → 2009-04-09 (+10d) | 2009-03-30 → 2009-04-09 (+10d) |  |  | 38.25d → 53.43d |  |  |
| 135 | Test: date ranges on collection date or assay date | 2009-03-30 → 2009-04-09 (+10d) | 2009-03-30 → 2009-04-09 (+10d) |  |  | 38.25d → 53.43d |  |  |
| 136 | Submit defects: Build query | 2009-03-30 → 2009-04-09 (+10d) | 2009-03-30 → 2009-04-09 (+10d) |  |  | 38.25d → 53.43d |  |  |
| 137 | Test: save query | 2009-03-30 → 2009-04-09 (+10d) | 2009-03-31 → 2009-04-09 (+9d) |  |  | 38.25d → 53.43d |  |  |
| 138 | Test: run a saved query | 2009-03-31 → 2009-04-09 (+9d) | 2009-03-31 → 2009-04-10 (+10d) |  |  | 38.25d → 53.43d |  |  |
| 139 | Test: modify a saved query | 2009-03-31 → 2009-04-10 (+10d) | 2009-03-31 → 2009-04-10 (+10d) |  |  | 38.25d → 53.43d |  |  |
| 140 | Test: export query results | 2009-03-31 → 2009-04-10 (+10d) | 2009-03-31 → 2009-04-10 (+10d) |  |  | 38.25d → 53.43d |  |  |
| 141 | Test: dump functionality | 2009-03-31 → 2009-04-10 (+10d) | 2009-03-31 → 2009-04-10 (+10d) |  |  | 38.25d → 53.43d |  |  |
| 142 | Submit defects: deploy query | 2009-03-31 → 2009-04-10 (+10d) | 2009-04-01 → 2009-04-13 (+12d) |  |  | 38.25d → 53.43d |  |  |
| 143 | Test: create thematic map from query | 2009-04-01 → 2009-04-13 (+12d) | 2009-04-02 → 2009-04-14 (+12d) |  |  | 38.25d → 53.43d |  |  |
| 144 | Test: find query results in BIRT | 2009-04-02 → 2009-04-14 (+12d) | 2009-04-02 → 2009-04-14 (+12d) |  |  | 38.25d → 53.43d |  |  |
| 145 | Test: create a report template (table) | 2009-04-02 → 2009-04-14 (+12d) | 2009-04-03 → 2009-04-14 (+11d) |  |  | 38.25d → 53.43d |  |  |
| 146 | Test: Link a report template to query | 2009-04-03 → 2009-04-14 (+11d) | 2009-04-03 → 2009-04-15 (+12d) |  |  | 38.25d → 53.43d |  |  |
| 147 | Test: view/print/save a report | 2009-04-03 → 2009-04-15 (+12d) | 2009-04-03 → 2009-04-15 (+12d) |  |  | 38.25d → 53.43d |  |  |
| 148 | Test: change linked report | 2009-04-03 → 2009-04-15 (+12d) | 2009-04-03 → 2009-04-15 (+12d) |  |  | 38.25d → 53.43d |  |  |
| 149 | Submit defects: deploy query | 2009-04-03 → 2009-04-15 (+12d) | 2009-04-06 → 2009-04-15 (+9d) |  |  | 38.25d → 53.43d |  |  |
| 150 | Write change request: Dynamic query | 2009-04-06 → 2009-04-15 (+9d) | 2009-04-06 → 2009-04-16 (+10d) |  |  | 38.25d → 53.43d |  |  |
| 151 | **Finalise Query Use Cases** |  | 2009-04-14 → 2009-04-02 (-12d) | 36.43d → 28.43d | 72% → 53% | 39.85d → 47.86d |  |  |
| 155 | UC: IRS - query | 2009-02-25 A → 2009-03-12 A (+15d) | 2009-03-11 → 2009-03-16 A (+5d) | 81.14h → 17.14h | 99% → 100% | 49d → none |  | constraint finish no earlier than 2009-03-11 → finish no earlier than 2009-03-16; resources Marlize [70%] → Marlize [93.3%] |
| 156 | UC: ITN FacilityCommunity distribution - query | 2009-04-06 → 2009-03-23 (-14d) | 2009-04-08 → 2009-03-24 (-15d) |  |  | 38.25d → 50.57d | 150 → none | constraint none → start no earlier than 2009-03-23 |
| 157 | UC: ITN household use - query | 2009-04-08 → 2009-03-24 (-15d) | 2009-04-09 → 2009-03-25 (-15d) |  |  | 38.25d → 50.57d |  |  |

| ID | Task | Start | Finish | Duration | Complete | Total float | Predecessors | Other |
| --- | --- | --- | --- | --- | --- | --- | --- | --- |
| 158 | UC: IPT individual - query | 2009-04-09 → 2009-03-25 (-15d) | 2009-04-13 → 2009-03-27 (-17d) |  |  | 38.25d → 50.57d |  |  |
| 159 | UC: IPT aggregated - query | 2009-04-13 → 2009-04-01 (-12d) | 2009-04-14 → 2009-04-02 (-12d) |  |  | 39.85d → 47.86d |  | constraint none → start no earlier than 2009-04-01 |
| 160 | **Complete Development** |  | 2009-05-28 → 2009-06-08 (+11d) | 59d? → 66d? | 0% → 4% | 23d → 16d |  |  |
| 161 | **Generic Development** |  | 2009-04-16 → 2009-04-30 (+14d) | 28.53d? → 39d? | 2% → 19% | 47.47d → 43d |  |  |
| 162 | Dev: Reconstruct saved query | 2009-03-16 → 2009-03-26 (+10d) | 2009-03-23 → 2009-04-02 (+10d) |  |  | 46.41d → 18.94d | 6, 12 → 6, 14 | was named Reconstruct saved query |
| 163 | Dev: Configure system variables | 2009-03-17 → 2009-04-02 (+16d) | 2009-03-18 → 2009-04-06 (+19d) | 10h → 9.41h |  | 49.25d → 18.94d | GUI - Biochemical cut-off values → 50, 162 | was named Configure system variables; resources Darrell [80%] → Nathan [85%] |
| 164 | Dev: maintain catalogues | 2009-03-31 → 2009-04-06 (+6d) | 2009-04-06 → 2009-04-09 (+3d) |  |  | 46.41d → 26.65d | Overall site layout → 163 | was named maintain catalogues |
| 165 | Dev: Epi week - set or change | 2009-03-11 → 2009-03-31 (+20d) | 2009-03-13 → 2009-04-01 (+19d) | 18.82h → 16h |  | 26.24d → 37d | none → 41 | was named Epi week - set or change; constraint start no earlier than 2009-03-11 → start no earlier than 2009-03-17; resources Thomas (Oz) [85%] → Eric |
| 166 | Dev: define season start and end dates | 2009-03-13 → 2009-04-02 (+20d) | 2009-03-17 → 2009-04-03 (+17d) | 18.82h → 16h |  | 26.24d → 37d |  | was named define season start and end dates; resources Thomas (Oz) [85%] → Eric |
| 167 | Dev: enter/maintain people in the system | 2009-03-17 → 2009-04-06 (+20d) | 2009-03-20 → 2009-04-07 (+18d) | 18.82h → 16h |  | 26.24d → 37d |  | was named enter/maintain people in the system; resources Thomas (Oz) [85%] → Eric |
| 168 | Dev: create synonyms for imported Geo entities | 2009-03-20 → 2009-04-20 (+31d) | 2009-03-25 → 2009-04-23 (+29d) |  |  | 22.75d → 37d | 44 → 169, 197 | was named create synonyms for imported Geo entities; resources Justin → Eric |
| 169 | Dev: User Admin Screen for account management | 2009-03-24 → 2009-04-09 (+16d) | 2009-03-26 → 2009-04-15 (+20d) | 3d? → 3.53d? |  | 62d → 26.65d | 41 → 41, 164 | was named User Admin Screen for account management; resources Eric → Nathan [85%] |
| 170 | Dev: user Admin Screen for Role assignment | 2009-04-06 → 2009-04-15 (+9d) | 2009-04-08 → 2009-04-17 (+9d) |  |  | 46.41d → 26.65d | 164 → 169 | was named user Admin Screen for Role assignment |
| 171 | Dev: Add localisable character attributes | 2009-04-08 → 2009-04-24 (+16d) | 2009-04-10 → 2009-04-27 (+17d) | 18.82h → 16h |  | 46.41d → 37d | 170 → 170, 168 | was named Add localisable character attributes; resources Nathan [85%] → Eric |
| 172 | Dev: CRUD on localisable fields |  | 2009-03-16 → 2009-03-23 (+7d) | 48h → 88h | 15% → 75% | 62d → 34.24d |  | was named CRUD on localisable fields; constraint finish no earlier than 2009-03-16 → finish no earlier than 2009-03-23 |
| 173 | Dev: CRUD screen for defining geography universals | 2009-04-10 → 2009-04-28 (+18d) | 2009-04-16 → 2009-04-30 (+14d) | 28.23h → 24h |  | 46.41d → 43d |  | was named CRUD screen for defining geography universals; resources Nathan [85%] → Naifeh |
| 174 | Change geo root | 2009-03-27 → 2009-04-09 (+13d) | 2009-03-31 → 2009-04-09 (+9d) | 20h → 8h |  | 49.25d → 16d | Change date/time format → 163, 13 | resources Darrell [80%] → Naifeh |
| 175 | **Indicator survey** | 2009-03-18 → 2009-03-25 (+7d) | 2009-04-03 → 2009-04-23 (+20d) | 11.5d → 22d |  | 28d → 16d |  |  |
| 177 | Dev: GUI - Indicator survey - CRUD | 2009-03-18 → 2009-03-27 (+9d) | 2009-03-25 → 2009-03-30 (+5d) | 40h → 16h |  | 49.25d → 26.25d | 163 → 176, 181 | was named Indicator survey - CRUD; constraint none → finish no earlier than 2009-03-30; resources Darrell [80%] → Darrell |
| 178 | Dev - Indicator survey - dynamic query | 2009-03-26 → 2009-04-17 (+22d) | 2009-04-03 → 2009-04-23 (+20d) | 50h → 40h |  | 22.75d → 16d | 168, 154 → 183 | constraint none → start no earlier than 2009-04-04; resources Justin [80%] → Naifeh |
| 179 | **Case Surveilance** | 2009-03-16 → 2009-03-23 (+7d) | 2009-05-13 → 2009-05-25 (+12d) | 43d → 45.35d |  | 18d → 23.5d |  |  |
| 180 | Dev: BE - aggregated cases - CRUD | 2009-03-16 → 2009-03-23 (+7d) | 2009-03-20 → 2009-03-24 (+4d) | 40h → 16h |  | 18d → 23.5d | none → 49 | was named aggregated cases - CRUD; constraint start no earlier than 2009-03-16 → finish no earlier than 2009-03-24; resources TBD → Justin |
| 182 | Dev: calculate CFR | 2009-03-20 → 2009-04-28 (+39d) | 2009-03-26 → 2009-04-28 (+33d) | 37.65h → 8h |  | 26.24d → 37d | 167 → 171 | was named calculate CFR; resources Thomas (Oz) [85%] → Eric |
| 183 | Dev: aggregated cases - dynamic query | 2009-03-23 → 2009-04-10 (+18d) | 2009-03-27 → 2009-04-16 (+20d) |  |  | 18d → 16d | 180, 153 → 153, 174 | was named aggregated cases - dynamic query; constraint none → start no earlier than 2009-03-17; resources TBD → Naifeh |
| 184 | Dev: Input or modify population data | 2009-03-30 → 2009-04-17 (+18d) | 2009-04-02 → 2009-04-24 (+22d) | 32h → 37.65h |  | 18d → 26.65d | 183 → 170 | was named Input or modify population data; constraint start no earlier than 2009-02-01 → start no earlier than 2009-03-05; resources TBD → Nathan [85%] |
| 185 | Dev: Import population or annual growth rate data | 2009-04-03 → 2009-04-24 (+21d) | 2009-04-09 → 2009-05-04 (+25d) | 40h → 47.06h |  | 18d → 26.65d |  | was named Import population or annual growth rate data; resources TBD → Nathan [85%] |
| 186 | Dev: input/modify outbreak thresholds | 2009-04-10 → 2009-05-04 (+24d) | 2009-04-15 → 2009-05-08 (+23d) | 32h → 37.65h |  | 18d → 26.65d |  | was named input/modify outbreak thresholds; resources TBD → Nathan [85%] |
| 187 | Dev :import outbreak thresholds | 2009-04-16 → 2009-05-08 (+22d) | 2009-04-21 → 2009-05-15 (+24d) | 32h → 37.65h |  | 18d → 26.65d |  | resources TBD → Nathan [85%] |
| 188 | Dev: Calculate annual or seasonal population | 2009-05-05 → 2009-05-15 (+10d) | 2009-05-13 → 2009-05-25 (+12d) | 50h → 47.06h |  | 27.75d → 26.65d | 222 → 222, 187 | was named Calculate annual or seasonal population; resources Darrell [80%] → Nathan [85%] |
| 189 | Dev: calculate incidence | 2009-03-26 → 2009-04-29 (+34d) | 2009-04-03 → 2009-04-29 (+26d) | 47.06h → 8h |  | 26.24d → 37d |  | was named calculate incidence; resources Thomas (Oz) [85%] → Eric |
| 191 | Dev: GUI - individual cases - CRUD | 2009-04-22 → 2009-04-02 (-20d) | 2009-04-28 → 2009-04-03 (-25d) | 40h → 16h |  | 18d → 24.25d | 187 → 190, 177 | was named individual cases - CRUD; constraint none → start no earlier than 2009-04-02; resources TBD → Darrell |
| 192 | Dev: Outbreak notification | 2009-04-03 → 2009-04-30 (+27d) | 2009-04-13 → 2009-05-01 (+18d) | 47.06h → 16h |  | 26.24d → 37d |  | was named Outbreak notification; resources Thomas (Oz) [85%] → Eric |
| 193 | Dev: individual case - dynamic query | 2009-04-29 → 2009-04-24 (-5d) | 2009-05-05 → 2009-04-30 (-5d) |  |  | 18d → 16d | 191, 152 → 191, 152, 178 | was named individual case - dynamic query; resources TBD → Naifeh |
| 194 | **Intervention monitoring** | 2009-04-03 → 2009-03-31 (-3d) | 2009-05-25 → 2009-06-08 (+14d) | 36.51d → 50d |  | 22.75d → 16d |  |  |
| 195 | **IRS** | 2009-04-03 → 2009-03-31 (-3d) | 2009-05-22 → 2009-05-06 (-16d) | 35d → 27d |  | 22.75d → 23.5d |  |  |
| 196 | Dev: enter/maintain spray team member | 2009-05-06 → 2009-04-08 (-28d) | 2009-05-11 → 2009-04-13 (-28d) |  |  | 18d → 37d | 193 → 167 | was named enter/maintain spray team member; constraint none → start no earlier than 2009-03-20; resources TBD → Eric |
| 197 | Dev: enter/maintain IRS teams | 2009-05-12 → 2009-04-14 (-28d) | 2009-05-15 → 2009-04-17 (-28d) |  |  | 18d → 37d |  | was named enter/maintain IRS teams; resources TBD → Eric |
| 198 | Dev: BE - input or modify IRS targets | 2009-04-03 → 2009-03-31 (-3d) | 2009-04-08 → 2009-04-02 (-6d) | 30h → 24h |  | 22.75d → 23.5d | 178 → 190 | was named BE - input or modify IRS targets; resources Justin [80%] → Justin |
| 199 | Dev: GUI - input or modify IRS targets | 2009-05-14 → 2009-04-06 (-38d) | 2009-05-19 → 2009-04-08 (-41d) | 30h → 24h |  | 27.75d → 24.25d | 188, 198 → 198, 191 | was named GUI - input or modify IRS targets; constraint none → start no earlier than 2009-04-01; resources Darrell [80%] → Darrell |
| 200 | Dev: BE - Configure items relating to application rate | 2009-04-09 → 2009-04-03 (-6d) | 2009-04-17 → 2009-04-07 (-10d) | 50h → 24h |  | 22.75d → 23.5d |  | was named Configure items relating to application rate; resources Justin [80%] → Justin |
| 201 | Dev: GUI - Configure items relating to application rate | 2009-05-19 → 2009-04-09 (-40d) | 2009-05-22 → 2009-04-10 (-42d) | 20h → 16h |  | 27.75d → 24.25d |  | was named Configure items relating to application rate; resources Darrell [80%] → Darrell |
| 202 | Dev: BE - IRS - CRUD | 2009-04-16 → 2009-04-08 (-8d) | 2009-04-22 → 2009-04-09 (-13d) | 28.23h → 16h |  | 46.41d → 23.5d | 173 → 200 | was named IRS - CRUD; constraint none → start no earlier than 2009-03-23; resources Nathan [85%] → Justin |
| 204 | Dev: IRS - dynamic query | 2009-04-17 → 2009-05-01 (+14d) | 2009-04-24 → 2009-05-06 (+12d) | 40h → 32h |  | 22.75d → 16d | 200, 155 → 155, 193 | was named IRS - dynamic query; resources Justin [80%] → Naifeh |
| 205 | **Larvaciding** | 2009-04-13 → 2009-04-15 (+2d) | 2009-04-20 → 2009-04-23 (+3d) | 4.71d → 6d |  | 26.24d → 23.25d |  |  |
| 207 | Dev: GUI - larviciding - CRUD | 2009-04-13 → 2009-04-21 (+8d) | 2009-04-20 → 2009-04-23 (+3d) | 37.65h → 16h |  | 26.24d → 23.25d | 192 → 206, 222 | was named larviciding - CRUD; constraint none → start no earlier than 2009-03-17; resources Thomas (Oz) [85%] → Darrell |
| 208 | **ITN** | 2009-04-20 → 2009-04-17 (-3d) | 2009-05-25 → 2009-05-27 (+2d) | 25.53d → 28.25d |  | 26.24d → 16d |  |  |
| 209 | Dev: BE - ITN aggregated data - CRUD | 2009-04-20 → 2009-04-17 (-3d) | 2009-04-28 → 2009-04-21 (-7d) | 47.06h → 16h |  | 26.24d → 25.25d | 207 → 206 | was named ITN aggregated data - CRUD; resources Thomas (Oz) [85%] → Justin |
| 211 | Dev: ITN aggregated data - query | 2009-04-28 → 2009-05-07 (+9d) | 2009-04-29 → 2009-05-13 (+14d) | 8h → 40h |  | 26.24d → 16d | 209 → 210, 204 | resources none → Naifeh |
| 212 | Dev: BE - ITN facility distribution - CRUD | 2009-04-29 → 2009-04-21 (-8d) | 2009-05-08 → 2009-04-23 (-15d) | 56.47h → 16h |  | 26.24d → 27.25d | 211 → 209 | was named ITN facility distribution - CRUD; resources Thomas (Oz) [85%] → Justin |
| 214 | Dev: BE - ITN community distribution - CRUD | 2009-05-08 → 2009-04-23 (-15d) | 2009-05-14 → 2009-04-24 (-20d) | 37.65h → 8h |  | 26.24d → 28.25d |  | was named ITN community distribution - CRUD; resources Thomas (Oz) [85%] → Justin |
| 216 | Dev: ITN by facility/community - query |  | 2009-05-15 → 2009-05-20 (+5d) | 8h → 40h |  | 26.24d → 16d | 214, 156 → 156, 211, 215 | resources none → Naifeh |
| 217 | Dev: BE - ITN by household - CRUD | 2009-05-15 → 2009-04-24 (-21d) | 2009-05-25 → 2009-04-27 (-28d) | 47.06h → 8h |  | 26.24d → 33.25d | 214, 216 → 214 | was named ITN by household - CRUD; resources Thomas (Oz) [85%] → Justin |
| 219 | Dev: ITN by household - query | 2009-05-18 → 2009-05-21 (+3d) | 2009-05-22 → 2009-05-27 (+5d) |  |  | 18d → 16d | 197, 157 → 197, 157, 216 | was named ITN by household - query; resources TBD → Naifeh |
| 220 | **Intervention Planning** | 2009-04-24 → 2009-04-10 (-14d) | 2009-05-05 → 2009-04-21 (-14d) | 7.5d → 7.75d |  | 22.75d → 23.25d |  |  |
| 221 | Dev: BE - Intervention planning | 2009-04-24 → 2009-04-10 (-14d) | 2009-04-29 → 2009-04-15 (-14d) |  |  | 22.75d → 23.5d | 204 → 202 | was named BE - Intervention planning |
| 222 | Dev: GUI - Intervention planning | 2009-04-30 → 2009-04-16 (-14d) | 2009-05-05 → 2009-04-21 (-14d) |  |  | 27.75d → 23.25d | 221, 174 → 221, 203 | was named GUI - Intervention planning; constraint none → start no earlier than 2009-04-16 |
| 223 | **IPT** | 2009-04-30 → 2009-04-27 (-3d) | 2009-05-20 → 2009-06-08 (+19d) | 15d → 30.25d |  | 22.75d → 16d |  |  |
| 224 | Dev: BE - IPT aggregated - CRUD | 2009-04-30 → 2009-04-27 (-3d) | 2009-05-04 → 2009-04-30 (-4d) |  |  | 22.75d → 33.25d | 221 → 217 | was named IPT aggregated - CRUD |
| 225 | Dev: GUI - IPT aggregated - CRUD | 2009-05-04 → 2009-05-01 (-3d) |  |  |  | 36.5d → 31.75d | 224 → 224, 218 | was named IPT aggregated - CRUD |
| 226 | Dev: IPT aggregated - query | 2009-05-04 → 2009-05-28 (+24d) | 2009-05-11 → 2009-06-02 (+22d) | 40h → 32h |  | 22.75d → 16d | 158, 224 → 225, 219 | was named IPT aggregated - query; resources Justin [80%] → Naifeh |
| 227 | Dev: BE - IPT individual - CRUD | 2009-05-11 → 2009-04-30 (-11d) | 2009-05-13 → 2009-05-04 (-9d) |  |  | 22.75d → 34.25d | 226 → 224 | was named BE - IPT individual - CRUD; constraint none → start no earlier than 2009-04-19 |
| 228 | Dev: GUI - IPT individual - CRUD | 2009-05-07 → 2009-05-06 (-1d) | 2009-05-11 → 2009-05-08 (-3d) |  |  | 36.5d → 33.25d | 225 → 225, 227 | was named GUI - IPT individual - CRUD |
| 229 | Dev: IPT individual - query | 2009-05-14 → 2009-06-03 (+20d) | 2009-05-20 → 2009-06-08 (+19d) | 40h → 32h |  | 22.75d → 16d | 159, 227 → 228, 226 | was named IPT individual - query; resources Justin [80%] → Naifeh |
| 230 | Dev: BE - Stock Control | 2009-04-22 → 2009-05-04 (+12d) | 2009-04-27 → 2009-05-06 (+9d) | 28.23h → 16h |  | 46.41d → 34.25d | 202 → 227 | was named BE - Stock Control; constraint none → start no earlier than 2009-03-25; resources Nathan [85%] → Justin |
| 231 | Dev: GUI - Stock Control | 2009-05-25 → 2009-05-08 (-17d) | 2009-05-28 → 2009-05-12 (-16d) | 32h → 16h |  | 18d → 35.25d | 219 → 230, 228 | was named GUI - Stock Control; resources TBD → Darrell |
| 232 | Dev: Backup the data and configuration file | 2009-05-29 → 2009-05-04 (-25d) | 2009-06-04 → 2009-05-08 (-27d) |  |  | 18d → 37d | 231 → 192 | was named Backup the data and configuration file; resources TBD → Eric |
| 234 | **Complete Test Cases** |  | 2009-04-15 → 2009-04-03 (-12d) | 45.86d? → 37.86d? | 55% → 81% | 54.14d → 62.14d |  |  |
| 235 | **Entomology** | 2009-03-25 → 2009-03-11 A (-14d) | 2009-03-31 → 2009-03-13 A (-18d) | 4d? → 3d? | 0% → 100% | 65.45d → none |  |  |
| 236 | TC: Adult knock down assay | 2009-03-26 → 2009-03-11 A (-15d) | 2009-03-27 → 2009-03-11 A (-16d) |  | 0% → 100% | 65.45d → none | TC: Biochemical cut-off values → none | constraint none → start no earlier than 2009-03-11 |
| 237 | TC: Larvae discriminating dose assay | 2009-03-27 → 2009-03-12 A (-15d) | 2009-03-30 → 2009-03-12 A (-18d) |  | 0% → 100% | 65.45d → none |  |  |

| ID | Task | Start | Finish | Duration | Complete | Total float | Predecessors | Other |
| --- | --- | --- | --- | --- | --- | --- | --- | --- |
| 238 | TC: Efficacy assay | 2009-03-30 → 2009-03-13 A (-17d) | 2009-03-31 → 2009-03-13 A (-18d) |  | 0% → 100% | 65.45d → none |  |  |
| 254 | **Case Surveilance** | 2009-03-11 A | 2009-04-15 → 2009-04-03 (-12d) | 199.16h → 135.14h | 0% → 80% | 54.85d → 58.61d |  |  |
| 255 | TC: aggregated cases - CRUD | 2009-03-11 A | 2009-03-12 A |  | 0% → 100% | 68.75d → none |  |  |
| 256 | TC: calculate CFR | 2009-03-12 A | 2009-03-13 A |  | 0% → 100% | 68.75d → none |  |  |
| 257 | TC: aggregated cases - dynamic query | 2009-03-13 A | 2009-03-16 A |  | 0% → 100% | 68.75d → none |  |  |
| 258 | TC: Input or modify population data | 2009-03-16 A | 2009-03-17 A |  | 0% → 100% | 68.75d → none |  |  |
| 259 | TC: Import population or annual growth rate data | 2009-03-17 A | 2009-03-18 A |  | 0% → 100% | 68.75d → none |  |  |
| 260 | TC: input/modify outbreak thresholds | 2009-03-18 A | 2009-03-19 A |  | 0% → 100% | 68.75d → none |  |  |
| 261 | TC :import outbreak thresholds | 2009-03-19 A | 2009-03-20 A |  | 0% → 100% | 68.75d → none |  |  |
| 263 | TC: individual case - query | 2009-04-14 → 2009-04-02 (-12d) | 2009-04-15 → 2009-04-03 (-12d) |  |  | 39.85d → 47.86d |  |  |
| 264 | **Intervention monitoring** |  | 2009-04-15 → 2009-04-03 (-12d) | 366.88h → 302.86h | 60% → 69% | 54.14d → 62.14d |  |  |
| 265 | **IRS** | 2009-03-10 → 2009-03-16 A (+6d) | 2009-03-16 → 2009-03-30 (+14d) | 40h → 80.86h | 0% → 39% | 71d → 66.89d |  |  |
| 266 | TC: enter/maintain spray team member | 2009-03-10 → 2009-03-16 A (+6d) | 2009-03-10 → 2009-03-16 A (+6d) |  | 0% → 100% | 71d → none |  | constraint start no earlier than 2009-03-10 → start no earlier than 2009-03-16 |
| 267 | TC: enter/maintain IRS teams | 2009-03-11 → 2009-03-17 A (+6d) | 2009-03-11 → 2009-03-17 A (+6d) |  | 0% → 100% | 71d → none |  |  |
| 268 | TC:Indicator survey query | 2009-03-17 → 2009-03-23 (+6d) | 2009-03-18 → 2009-03-24 (+6d) | 10h → 8h |  | 71d → 67.5d | 275 → 262, 267 | resources Sanika [40%] → Dave [50%] |
| 269 | TC: ITN aggregated data - query | 2009-03-18 → 2009-03-24 (+6d) | 2009-03-19 → 2009-03-25 (+6d) | 10h → 8h |  | 71d → 67.32d | 268 → 268, 156 | resources Sanika [40%] → Dave [50%] |
| 270 | TC: ITN by facility/community - query | 2009-03-19 → 2009-03-25 (+6d) | 2009-03-20 → 2009-03-26 (+6d) | 10h → 8h |  | 71d → 66.89d | 269 → 269, 157 | resources Sanika [40%] → Dave [50%] |
| 271 | TC: ITN by household - query | 2009-03-20 → 2009-03-26 (+6d) | 2009-03-23 → 2009-03-30 (+7d) |  |  | 71d → 66.89d |  |  |
| 272 | TC: individual cases - CRUD |  | 2009-03-25 → 2009-03-24 (-1d) |  |  | 68.75d → 70d | 284 → none | constraint none → start no earlier than 2009-03-24; resources Dave [50%] → Sanika [50%] |
| 273 | TC: input or modify IRS targets | 2009-03-12 → 2009-03-17 A (+5d) | 2009-03-12 → 2009-03-17 A (+5d) |  | 0% → 100% | 71d → none | 267 → none | constraint none → start no earlier than 2009-03-17 |
| 274 | TC: Configure items relating to application rate | 2009-03-13 → 2009-03-18 A (+5d) | 2009-03-13 → 2009-03-18 A (+5d) |  | 0% → 100% | 71d → none |  |  |
| 275 | TC: IRS - CRUD | 2009-03-16 → 2009-03-23 (+7d) | 2009-03-16 → 2009-03-23 (+7d) |  |  | 71d → 69d |  | constraint none → start no earlier than 2009-03-23 |
| 278 | **ITN** |  | 2009-03-23 → 2009-03-25 (+2d) | 138h → 154h | 55% → 75% | 71d → 69d |  |  |
| 284 | TC: calculate incidence | 2009-03-23 → 2009-03-24 (+1d) |  |  |  | 68.75d → 69d | 262 → 275 | resources Dave [50%] → Saul [50%] |
| 285 | TC: Outbreak notification |  | 2009-03-26 → 2009-03-25 (-1d) |  |  | 68.75d → 69d | 272 → 284 | resources Dave [50%] → Saul [50%] |
| 286 | **Intervention Planning** | 2009-04-15 → 2009-04-03 (-12d) | 2009-04-15 → 2009-04-03 (-12d) |  |  | 39.85d → 47.86d |  |  |
| 287 | TC: Intervention planning | 2009-04-15 → 2009-04-03 (-12d) | 2009-04-15 → 2009-04-03 (-12d) |  |  | 39.85d → 47.86d |  |  |
| 293 | Create standard queries and reports | 2009-04-15 → 2009-04-03 (-12d) | 2009-05-06 → 2009-04-24 (-12d) |  |  | 39.85d → 47.86d |  |  |
| 301 | Dev: Installation (minimal or full) | 2009-05-22 → 2009-05-06 (-16d) | 2009-05-29 → 2009-05-13 (-16d) |  |  | 22.75d → 34.25d | Change date/time format → 230 | was named Installation (minimal or full) |

## Version 9 (saved 2009-03-25, file MDSS_Project_Plan.mpp)

Note of the change: New version of Project Plan with views released 24.Mar.09 by Miguel and Marlize

Last finish stays 2009-06-30. Complete tasks 93 → 98.

Added:

| ID | Task | Duration | Start | Finish | Predecessors | Resources |
| --- | --- | --- | --- | --- | --- | --- |
| 157 | UC: ITN Community distribution - query | 8h | 2009-03-24 | 2009-03-25 | 156 | Marlize [70%] |
| 272 | TC: ITN by community - query | 8h | 2009-03-30 | 2009-03-30 | 271 | Dave [50%] |

Changed:

| ID | Task | Start | Finish | Duration | Complete | Total float | Predecessors | Other |
| --- | --- | --- | --- | --- | --- | --- | --- | --- |
| 1 | **MDSS Implementation** |  |  | 91d? → 90.06d? | 37% → 38% | 16d → 16.94d |  |  |
| 2 | **Create Prototype (Entomology)** |  | 2009-04-08 → 2009-04-07 (-1d) | 48d? → 47d? | 88% → 87% | 27.24d → 28.24d |  |  |
| 3 | **System requirements** |  | 2009-04-08 → 2009-04-07 (-1d) | 48d? → 47d? |  | 16d → 17d |  |  |
| 13 | Dev: Save query criteria to the database | 2009-04-08 → 2009-04-07 (-1d) | 2009-04-08 → 2009-04-07 (-1d) |  |  | 16d → 17d |  |  |
| 14 | Dev: Generic GIS visualisation and output requirements | 2009-03-19 → 2009-03-23 (+4d) | 2009-03-25 → 2009-03-27 (+2d) |  |  | 18.94d → 16.94d |  | constraint start no earlier than 2009-03-14 → finish no earlier than 2009-03-27 |
| 15 | **Prototype Use cases** |  |  |  | 81% → 80% |  |  |  |
| 27 | Dev: GUI - Submit collection points | 2009-03-19 → 2009-03-23 (+4d) | 2009-03-20 → 2009-03-24 (+4d) |  |  | 27.07d → 25.07d |  |  |
| 31 | Dev: BE - Adult knock down assay | 2009-03-16 A | 2009-03-17 A |  | 0% → 100% | 25d → none |  |  |
| 32 | Dev: GUI - Adult knock down assay | 2009-03-18 → 2009-03-20 (+2d) | 2009-03-19 → 2009-03-23 (+4d) |  |  | 27.07d → 25.07d |  |  |
| 33 | Dev: GUI - Larvae discriminating dose assay | 2009-03-17 → 2009-03-19 (+2d) | 2009-03-18 → 2009-03-20 (+2d) |  |  | 27.07d → 25.07d |  | constraint start no earlier than 2009-03-17 → start no earlier than 2009-03-19 |
| 37 | Dev: BE - Entomology dynamic query | 2009-03-26 → 2009-03-23 (-3d) | 2009-04-06 → 2009-03-27 (-10d) | 3d → 5d |  | 16d → 22d | 34, 14 → 34 | constraint start no earlier than 2009-02-27 → finish no earlier than 2009-03-27 |
| 41 | Dev: change visibility of fields on GUI | 2009-03-24 → 2009-03-31 (+7d) | 2009-03-30 → 2009-04-06 (+7d) |  |  | 34.24d → 29.24d |  |  |
| 42 | Delivery of prototype | 2009-04-09 → 2009-04-08 (-1d) | 2009-04-09 → 2009-04-08 (-1d) |  |  | 58d → 59d |  |  |
| 45 | Dev: GUI - Entomology dynamic query | 2009-04-07 → 2009-04-06 (-1d) | 2009-04-07 → 2009-04-06 (-1d) |  |  | 16d → 17d |  |  |
| 47 | CR: BE - Mechanisms | 2009-03-18 A | 2009-03-18 A |  | 0% → 100% | 25d → none |  |  |
| 48 | CR: GUI - Mechanisms | 2009-03-20 → 2009-03-24 (+4d) | 2009-03-23 → 2009-03-25 (+2d) |  |  | 27.07d → 25.07d |  |  |
| 50 | CR: GUI - Resistance cut-off values | 2009-03-23 → 2009-03-25 (+2d) | 2009-03-23 → 2009-03-25 (+2d) |  |  | 27.07d → 25.07d |  |  |
| 87 | Learn BIRT report writer | 2009-03-19 A | 2009-03-20 A |  | 0% → 100% | 72.57d → none |  |  |
| 88 | **Test Prototype Submit Change Requests** |  | 2009-04-16 → 2009-04-17 (+1d) | 23.57d? → 24.57d? | 9% → 11% | 53.43d → 52.43d |  |  |
| 89 | **Test: Geo entity search and maintanance** |  | 2009-04-08 → 2009-04-09 (+1d) | 15.72d? → 16.72d? |  | 53.43d → 52.43d |  |  |
| 91 | Test: Search for a geo entity - tree | 2009-03-27 → 2009-03-30 (+3d) | 2009-03-27 → 2009-03-30 (+3d) |  |  | 53.43d → 52.43d |  |  |
| 92 | Submit defects: Search for a geo entity - tree | 2009-03-27 → 2009-03-30 (+3d) | 2009-03-30 → 2009-03-31 (+1d) |  |  | 53.43d → 52.43d |  |  |
| 93 | Test: create a geo entity | 2009-03-30 → 2009-03-31 (+1d) | 2009-03-30 → 2009-03-31 (+1d) |  |  | 53.43d → 52.43d |  |  |
| 94 | Submit defects: create a geo entity | 2009-03-30 → 2009-03-31 (+1d) | 2009-03-31 → 2009-04-01 (+1d) |  |  | 53.43d → 52.43d |  |  |
| 95 | Test: Search for a geo entity - filtered | 2009-03-31 → 2009-04-01 (+1d) | 2009-03-31 → 2009-04-01 (+1d) |  |  | 53.43d → 52.43d |  |  |
| 96 | Submit defects: Search for a geo entity - filtered | 2009-03-31 → 2009-04-01 (+1d) | 2009-04-01 → 2009-04-02 (+1d) |  |  | 53.43d → 52.43d |  |  |
| 97 | Test: Search for a geo entity - Hierarchy table | 2009-04-01 → 2009-04-02 (+1d) | 2009-04-02 → 2009-04-03 (+1d) |  |  | 53.43d → 52.43d |  |  |
| 98 | TC: IRS - dynamic query | 2009-04-02 → 2009-04-03 (+1d) | 2009-04-03 → 2009-04-06 (+3d) |  |  | 53.43d → 52.43d |  |  |
| 99 | Submit defects: Search for a geo entity - Hierarchy table | 2009-04-03 → 2009-04-06 (+3d) | 2009-04-06 → 2009-04-07 (+1d) |  |  | 53.43d → 52.43d |  |  |
| 100 | Test: Search for a geo entity - combo boxes | 2009-04-06 → 2009-04-07 (+1d) | 2009-04-06 → 2009-04-07 (+1d) |  |  | 53.43d → 52.43d |  |  |
| 101 | Submit defects: Search for a geo entity - combo boxes | 2009-04-06 → 2009-04-07 (+1d) | 2009-04-06 → 2009-04-07 (+1d) |  |  | 53.43d → 52.43d |  |  |
| 102 | Test: Call 101 from 024, 016, 025 | 2009-04-06 → 2009-04-07 (+1d) | 2009-04-07 → 2009-04-08 (+1d) |  |  | 53.43d → 52.43d |  |  |
| 103 | Submit defects: Call 101 from 024, 016, 025 | 2009-04-07 → 2009-04-08 (+1d) | 2009-04-07 → 2009-04-08 (+1d) |  |  | 53.43d → 52.43d |  |  |
| 104 | Write change request MDSS101, MDSS111 | 2009-04-07 → 2009-04-08 (+1d) | 2009-04-08 → 2009-04-09 (+1d) |  |  | 53.43d → 52.43d |  |  |
| 105 | Test: changing visibility of fields in GUI | 2009-04-08 → 2009-04-09 (+1d) | 2009-04-08 → 2009-04-09 (+1d) |  |  | 53.43d → 52.43d |  |  |
| 106 | Submit defects: changing visibility of fields in GUI | 2009-04-08 → 2009-04-09 (+1d) | 2009-04-08 → 2009-04-09 (+1d) |  |  | 53.43d → 52.43d |  |  |
| 114 | Write change request: Collections | 2009-03-23 A | 2009-03-23 A |  | 0% → 100% | 71d → none |  |  |
| 119 | Write change request: Efficacy assay | 2009-03-23 A |  |  | 0% → 70% |  |  |  |
| 131 | **Test: Entomology dynamic query and reports** | 2009-04-08 → 2009-04-09 (+1d) | 2009-04-16 → 2009-04-17 (+1d) |  |  | 53.43d → 52.43d |  |  |
| 132 | Test: add Geo-entity fields | 2009-04-08 → 2009-04-09 (+1d) | 2009-04-08 → 2009-04-09 (+1d) |  |  | 53.43d → 52.43d |  |  |
| 133 | Test: add other fields | 2009-04-08 → 2009-04-09 (+1d) | 2009-04-09 → 2009-04-10 (+1d) |  |  | 53.43d → 52.43d |  |  |
| 134 | Test: add functions | 2009-04-09 → 2009-04-10 (+1d) | 2009-04-09 → 2009-04-10 (+1d) |  |  | 53.43d → 52.43d |  |  |
| 135 | Test: date ranges on collection date or assay date | 2009-04-09 → 2009-04-10 (+1d) | 2009-04-09 → 2009-04-10 (+1d) |  |  | 53.43d → 52.43d |  |  |
| 136 | Submit defects: Build query | 2009-04-09 → 2009-04-10 (+1d) | 2009-04-09 → 2009-04-10 (+1d) |  |  | 53.43d → 52.43d |  |  |
| 137 | Test: save query | 2009-04-09 → 2009-04-10 (+1d) | 2009-04-09 → 2009-04-10 (+1d) |  |  | 53.43d → 52.43d |  |  |
| 138 | Test: run a saved query | 2009-04-09 → 2009-04-10 (+1d) | 2009-04-10 → 2009-04-13 (+3d) |  |  | 53.43d → 52.43d |  |  |
| 139 | Test: modify a saved query | 2009-04-10 → 2009-04-13 (+3d) | 2009-04-10 → 2009-04-13 (+3d) |  |  | 53.43d → 52.43d |  |  |
| 140 | Test: export query results | 2009-04-10 → 2009-04-13 (+3d) | 2009-04-10 → 2009-04-13 (+3d) |  |  | 53.43d → 52.43d |  |  |
| 141 | Test: dump functionality | 2009-04-10 → 2009-04-13 (+3d) | 2009-04-10 → 2009-04-13 (+3d) |  |  | 53.43d → 52.43d |  |  |
| 142 | Submit defects: deploy query | 2009-04-10 → 2009-04-13 (+3d) | 2009-04-13 → 2009-04-14 (+1d) |  |  | 53.43d → 52.43d |  |  |
| 143 | Test: create thematic map from query | 2009-04-13 → 2009-04-14 (+1d) | 2009-04-14 → 2009-04-15 (+1d) |  |  | 53.43d → 52.43d |  |  |
| 144 | Test: find query results in BIRT | 2009-04-14 → 2009-04-15 (+1d) | 2009-04-14 → 2009-04-15 (+1d) |  |  | 53.43d → 52.43d |  |  |
| 145 | Test: create a report template (table) | 2009-04-14 → 2009-04-15 (+1d) | 2009-04-14 → 2009-04-15 (+1d) |  |  | 53.43d → 52.43d |  |  |
| 146 | Test: Link a report template to query | 2009-04-14 → 2009-04-15 (+1d) | 2009-04-15 → 2009-04-16 (+1d) |  |  | 53.43d → 52.43d |  |  |
| 147 | Test: view/print/save a report | 2009-04-15 → 2009-04-16 (+1d) | 2009-04-15 → 2009-04-16 (+1d) |  |  | 53.43d → 52.43d |  |  |
| 148 | Test: change linked report | 2009-04-15 → 2009-04-16 (+1d) | 2009-04-15 → 2009-04-16 (+1d) |  |  | 53.43d → 52.43d |  |  |
| 149 | Submit defects: deploy query | 2009-04-15 → 2009-04-16 (+1d) | 2009-04-15 → 2009-04-16 (+1d) |  |  | 53.43d → 52.43d |  |  |
| 150 | Write change request: Dynamic query | 2009-04-15 → 2009-04-16 (+1d) | 2009-04-16 → 2009-04-17 (+1d) |  |  | 53.43d → 52.43d |  |  |
| 151 | **Finalise Query Use Cases** |  |  |  | 53% → 58% |  |  |  |
| 156 | UC: ITN Facility distribution - query | 2009-03-23 A |  |  | 0% → 80% | 50.57d → 49.57d |  | was named UC: ITN FacilityCommunity distribution - query |
| 158 | UC: ITN household use - query | 2009-03-24 → 2009-03-25 (+1d) | 2009-03-25 → 2009-03-26 (+1d) |  |  | 50.57d → 49.57d | 156 → 157 |  |
| 159 | UC: IPT individual - query | 2009-03-25 → 2009-03-26 (+1d) | 2009-03-27 → 2009-03-30 (+3d) |  |  | 50.57d → 49.57d |  |  |
| 161 | **Complete Development** |  |  | 66d? → 65.06d? | 4% → 7% | 16d → 16.94d |  |  |
| 162 | **Generic Development** |  | 2009-04-30 → 2009-05-07 (+7d) | 39d? → 44d? | 19% → 26% | 43d → 38d |  |  |
| 163 | Dev: Reconstruct saved query | 2009-03-26 → 2009-03-30 (+4d) | 2009-04-02 → 2009-04-06 (+4d) |  |  | 18.94d → 16.94d |  |  |
| 164 | Dev: Configure system variables | 2009-04-02 → 2009-04-06 (+4d) | 2009-04-06 → 2009-04-08 (+2d) |  |  | 18.94d → 16.94d |  |  |
| 165 | Dev: maintain catalogues | 2009-04-06 → 2009-04-08 (+2d) | 2009-04-09 → 2009-04-13 (+4d) |  |  | 26.65d → 24.65d |  |  |
| 166 | Dev: Epi week - set or change | 2009-03-31 → 2009-04-07 (+7d) | 2009-04-01 → 2009-04-08 (+7d) |  |  | 37d → 32d |  |  |
| 167 | Dev: define season start and end dates | 2009-04-02 → 2009-04-09 (+7d) | 2009-04-03 → 2009-04-10 (+7d) |  |  | 37d → 32d |  |  |
| 168 | Dev: enter/maintain people in the system | 2009-04-06 → 2009-04-13 (+7d) | 2009-04-07 → 2009-04-14 (+7d) |  |  | 37d → 32d |  |  |

| ID | Task | Start | Finish | Duration | Complete | Total float | Predecessors | Other |
| --- | --- | --- | --- | --- | --- | --- | --- | --- |
| 169 | Dev: create synonyms for imported Geo entities | 2009-04-20 → 2009-04-27 (+7d) | 2009-04-23 → 2009-04-30 (+7d) |  |  | 37d → 32d |  |  |
| 170 | Dev: User Admin Screen for account management | 2009-04-09 → 2009-04-13 (+4d) | 2009-04-15 → 2009-04-17 (+2d) |  |  | 26.65d → 24.65d |  |  |
| 171 | Dev: user Admin Screen for Role assignment | 2009-04-15 → 2009-04-17 (+2d) | 2009-04-17 → 2009-04-21 (+4d) |  |  | 26.65d → 24.65d |  |  |
| 172 | Dev: Add localisable character attributes | 2009-04-24 → 2009-05-01 (+7d) | 2009-04-27 → 2009-05-04 (+7d) |  |  | 37d → 32d |  |  |
| 173 | Dev: CRUD on localisable fields |  | 2009-03-23 → 2009-03-30 (+7d) | 88h → 128h | 75% → 80% | 34.24d → 29.24d |  | constraint finish no earlier than 2009-03-23 → finish no earlier than 2009-03-30 |
| 174 | Dev: CRUD screen for defining geography universals | 2009-04-28 → 2009-05-05 (+7d) | 2009-04-30 → 2009-05-07 (+7d) |  |  | 43d → 38d |  |  |
| 175 | Change geo root | 2009-04-09 → 2009-04-08 (-1d) |  |  |  | 16d → 16.94d |  |  |
| 176 | **Indicator survey** | 2009-03-25 → 2009-03-26 (+1d) |  | 22d → 20.06d |  | 16d → 16.94d |  |  |
| 177 | Dev: BE - Indicator survey - CRUD | 2009-03-25 → 2009-03-26 (+1d) | 2009-03-26 → 2009-03-27 (+1d) |  |  | 23.5d → 22.5d |  |  |
| 178 | Dev: GUI - Indicator survey - CRUD | 2009-03-27 → 2009-03-30 (+3d) | 2009-03-30 → 2009-03-31 (+1d) |  |  | 26.25d → 25.25d |  |  |
| 179 | Dev - Indicator survey - dynamic query | 2009-04-17 → 2009-04-16 (-1d) |  |  |  | 16d → 16.94d |  |  |
| 180 | **Case Surveilance** | 2009-03-23 → 2009-03-24 (+1d) | 2009-05-25 → 2009-05-27 (+2d) | 45.35d → 46.35d |  | 23.5d → 22.5d |  |  |
| 181 | Dev: BE - aggregated cases - CRUD | 2009-03-23 → 2009-03-24 (+1d) | 2009-03-24 → 2009-03-25 (+1d) |  |  | 23.5d → 22.5d |  | constraint finish no earlier than 2009-03-24 → start no earlier than 2009-03-24 |
| 182 | Dev: GUI - aggregated cases - CRUD | 2009-03-25 → 2009-03-26 (+1d) | 2009-03-26 → 2009-03-27 (+1d) |  |  | 26.25d → 25.25d |  |  |
| 183 | Dev: calculate CFR | 2009-04-28 → 2009-05-05 (+7d) | 2009-04-28 → 2009-05-05 (+7d) |  |  | 37d → 32d |  |  |
| 184 | Dev: aggregated cases - dynamic query | 2009-04-10 → 2009-04-09 (-1d) |  |  |  | 16d → 16.94d |  |  |
| 185 | Dev: Input or modify population data | 2009-04-17 → 2009-04-21 (+4d) | 2009-04-24 → 2009-04-28 (+4d) |  |  | 26.65d → 24.65d |  |  |
| 186 | Dev: Import population or annual growth rate data | 2009-04-24 → 2009-04-28 (+4d) | 2009-05-04 → 2009-05-06 (+2d) |  |  | 26.65d → 24.65d |  |  |
| 187 | Dev: input/modify outbreak thresholds | 2009-05-04 → 2009-05-06 (+2d) | 2009-05-08 → 2009-05-12 (+4d) |  |  | 26.65d → 24.65d |  |  |
| 188 | Dev :import outbreak thresholds | 2009-05-08 → 2009-05-12 (+4d) | 2009-05-15 → 2009-05-19 (+4d) |  |  | 26.65d → 24.65d |  |  |
| 189 | Dev: Calculate annual or seasonal population | 2009-05-15 → 2009-05-19 (+4d) | 2009-05-25 → 2009-05-27 (+2d) |  |  | 26.65d → 24.65d |  |  |
| 190 | Dev: calculate incidence | 2009-04-29 → 2009-05-06 (+7d) | 2009-04-29 → 2009-05-06 (+7d) |  |  | 37d → 32d |  |  |
| 191 | Dev: BE - individual cases - CRUD | 2009-03-27 → 2009-03-30 (+3d) | 2009-03-30 → 2009-03-31 (+1d) |  |  | 23.5d → 22.5d |  |  |
| 193 | Dev: Outbreak notification | 2009-04-30 → 2009-05-07 (+7d) | 2009-05-01 → 2009-05-08 (+7d) |  |  | 37d → 32d |  |  |
| 194 | Dev: individual case - dynamic query | 2009-04-24 → 2009-04-23 (-1d) |  |  |  | 16d → 16.94d |  |  |
| 195 | **Intervention monitoring** | 2009-03-31 → 2009-04-01 (+1d) |  | 50d → 48.06d |  | 16d → 16.94d |  |  |
| 196 | **IRS** | 2009-03-31 → 2009-04-01 (+1d) |  | 27d → 25.06d |  | 23.5d → 22.5d |  |  |
| 197 | Dev: enter/maintain spray team member | 2009-04-08 → 2009-04-15 (+7d) | 2009-04-13 → 2009-04-20 (+7d) |  |  | 37d → 32d |  |  |
| 198 | Dev: enter/maintain IRS teams | 2009-04-14 → 2009-04-21 (+7d) | 2009-04-17 → 2009-04-24 (+7d) |  |  | 37d → 32d |  |  |
| 199 | Dev: BE - input or modify IRS targets | 2009-03-31 → 2009-04-01 (+1d) | 2009-04-02 → 2009-04-03 (+1d) |  |  | 23.5d → 22.5d |  |  |
| 201 | Dev: BE - Configure items relating to application rate | 2009-04-03 → 2009-04-06 (+3d) | 2009-04-07 → 2009-04-08 (+1d) |  |  | 23.5d → 22.5d |  |  |
| 203 | Dev: BE - IRS - CRUD | 2009-04-08 → 2009-04-09 (+1d) | 2009-04-09 → 2009-04-10 (+1d) |  |  | 23.5d → 22.5d |  |  |
| 205 | Dev: IRS - dynamic query | 2009-05-01 → 2009-04-30 (-1d) |  |  |  | 16d → 16.94d |  |  |
| 206 | **Larvaciding** | 2009-04-15 → 2009-04-16 (+1d) | 2009-04-23 → 2009-04-24 (+1d) | 6d → 5.75d |  | 23.25d → 22.5d |  |  |
| 207 | Dev: BE - larviciding - CRUD | 2009-04-15 → 2009-04-16 (+1d) | 2009-04-17 → 2009-04-20 (+3d) |  |  | 25.25d → 24.25d |  |  |
| 208 | Dev: GUI - larviciding - CRUD | 2009-04-21 → 2009-04-22 (+1d) | 2009-04-23 → 2009-04-24 (+1d) |  |  | 23.25d → 22.5d |  |  |
| 209 | **ITN** | 2009-04-17 → 2009-04-20 (+3d) |  | 28.25d → 26.31d |  | 16d → 16.94d |  |  |
| 210 | Dev: BE - ITN aggregated data - CRUD | 2009-04-17 → 2009-04-20 (+3d) | 2009-04-21 → 2009-04-22 (+1d) |  |  | 25.25d → 24.25d |  |  |
| 211 | Dev: GUI - ITN aggregated data - CRUD | 2009-04-23 → 2009-04-24 (+1d) | 2009-04-27 → 2009-04-28 (+1d) |  |  | 23.25d → 22.5d |  |  |
| 212 | Dev: ITN aggregated data - query | 2009-05-07 → 2009-05-06 (-1d) |  |  |  | 16d → 16.94d |  |  |
| 213 | Dev: BE - ITN facility distribution - CRUD | 2009-04-21 → 2009-04-22 (+1d) | 2009-04-23 → 2009-04-24 (+1d) |  |  | 27.25d → 26.25d |  |  |
| 214 | Dev: GUI - ITN facility distribution - CRUD | 2009-04-27 → 2009-04-28 (+1d) | 2009-04-29 → 2009-04-30 (+1d) |  |  | 25.25d → 24.5d |  |  |
| 215 | Dev: BE - ITN community distribution - CRUD | 2009-04-23 → 2009-04-24 (+1d) | 2009-04-24 → 2009-04-27 (+3d) |  |  | 28.25d → 27.25d |  |  |
| 216 | Dev: GUI - ITN community distribution - CRUD | 2009-04-29 → 2009-04-30 (+1d) | 2009-04-30 → 2009-05-01 (+1d) |  |  | 25.25d → 24.5d |  |  |
| 217 | Dev: ITN by facility/community - query | 2009-05-14 → 2009-05-13 (-1d) |  |  |  | 16d → 16.94d |  |  |
| 218 | Dev: BE - ITN by household - CRUD | 2009-04-24 → 2009-04-27 (+3d) | 2009-04-27 → 2009-04-28 (+1d) |  |  | 33.25d → 32.25d |  |  |
| 219 | Dev: GUI - ITN by household - CRUD | 2009-04-30 → 2009-05-01 (+1d) | 2009-05-01 → 2009-05-04 (+3d) |  |  | 31.75d → 31d |  |  |
| 220 | Dev: ITN by household - query | 2009-05-21 → 2009-05-20 (-1d) |  |  |  | 16d → 16.94d |  |  |
| 221 | **Intervention Planning** | 2009-04-10 → 2009-04-13 (+3d) | 2009-04-21 → 2009-04-22 (+1d) | 7.75d → 7.5d |  | 23.25d → 22.5d |  |  |
| 222 | Dev: BE - Intervention planning | 2009-04-10 → 2009-04-13 (+3d) | 2009-04-15 → 2009-04-16 (+1d) |  |  | 23.5d → 22.5d |  |  |
| 223 | Dev: GUI - Intervention planning |  | 2009-04-21 → 2009-04-22 (+1d) |  |  | 23.25d → 22.5d |  |  |
| 224 | **IPT** | 2009-04-27 → 2009-04-28 (+1d) |  | 30.25d → 28.31d |  | 16d → 16.94d |  |  |
| 225 | Dev: BE - IPT aggregated - CRUD | 2009-04-27 → 2009-04-28 (+1d) | 2009-04-30 → 2009-05-01 (+1d) |  |  | 33.25d → 32.25d |  |  |
| 226 | Dev: GUI - IPT aggregated - CRUD | 2009-05-01 → 2009-05-04 (+3d) |  |  |  | 31.75d → 31d |  |  |
| 227 | Dev: IPT aggregated - query | 2009-05-28 → 2009-05-27 (-1d) |  |  |  | 16d → 16.94d |  |  |
| 228 | Dev: BE - IPT individual - CRUD | 2009-04-30 → 2009-05-01 (+1d) | 2009-05-04 → 2009-05-05 (+1d) |  |  | 34.25d → 33.25d |  |  |
| 229 | Dev: GUI - IPT individual - CRUD | 2009-05-06 → 2009-05-07 (+1d) | 2009-05-08 → 2009-05-11 (+3d) |  |  | 33.25d → 32.5d |  |  |
| 230 | Dev: IPT individual - query | 2009-06-03 → 2009-06-02 (-1d) |  |  |  | 16d → 16.94d |  |  |
| 231 | Dev: BE - Stock Control | 2009-05-04 → 2009-05-05 (+1d) | 2009-05-06 → 2009-05-07 (+1d) |  |  | 34.25d → 33.25d |  |  |
| 232 | Dev: GUI - Stock Control | 2009-05-08 → 2009-05-11 (+3d) | 2009-05-12 → 2009-05-13 (+1d) |  |  | 35.25d → 34.5d |  |  |
| 233 | Dev: Backup the data and configuration file | 2009-05-04 → 2009-05-11 (+7d) | 2009-05-08 → 2009-05-15 (+7d) |  |  | 37d → 32d |  |  |
| 235 | **Complete Test Cases** |  |  |  | 81% → 80% |  |  |  |
| 255 | **Case Surveilance** |  |  |  | 80% → 92% | 58.61d → 47.86d |  |  |
| 263 | TC: Calculate annual or seasonal population | 2009-03-20 A | 2009-03-23 A |  | 0% → 100% | 67.5d → none |  |  |
| 265 | **Intervention monitoring** |  |  |  | 69% → 65% |  |  |  |
| 266 | **IRS** |  | 2009-03-30 → 2009-04-01 (+2d) | 80.86h → 98h | 39% → 33% | 66.89d → 64.75d |  |  |
| 269 | TC:Indicator survey query | 2009-03-23 → 2009-03-25 (+2d) | 2009-03-24 → 2009-03-25 (+1d) |  |  | 67.5d → 64.75d |  | constraint none → start no earlier than 2009-03-25 |
| 270 | TC: ITN aggregated data - query | 2009-03-24 → 2009-03-26 (+2d) | 2009-03-25 → 2009-03-26 (+1d) |  |  | 67.32d → 64.75d |  |  |
| 271 | TC: ITN by facility - query | 2009-03-25 → 2009-03-27 (+2d) | 2009-03-26 → 2009-03-27 (+1d) |  |  | 66.89d → 64.75d |  | was named TC: ITN by facility/community - query |
| 273 | TC: ITN by household - query | 2009-03-26 → 2009-03-31 (+5d) | 2009-03-30 → 2009-04-01 (+2d) |  |  | 66.89d → 64.75d | 271 → 272, 271 |  |

| ID | Task | Start | Finish | Duration | Total float | Other |
| --- | --- | --- | --- | --- | --- | --- |
| 274 | TC: individual cases - CRUD |  | 2009-03-24 → 2009-03-25 (+1d) | 8h → 16h | 70d → 69d | constraint start no earlier than 2009-03-24 → finish no earlier than 2009-03-25; resources Sanika [50%] → Sanika [25%] |
| 277 | TC: IRS - CRUD | 2009-03-23 → 2009-03-25 (+2d) | 2009-03-23 → 2009-03-25 (+2d) |  | 69d → 67d | constraint start no earlier than 2009-03-23 → start no earlier than 2009-03-25 |
| 280 | **ITN** |  | 2009-03-25 → 2009-03-27 (+2d) | 154h → 170h | 69d → 67d |  |
| 286 | TC: calculate incidence | 2009-03-24 → 2009-03-26 (+2d) | 2009-03-24 → 2009-03-26 (+2d) |  | 69d → 67d |  |
| 287 | TC: Outbreak notification | 2009-03-25 → 2009-03-27 (+2d) | 2009-03-25 → 2009-03-27 (+2d) |  | 69d → 67d |  |
| 296 | Receive historical entomological data | 2009-03-06 → 2009-03-27 (+21d) | 2009-03-06 → 2009-03-27 (+21d) |  | 81d → 66d | was named Receive all historical entomological data; constraint start no earlier than 2009-03-06 → start no earlier than 2009-03-27 |
| 297 | Import historical entomological data | 2009-03-09 → 2009-03-30 (+21d) | 2009-03-09 → 2009-03-30 (+21d) |  | 81d → 66d |  |
| 303 | Dev: Installation (minimal or full) | 2009-05-06 → 2009-05-07 (+1d) | 2009-05-13 → 2009-05-14 (+1d) |  | 34.25d → 33.25d |  |

## Version 10 (saved 2009-03-26, file MDSS_Project_Plan.mpp)

Note of the change: Progress Report for 27.mar.09 minor shanges to Project Plan

Last finish stays 2009-06-30. Complete tasks 98 → 97.

Changed:

| ID | Task | Start | Finish | Duration | Complete | Total float |
| --- | --- | --- | --- | --- | --- | --- |
| 1 | **MDSS Implementation** |  |  |  | 38% → 37% |  |
| 2 | **Create Prototype (Entomology)** |  | 2009-04-07 → 2009-05-06 (+29d) | 47d? → 68d? | 87% → 85% | 28.24d → 38d |
| 3 | **System requirements** |  | 2009-04-07 → 2009-05-06 (+29d) | 47d? → 68d? | 93% → 89% | 17d → 38d |
| 10 | Dev: import/export an XLS file with a pre-populated headers |  | 2009-02-19 A → 2009-05-06 (+76d) | 7d → 11d | 100% → 64% | none → 38d |
| 15 | **Prototype Use cases** |  | 2009-04-06 → 2009-04-30 (+24d) | 41d? → 59d? |  | 29.24d → 42d |
| 21 | Dev: BE - Submit a mosquito collection |  | 2009-02-11 A → 2009-04-30 A (+78d) |  |  |  |
| 42 | Delivery of prototype | 2009-04-08 → 2009-05-07 (+29d) | 2009-04-08 → 2009-05-07 (+29d) |  |  | 59d → 38d |

## Version 11 (saved 2009-03-27, file MDSS_Project_Plan.mpp)

Note of the change: Project Plan released by Marlize 27.Mar.09 Also PDF and XLS views of plan

Last finish stays 2009-06-30. Complete tasks 97 → 112.

Removed: 126 Write change request: resistance assays

Changed:

| ID | Task | Start | Finish | Duration | Complete | Total float | Predecessors | Other |
| --- | --- | --- | --- | --- | --- | --- | --- | --- |
| 1 | **MDSS Implementation** |  |  |  | 37% → 43% |  |  |  |
| 2 | **Create Prototype (Entomology)** |  | 2009-05-06 → 2009-04-07 (-29d) | 68d? → 47d? | 85% → 93% | 38d → 28.24d |  |  |
| 3 | **System requirements** |  | 2009-05-06 → 2009-04-07 (-29d) | 68d? → 47d? | 89% → 93% | 38d → 17d |  |  |
| 10 | Dev: import/export an XLS file with a pre-populated headers |  | 2009-05-06 → 2009-02-25 A (-70d) |  | 64% → 100% | 38d → none |  |  |
| 15 | **Prototype Use cases** |  | 2009-04-30 → 2009-04-06 (-24d) | 59d? → 41d? | 80% → 93% | 42d → 29.24d |  |  |
| 21 | Dev: BE - Submit a mosquito collection |  | 2009-04-30 A → 2009-03-18 A (-43d) | 20h → 224h |  |  |  | resources Justin [80%] → Justin [7.1%] |
| 27 | Dev: GUI - Submit collection points | 2009-03-23 A | 2009-03-24 A |  | 0% → 100% | 25.07d → none |  |  |
| 32 | Dev: GUI - Adult knock down assay | 2009-03-20 A | 2009-03-23 A |  | 0% → 100% | 25.07d → none |  |  |
| 33 | Dev: GUI - Larvae discriminating dose assay | 2009-03-19 A | 2009-03-20 A |  | 0% → 100% | 25.07d → none |  |  |
| 37 | Dev: BE - Entomology dynamic query | 2009-03-23 A |  |  | 0% → 75% |  |  |  |
| 42 | Delivery of prototype | 2009-05-07 → 2009-04-08 (-29d) | 2009-05-07 → 2009-04-08 (-29d) |  |  | 38d → 59d |  |  |
| 48 | CR: GUI - Mechanisms | 2009-03-24 A | 2009-03-25 A |  | 0% → 100% | 25.07d → none |  |  |
| 50 | CR: GUI - Resistance cut-off values | 2009-03-25 A | 2009-03-25 A |  | 0% → 100% | 25.07d → none |  |  |
| 88 | **Test Prototype Submit Change Requests** |  |  |  | 11% → 12% |  |  |  |
| 119 | Write change request: Efficacy assay |  | 2009-03-23 A |  | 70% → 100% | 71d → none |  |  |
| 122 | Test: Adult knock down assay | 2009-03-25 A | 2009-03-25 A |  | 0% → 100% | 68.88d → none |  |  |
| 124 | Test: Larvae discriminating dose assay | 2009-03-25 A | 2009-03-25 A |  | 0% → 100% | 68.88d → none |  |  |
| 126 | Test: Submit collection points |  |  |  |  | 68.88d → 69d | Write change request: resistance assays → 125 |  |
| 129 | Submit defects: generic import functionality | 2009-03-26 → 2009-03-25 (-1d) | 2009-03-26 → 2009-03-25 (-1d) |  |  | 68.88d → 69d |  |  |
| 150 | **Finalise Query Use Cases** |  |  |  | 58% → 76% |  |  |  |
| 156 | UC: ITN Community distribution - query | 2009-03-24 A | 2009-03-25 A |  | 0% → 100% | 49.57d → none |  |  |
| 157 | UC: ITN household use - query | 2009-03-25 A | 2009-03-26 A |  | 0% → 100% | 49.57d → none |  |  |
| 175 | **Indicator survey** | 2009-03-26 → 2009-04-01 (+6d) |  | 20.06d → 16.06d |  |  |  |  |
| 176 | Dev: BE - Indicator survey - CRUD | 2009-03-26 → 2009-04-01 (+6d) | 2009-03-27 → 2009-04-02 (+6d) |  |  | 22.5d → 18.5d |  |  |
| 177 | Dev: GUI - Indicator survey - CRUD | 2009-03-30 → 2009-04-03 (+4d) | 2009-03-31 → 2009-04-06 (+6d) |  |  | 25.25d → 21.25d |  |  |
| 179 | **Case Surveilance** | 2009-03-24 → 2009-03-30 (+6d) |  | 46.35d → 42.35d |  | 22.5d → 18.5d |  |  |
| 180 | Dev: BE - aggregated cases - CRUD | 2009-03-24 → 2009-03-30 (+6d) | 2009-03-25 → 2009-03-31 (+6d) |  |  | 22.5d → 18.5d |  | constraint start no earlier than 2009-03-24 → start no earlier than 2009-03-30 |
| 181 | Dev: GUI - aggregated cases - CRUD | 2009-03-26 → 2009-04-01 (+6d) | 2009-03-27 → 2009-04-02 (+6d) |  |  | 25.25d → 21.25d |  |  |
| 190 | Dev: BE - individual cases - CRUD | 2009-03-30 → 2009-04-03 (+4d) | 2009-03-31 → 2009-04-06 (+6d) |  |  | 22.5d → 18.5d |  |  |
| 191 | Dev: GUI - individual cases - CRUD | 2009-04-02 → 2009-04-07 (+5d) | 2009-04-03 → 2009-04-08 (+5d) |  |  | 24.25d → 21.25d |  |  |
| 194 | **Intervention monitoring** | 2009-04-01 → 2009-04-07 (+6d) |  | 48.06d → 44.06d |  |  |  |  |
| 195 | **IRS** | 2009-04-01 → 2009-04-07 (+6d) |  | 25.06d → 21.06d |  | 22.5d → 18.5d |  |  |
| 198 | Dev: BE - input or modify IRS targets | 2009-04-01 → 2009-04-07 (+6d) | 2009-04-03 → 2009-04-09 (+6d) |  |  | 22.5d → 18.5d |  |  |
| 199 | Dev: GUI - input or modify IRS targets | 2009-04-06 → 2009-04-10 (+4d) | 2009-04-08 → 2009-04-14 (+6d) |  |  | 24.25d → 20.25d |  |  |
| 200 | Dev: BE - Configure items relating to application rate | 2009-04-06 → 2009-04-10 (+4d) | 2009-04-08 → 2009-04-14 (+6d) |  |  | 22.5d → 18.5d |  |  |
| 201 | Dev: GUI - Configure items relating to application rate | 2009-04-09 → 2009-04-15 (+6d) | 2009-04-10 → 2009-04-16 (+6d) |  |  | 24.25d → 20.25d |  |  |
| 202 | Dev: BE - IRS - CRUD | 2009-04-09 → 2009-04-15 (+6d) | 2009-04-10 → 2009-04-16 (+6d) |  |  | 22.5d → 18.5d |  |  |
| 203 | Dev: GUI - IRS - CRUD | 2009-04-13 → 2009-04-17 (+4d) | 2009-04-14 → 2009-04-20 (+6d) |  |  | 24.25d → 20.25d |  |  |
| 205 | **Larvaciding** | 2009-04-16 → 2009-04-22 (+6d) | 2009-04-24 → 2009-04-30 (+6d) |  |  | 22.5d → 18.5d |  |  |
| 206 | Dev: BE - larviciding - CRUD | 2009-04-16 → 2009-04-22 (+6d) | 2009-04-20 → 2009-04-24 (+4d) |  |  | 24.25d → 20.25d |  |  |
| 207 | Dev: GUI - larviciding - CRUD | 2009-04-22 → 2009-04-28 (+6d) | 2009-04-24 → 2009-04-30 (+6d) |  |  | 22.5d → 18.5d |  |  |
| 208 | **ITN** | 2009-04-20 → 2009-04-24 (+4d) |  | 26.31d → 22.31d |  |  |  |  |
| 209 | Dev: BE - ITN aggregated data - CRUD | 2009-04-20 → 2009-04-24 (+4d) | 2009-04-22 → 2009-04-28 (+6d) |  |  | 24.25d → 20.25d |  |  |
| 210 | Dev: GUI - ITN aggregated data - CRUD | 2009-04-24 → 2009-04-30 (+6d) | 2009-04-28 → 2009-05-04 (+6d) |  |  | 22.5d → 18.5d |  |  |
| 212 | Dev: BE - ITN facility distribution - CRUD | 2009-04-22 → 2009-04-28 (+6d) | 2009-04-24 → 2009-04-30 (+6d) |  |  | 26.25d → 22.25d |  |  |
| 213 | Dev: GUI - ITN facility distribution - CRUD | 2009-04-28 → 2009-05-04 (+6d) | 2009-04-30 → 2009-05-06 (+6d) |  |  | 24.5d → 20.5d |  |  |
| 214 | Dev: BE - ITN community distribution - CRUD | 2009-04-24 → 2009-04-30 (+6d) | 2009-04-27 → 2009-05-01 (+4d) |  |  | 27.25d → 23.25d |  |  |
| 215 | Dev: GUI - ITN community distribution - CRUD | 2009-04-30 → 2009-05-06 (+6d) | 2009-05-01 → 2009-05-07 (+6d) |  |  | 24.5d → 20.5d |  |  |
| 217 | Dev: BE - ITN by household - CRUD | 2009-04-27 → 2009-05-01 (+4d) | 2009-04-28 → 2009-05-04 (+6d) |  |  | 32.25d → 28.25d |  |  |
| 218 | Dev: GUI - ITN by household - CRUD | 2009-05-01 → 2009-05-07 (+6d) | 2009-05-04 → 2009-05-08 (+4d) |  |  | 31d → 27d |  |  |
| 220 | **Intervention Planning** | 2009-04-13 → 2009-04-17 (+4d) | 2009-04-22 → 2009-04-28 (+6d) |  |  | 22.5d → 18.5d |  |  |
| 221 | Dev: BE - Intervention planning | 2009-04-13 → 2009-04-17 (+4d) | 2009-04-16 → 2009-04-22 (+6d) |  |  | 22.5d → 18.5d |  |  |
| 222 | Dev: GUI - Intervention planning | 2009-04-16 → 2009-04-22 (+6d) | 2009-04-22 → 2009-04-28 (+6d) |  |  | 22.5d → 18.5d |  |  |
| 223 | **IPT** | 2009-04-28 → 2009-05-04 (+6d) |  | 28.31d → 24.31d |  |  |  |  |
| 224 | Dev: BE - IPT aggregated - CRUD | 2009-04-28 → 2009-05-04 (+6d) | 2009-05-01 → 2009-05-07 (+6d) |  |  | 32.25d → 28.25d |  |  |
| 225 | Dev: GUI - IPT aggregated - CRUD | 2009-05-04 → 2009-05-08 (+4d) | 2009-05-06 → 2009-05-12 (+6d) |  |  | 31d → 27d |  |  |
| 227 | Dev: BE - IPT individual - CRUD | 2009-05-01 → 2009-05-07 (+6d) | 2009-05-05 → 2009-05-11 (+6d) |  |  | 33.25d → 29.25d |  |  |
| 228 | Dev: GUI - IPT individual - CRUD | 2009-05-07 → 2009-05-13 (+6d) | 2009-05-11 → 2009-05-15 (+4d) |  |  | 32.5d → 28.5d |  |  |
| 230 | Dev: BE - Stock Control | 2009-05-05 → 2009-05-11 (+6d) | 2009-05-07 → 2009-05-13 (+6d) |  |  | 33.25d → 29.25d |  |  |
| 231 | Dev: GUI - Stock Control | 2009-05-11 → 2009-05-15 (+4d) | 2009-05-13 → 2009-05-19 (+6d) |  |  | 34.5d → 30.5d |  |  |
| 234 | **Complete Test Cases** |  |  |  | 80% → 90% |  |  |  |
| 264 | **Intervention monitoring** |  |  |  | 65% → 82% |  |  |  |
| 265 | **IRS** |  | 2009-04-01 → 2009-04-03 (+2d) | 98h → 114h | 33% → 65% | 64.75d → 62.75d |  |  |
| 268 | TC:Indicator survey query | 2009-03-25 A | 2009-03-25 A |  | 0% → 100% | 64.75d → none |  |  |
| 269 | TC: ITN aggregated data - query | 2009-03-26 → 2009-03-30 (+4d) | 2009-03-26 → 2009-03-30 (+4d) |  |  | 64.75d → 62.75d |  | constraint none → start no earlier than 2009-03-30 |
| 270 | TC: ITN by facility - query | 2009-03-27 → 2009-03-31 (+4d) | 2009-03-27 → 2009-03-31 (+4d) |  |  | 64.75d → 62.75d |  |  |
| 271 | TC: ITN by community - query | 2009-03-30 → 2009-04-01 (+2d) | 2009-03-30 → 2009-04-01 (+2d) |  |  | 64.75d → 62.75d |  |  |
| 272 | TC: ITN by household - query | 2009-03-31 → 2009-04-02 (+2d) | 2009-04-01 → 2009-04-03 (+2d) |  |  | 64.75d → 62.75d | 271, 270 → 271 |  |
| 273 | TC: individual cases - CRUD | 2009-03-24 A | 2009-03-25 A |  | 0% → 100% | 69d → none |  |  |
| 276 | TC: IRS - CRUD | 2009-03-25 A | 2009-03-25 A |  | 0% → 100% | 67d → none |  |  |

| ID | Task | Start | Finish | Complete | Total float |
| --- | --- | --- | --- | --- | --- |
| 279 | **ITN** |  |  | 75% → 94% |  |
| 285 | TC: calculate incidence | 2009-03-26 A | 2009-03-26 A | 0% → 100% | 67d → none |
| 286 | TC: Outbreak notification | 2009-03-27 A |  | 0% → 50% |  |
| 302 | Dev: Installation (minimal or full) | 2009-05-07 → 2009-05-13 (+6d) | 2009-05-14 → 2009-05-20 (+6d) |  | 33.25d → 29.25d |

## Version 12 (saved 2009-04-06, file MDSS_Project_Plan.mpp)

Note of the change: Plan released 6.Apr.09

Last finish stays 2009-06-30. Complete tasks 112 → 130.

Added:

| ID | Task | Duration | Start | Finish | Constraint | Resources |
| --- | --- | --- | --- | --- | --- | --- |
| 19 | Polish MDSS111 and MDSS101 | 80h | 2009-03-23 A | 2009-04-10 | finish no earlier than 2009-04-10 | Naifeh |

Removed: 42 Delivery of prototype; 173 Dev: CRUD screen for defining geography universals

Changed:

| ID | Task | Start | Finish | Duration | Complete | Total float | Predecessors | Other |
| --- | --- | --- | --- | --- | --- | --- | --- | --- |
| 1 | **MDSS Implementation** |  | 2009-06-08 → 2009-06-24 (+16d) | 90.06d? → 103d? | 43% → 46% | 16.94d → 4d |  |  |
| 2 | **Create Prototype (Entomology)** |  | 2009-04-07 → 2009-04-24 (+17d) | 47d? → 60d? | 93% → 91% | 28.24d → 15.24d |  |  |
| 3 | **System requirements** |  | 2009-04-07 → 2009-04-24 (+17d) | 47d? → 60d? | 93% → 88% | 17d → 4.65d |  |  |
| 13 | Dev: Save query criteria to the database | 2009-04-07 → 2009-04-06 (-1d) | 2009-04-07 → 2009-04-06 (-1d) |  |  | 17d → 18.65d | 45 → none | constraint none → start no earlier than 2009-04-06; resources Naifeh → Nathan |
| 14 | Dev: Generic GIS visualisation and output requirements | 2009-03-23 → 2009-04-13 (+21d) | 2009-03-27 → 2009-04-24 (+28d) | 40h → 80h |  | 16.94d → 4d | 18 → 19 | resources Naifeh [60%] → Naifeh |
| 15 | **Prototype Use cases** |  | 2009-04-06 → 2009-04-13 (+7d) | 41d? → 45.5d? | 93% → 92% | 29.24d → 24.74d |  |  |
| 16 | **Search for a geo entity** |  | 2009-03-18 A → 2009-04-10 (+23d) | 18.35d? → 35.35d? | 100% → 86% | none → 4d |  |  |
| 38 | Dev: BE - Entomology dynamic query |  | 2009-03-27 A |  | 75% → 100% | 22d → none |  |  |
| 42 | Dev: change visibility of fields on GUI | 2009-03-31 → 2009-04-06 (+6d) | 2009-04-06 → 2009-04-13 (+7d) |  |  | 29.24d → 24.74d |  | constraint none → start no earlier than 2009-04-06 |
| 45 | Dev: GUI - Entomology dynamic query | 2009-04-06 → 2009-05-04 (+28d) | 2009-04-06 → 2009-05-04 (+28d) |  |  | 17d → 41d | 38 → 38, 182 |  |
| 51 | **Aquire Geo Data** | 2009-03-24 A |  |  |  |  |  |  |
| 52 | **Mozambique** | 2009-03-24 A |  |  |  |  |  |  |
| 53 | Priority 1: Province Boundaries | 2009-03-24 A | 2009-03-24 A |  | 0% → 100% | 71d → none |  |  |
| 54 | Priority 1: District Boundaries | 2009-03-24 A | 2009-03-24 A |  | 0% → 100% | 71d → none |  |  |
| 55 | Priority 1: Administrative Post Boundaries | 2009-03-24 A | 2009-03-24 A |  | 0% → 100% | 71d → none |  |  |
| 56 | Priority 1: Locality Boundaries | 2009-03-24 A | 2009-03-24 A |  | 0% → 100% | 71d → none |  |  |
| 57 | Priority 1: Village Points | 2009-03-24 A | 2009-03-24 A |  | 0% → 100% | 71d → none |  |  |
| 58 | Priority 1: Health Facility Points | 2009-03-24 A | 2009-03-24 A |  | 0% → 100% | 71d → none |  |  |
| 59 | Priority 1: Sentinel Site Points | 2009-03-24 A | 2009-03-24 A |  | 0% → 100% | 71d → none |  |  |
| 88 | **Test Prototype Submit Change Requests** |  | 2009-04-17 → 2009-05-04 (+17d) | 24.57d? → 35.89d? | 12% → 14% | 52.43d → 41.11d |  |  |
| 105 | Test: changing visibility of fields in GUI | 2009-04-09 → 2009-04-16 (+7d) | 2009-04-09 → 2009-04-16 (+7d) |  |  | 52.43d → 47.57d |  | constraint none → start no earlier than 2009-04-16 |
| 106 | Submit defects: changing visibility of fields in GUI | 2009-04-09 → 2009-04-16 (+7d) | 2009-04-09 → 2009-04-16 (+7d) |  |  | 52.43d → 47.57d |  |  |
| 123 | Submit defects: Adult knock down assay | 2009-03-25 A | 2009-03-25 A |  | 0% → 100% | 69.75d → none |  |  |
| 125 | Submit defects: Larvae discriminating dose assay | 2009-03-25 A | 2009-03-25 A |  | 0% → 100% | 69d → none |  |  |
| 130 | **Test: Entomology dynamic query and reports** | 2009-04-09 → 2009-04-27 (+18d) | 2009-04-17 → 2009-05-04 (+17d) |  |  | 52.43d → 41.11d |  |  |
| 131 | Test: add Geo-entity fields | 2009-04-09 → 2009-04-27 (+18d) | 2009-04-09 → 2009-04-27 (+18d) |  |  | 52.43d → 41.11d |  | constraint none → start no earlier than 2009-04-25 |
| 132 | Test: add other fields | 2009-04-09 → 2009-04-27 (+18d) | 2009-04-10 → 2009-04-27 (+17d) |  |  | 52.43d → 41.11d |  |  |
| 133 | Test: add functions | 2009-04-10 → 2009-04-27 (+17d) | 2009-04-10 → 2009-04-27 (+17d) |  |  | 52.43d → 41.11d |  |  |
| 134 | Test: date ranges on collection date or assay date | 2009-04-10 → 2009-04-27 (+17d) | 2009-04-10 → 2009-04-27 (+17d) |  |  | 52.43d → 41.11d |  |  |
| 135 | Submit defects: Build query | 2009-04-10 → 2009-04-27 (+17d) | 2009-04-10 → 2009-04-28 (+18d) |  |  | 52.43d → 41.11d |  |  |
| 136 | Test: save query | 2009-04-10 → 2009-04-28 (+18d) | 2009-04-10 → 2009-04-28 (+18d) |  |  | 52.43d → 41.11d |  |  |
| 137 | Test: run a saved query | 2009-04-10 → 2009-04-28 (+18d) | 2009-04-13 → 2009-04-28 (+15d) |  |  | 52.43d → 41.11d |  |  |
| 138 | Test: modify a saved query | 2009-04-13 → 2009-04-28 (+15d) | 2009-04-13 → 2009-04-28 (+15d) |  |  | 52.43d → 41.11d |  |  |
| 139 | Test: export query results | 2009-04-13 → 2009-04-28 (+15d) | 2009-04-13 → 2009-04-28 (+15d) |  |  | 52.43d → 41.11d |  |  |
| 140 | Test: dump functionality | 2009-04-13 → 2009-04-28 (+15d) | 2009-04-13 → 2009-04-28 (+15d) |  |  | 52.43d → 41.11d |  |  |
| 141 | Submit defects: deploy query | 2009-04-13 → 2009-04-28 (+15d) | 2009-04-14 → 2009-04-29 (+15d) |  |  | 52.43d → 41.11d |  |  |
| 142 | Test: create thematic map from query | 2009-04-14 → 2009-04-29 (+15d) | 2009-04-15 → 2009-04-30 (+15d) |  |  | 52.43d → 41.11d |  |  |
| 143 | Test: find query results in BIRT | 2009-04-15 → 2009-04-30 (+15d) | 2009-04-15 → 2009-04-30 (+15d) |  |  | 52.43d → 41.11d |  |  |
| 144 | Test: create a report template (table) | 2009-04-15 → 2009-04-30 (+15d) | 2009-04-15 → 2009-05-01 (+16d) |  |  | 52.43d → 41.11d |  |  |
| 145 | Test: Link a report template to query | 2009-04-15 → 2009-05-01 (+16d) | 2009-04-16 → 2009-05-01 (+15d) |  |  | 52.43d → 41.11d |  |  |
| 146 | Test: view/print/save a report | 2009-04-16 → 2009-05-01 (+15d) | 2009-04-16 → 2009-05-01 (+15d) |  |  | 52.43d → 41.11d |  |  |
| 147 | Test: change linked report | 2009-04-16 → 2009-05-01 (+15d) | 2009-04-16 → 2009-05-01 (+15d) |  |  | 52.43d → 41.11d |  |  |
| 148 | Submit defects: deploy query | 2009-04-16 → 2009-05-01 (+15d) | 2009-04-16 → 2009-05-04 (+18d) |  |  | 52.43d → 41.11d |  |  |
| 149 | Write change request: Dynamic query | 2009-04-16 → 2009-05-04 (+18d) | 2009-04-17 → 2009-05-04 (+17d) |  |  | 52.43d → 41.11d |  |  |
| 150 | **Finalise Query Use Cases** |  | 2009-04-02 A |  | 76% → 100% | 47.86d → none |  |  |
| 155 | UC: ITN Facility distribution - query |  | 2009-03-24 A |  | 80% → 100% | 52.57d → none |  |  |
| 158 | UC: IPT individual - query | 2009-03-26 A | 2009-03-30 A |  | 0% → 100% | 49.57d → none |  |  |
| 159 | UC: IPT aggregated - query | 2009-04-01 A | 2009-04-02 A |  | 0% → 100% | 47.86d → none |  |  |
| 160 | **Complete Development** |  | 2009-06-08 → 2009-06-24 (+16d) | 65.06d? → 78d? | 7% → 13% | 16.94d → 4d |  |  |
| 161 | **Generic Development** |  | 2009-05-07 → 2009-05-22 (+15d) | 44d? → 55d? | 26% → 40% | 38d → 18d |  |  |
| 162 | Dev: Reconstruct saved query | 2009-03-30 → 2009-04-07 (+8d) | 2009-04-06 → 2009-04-14 (+8d) |  |  | 16.94d → 18.65d | 6, 14 → 13 | constraint none → start no earlier than 2009-04-07 |
| 163 | Dev: Configure system variables | 2009-04-06 → 2009-04-14 (+8d) | 2009-04-08 → 2009-04-16 (+8d) |  |  | 16.94d → 18.65d |  |  |
| 164 | Dev: maintain catalogues | 2009-04-08 → 2009-04-16 (+8d) | 2009-04-13 → 2009-04-21 (+8d) |  |  | 24.65d → 18.65d |  |  |
| 165 | Dev: Epi week - set or change | 2009-04-07 → 2009-04-27 (+20d) | 2009-04-08 → 2009-04-29 (+21d) |  |  | 32d → 27.5d | 42 → 196 |  |
| 166 | Dev: define season start and end dates | 2009-04-09 → 2009-04-29 (+20d) | 2009-04-10 → 2009-05-01 (+21d) |  |  | 32d → 27.5d |  | constraint none → start no earlier than 2009-04-13 |
| 167 | Dev: enter/maintain people in the system |  | 2009-04-14 → 2009-04-15 (+1d) |  |  | 32d → 27.5d | 166 → 42 |  |
| 168 | Dev: create synonyms for imported Geo entities | 2009-04-27 → 2009-05-01 (+4d) | 2009-04-30 → 2009-05-07 (+7d) |  |  | 32d → 27.5d | 169, 196 → 169, 166 |  |
| 169 | Dev: User Admin Screen for account management | 2009-04-13 → 2009-04-21 (+8d) | 2009-04-17 → 2009-04-27 (+10d) |  |  | 24.65d → 18.65d |  |  |
| 170 | Dev: user Admin Screen for Role assignment | 2009-04-17 → 2009-04-27 (+10d) | 2009-04-21 → 2009-04-29 (+8d) |  |  | 24.65d → 18.65d |  |  |
| 171 | Dev: Add localisable character attributes | 2009-05-01 → 2009-05-07 (+6d) | 2009-05-04 → 2009-05-11 (+7d) |  |  | 32d → 27.5d |  |  |
| 172 | Dev: CRUD on localisable fields |  | 2009-03-30 → 2009-04-06 (+7d) | 128h → 164h | 80% → 98% | 29.24d → 24.74d |  |  |
| 173 | Change geo root | 2009-04-08 → 2009-05-22 (+44d) | 2009-04-09 → 2009-05-22 (+43d) |  |  | 16.94d → 4d | 163, 13 → 163, 192 |  |
| 174 | **Indicator survey** | 2009-04-01 → 2009-04-07 (+6d) | 2009-04-23 → 2009-05-08 (+15d) | 16.06d → 24d |  | 16.94d → 6d |  |  |
| 175 | Dev: BE - Indicator survey - CRUD | 2009-04-01 → 2009-04-07 (+6d) | 2009-04-02 → 2009-04-08 (+6d) |  |  | 18.5d → 11.75d |  |  |
| 176 | Dev: GUI - Indicator survey - CRUD | 2009-04-03 → 2009-04-09 (+6d) | 2009-04-06 → 2009-04-10 (+4d) |  |  | 21.25d → 26d |  |  |
| 177 | Dev - Indicator survey - dynamic query | 2009-04-16 → 2009-05-04 (+18d) | 2009-04-23 → 2009-05-08 (+15d) |  |  | 16.94d → 4d |  |  |
| 178 | **Case Surveilance** | 2009-03-30 A | 2009-05-27 → 2009-06-04 (+8d) | 42.35d → 48.35d | 0% → 10% | 18.5d → 18.65d |  |  |
| 179 | Dev: BE - aggregated cases - CRUD | 2009-03-30 A | 2009-03-31 → 2009-04-06 (+6d) | 16h → 48h | 0% → 83% | 18.5d → 11.75d |  | resources Justin → Justin [33.3%] |
| 180 | Dev: GUI - aggregated cases - CRUD | 2009-04-01 → 2009-04-07 (+6d) | 2009-04-02 → 2009-04-08 (+6d) |  |  | 21.25d → 26d |  |  |
| 181 | Dev: calculate CFR | 2009-05-05 → 2009-05-11 (+6d) | 2009-05-05 → 2009-05-12 (+7d) |  |  | 32d → 27.5d |  |  |

| ID | Task | Start | Finish | Duration | Complete | Total float | Predecessors | Other |
| --- | --- | --- | --- | --- | --- | --- | --- | --- |
| 182 | Dev: aggregated cases - dynamic query | 2009-04-09 → 2009-04-27 (+18d) | 2009-04-16 → 2009-05-01 (+15d) |  |  | 16.94d → 4d | 152, 173 → 152, 14 |  |
| 183 | Dev: Input or modify population data | 2009-04-21 → 2009-04-29 (+8d) | 2009-04-28 → 2009-05-06 (+8d) |  |  | 24.65d → 18.65d |  |  |
| 184 | Dev: Import population or annual growth rate data | 2009-04-28 → 2009-05-06 (+8d) | 2009-05-06 → 2009-05-14 (+8d) |  |  | 24.65d → 18.65d |  |  |
| 185 | Dev: input/modify outbreak thresholds | 2009-05-06 → 2009-05-14 (+8d) | 2009-05-12 → 2009-05-20 (+8d) |  |  | 24.65d → 18.65d |  |  |
| 186 | Dev :import outbreak thresholds | 2009-05-12 → 2009-05-20 (+8d) | 2009-05-19 → 2009-05-27 (+8d) |  |  | 24.65d → 18.65d |  |  |
| 187 | Dev: Calculate annual or seasonal population | 2009-05-19 → 2009-05-27 (+8d) | 2009-05-27 → 2009-06-04 (+8d) |  |  | 24.65d → 18.65d |  |  |
| 188 | Dev: calculate incidence | 2009-05-06 → 2009-05-12 (+6d) | 2009-05-06 → 2009-05-13 (+7d) |  |  | 32d → 27.5d |  |  |
| 189 | Dev: BE - individual cases - CRUD | 2009-04-03 → 2009-04-21 (+18d) | 2009-04-06 → 2009-04-22 (+16d) |  |  | 18.5d → 11.75d | 175 → 199 |  |
| 190 | Dev: GUI - individual cases - CRUD | 2009-04-07 → 2009-04-23 (+16d) | 2009-04-08 → 2009-04-24 (+16d) |  |  | 21.25d → 18d |  |  |
| 191 | Dev: Outbreak notification | 2009-05-07 → 2009-05-13 (+6d) | 2009-05-08 → 2009-05-15 (+7d) |  |  | 32d → 27.5d |  |  |
| 192 | Dev: individual case - dynamic query | 2009-04-23 → 2009-05-15 (+22d) | 2009-04-30 → 2009-05-21 (+21d) |  |  | 16.94d → 4d | 190, 151, 177 → 190, 151, 203 |  |
| 193 | **Intervention monitoring** | 2009-04-07 → 2009-04-09 (+2d) | 2009-06-08 → 2009-06-24 (+16d) | 44.06d → 55d |  | 16.94d → 4d |  |  |
| 194 | **IRS** | 2009-04-07 → 2009-04-09 (+2d) | 2009-05-06 → 2009-05-14 (+8d) | 21.06d → 26d |  | 18.5d → 11.75d |  |  |
| 195 | Dev: enter/maintain spray team member |  | 2009-04-20 → 2009-04-21 (+1d) |  |  | 32d → 27.5d |  |  |
| 196 | Dev: enter/maintain IRS teams |  | 2009-04-24 → 2009-04-27 (+3d) |  |  | 32d → 27.5d |  |  |
| 197 | Dev: BE - input or modify IRS targets | 2009-04-07 → 2009-04-13 (+6d) | 2009-04-09 → 2009-04-15 (+6d) |  |  | 18.5d → 11.75d | 189 → 201 |  |
| 198 | Dev: GUI - input or modify IRS targets | 2009-04-10 → 2009-04-16 (+6d) | 2009-04-14 → 2009-04-20 (+6d) |  |  | 20.25d → 49d | 197, 190 → 197 |  |
| 199 | Dev: BE - Configure items relating to application rate | 2009-04-10 → 2009-04-16 (+6d) | 2009-04-14 → 2009-04-20 (+6d) |  |  | 18.5d → 11.75d |  |  |
| 200 | Dev: GUI - Configure items relating to application rate | 2009-04-15 → 2009-04-21 (+6d) | 2009-04-16 → 2009-04-22 (+6d) |  |  | 20.25d → 49d |  |  |
| 201 | Dev: BE - IRS - CRUD | 2009-04-15 → 2009-04-09 (-6d) | 2009-04-16 → 2009-04-10 (-6d) |  |  | 18.5d → 11.75d | 199 → 175 |  |
| 202 | Dev: GUI - IRS - CRUD | 2009-04-17 → 2009-04-13 (-4d) | 2009-04-20 → 2009-04-14 (-6d) |  |  | 20.25d → 45.37d | 201, 200 → 201 |  |
| 203 | Dev: IRS - dynamic query | 2009-04-30 → 2009-05-11 (+11d) | 2009-05-06 → 2009-05-14 (+8d) |  |  | 16.94d → 4d | 154, 192 → 154, 177 |  |
| 204 | **Larvaciding** | 2009-04-22 → 2009-05-12 (+20d) | 2009-04-30 → 2009-05-18 (+18d) | 5.75d → 4d |  | 18.5d → 11.75d |  |  |
| 205 | Dev: BE - larviciding - CRUD | 2009-04-22 → 2009-05-12 (+20d) | 2009-04-24 → 2009-05-14 (+20d) |  |  | 20.25d → 11.75d |  |  |
| 206 | Dev: GUI - larviciding - CRUD | 2009-04-28 → 2009-05-14 (+16d) | 2009-04-30 → 2009-05-18 (+18d) |  |  | 18.5d → 31.75d | 205, 221 → 205 |  |
| 207 | **ITN** | 2009-04-24 → 2009-04-27 (+3d) | 2009-05-27 → 2009-06-12 (+16d) | 22.31d → 34.5d |  | 16.94d → 11.75d |  |  |
| 208 | Dev: BE - ITN aggregated data - CRUD | 2009-04-24 → 2009-04-27 (+3d) | 2009-04-28 → 2009-04-29 (+1d) |  |  | 20.25d → 11.75d | 205 → 223 |  |
| 209 | Dev: GUI - ITN aggregated data - CRUD | 2009-04-30 → 2009-04-29 (-1d) | 2009-05-04 → 2009-05-01 (-3d) |  |  | 18.5d → 19.5d | 208, 206 → 208 |  |
| 210 | Dev: ITN aggregated data - query | 2009-05-06 → 2009-05-25 (+19d) | 2009-05-13 → 2009-05-29 (+16d) |  |  | 16.94d → 4d | 209, 203 → 209, 203, 173 |  |
| 211 | Dev: BE - ITN facility distribution - CRUD | 2009-04-28 → 2009-05-14 (+16d) | 2009-04-30 → 2009-05-18 (+18d) |  |  | 22.25d → 11.75d | 208 → 205 |  |
| 212 | Dev: GUI - ITN facility distribution - CRUD | 2009-05-04 → 2009-05-18 (+14d) | 2009-05-06 → 2009-05-20 (+14d) |  |  | 20.5d → 29.75d |  |  |
| 213 | Dev: BE - ITN community distribution - CRUD | 2009-04-30 → 2009-05-18 (+18d) | 2009-05-01 → 2009-05-19 (+18d) |  |  | 23.25d → 11.75d |  |  |
| 214 | Dev: GUI - ITN community distribution - CRUD | 2009-05-06 → 2009-05-19 (+13d) | 2009-05-07 → 2009-05-20 (+13d) |  |  | 20.5d → 11.75d | 213, 212 → 213 |  |
| 215 | Dev: ITN by facility/community - query | 2009-05-13 → 2009-06-01 (+19d) | 2009-05-20 → 2009-06-05 (+16d) |  |  | 16.94d → 4d |  |  |
| 216 | Dev: BE - ITN by household - CRUD | 2009-05-01 → 2009-05-19 (+18d) | 2009-05-04 → 2009-05-20 (+16d) |  |  | 28.25d → 18.75d |  |  |
| 217 | Dev: GUI - ITN by household - CRUD | 2009-05-07 → 2009-05-20 (+13d) | 2009-05-08 → 2009-05-21 (+13d) |  |  | 27d → 28.75d |  |  |
| 218 | Dev: ITN by household - query | 2009-05-20 → 2009-06-08 (+19d) | 2009-05-27 → 2009-06-12 (+16d) |  |  | 16.94d → 4d |  |  |
| 219 | **Intervention Planning** | 2009-04-17 → 2009-05-06 (+19d) | 2009-04-28 → 2009-05-15 (+17d) |  |  | 18.5d → 11.75d |  |  |
| 220 | Dev: BE - Intervention planning | 2009-04-17 → 2009-05-06 (+19d) | 2009-04-22 → 2009-05-12 (+20d) |  |  | 18.5d → 11.75d | 201 → 301 |  |
| 221 | Dev: GUI - Intervention planning | 2009-04-22 → 2009-05-12 (+20d) | 2009-04-28 → 2009-05-15 (+17d) |  |  | 18.5d → 26.12d |  |  |
| 222 | **IPT** | 2009-05-04 → 2009-04-23 (-11d) | 2009-06-08 → 2009-06-24 (+16d) | 24.31d → 45d |  | 16.94d → 4d |  |  |
| 223 | Dev: BE - IPT aggregated - CRUD | 2009-05-04 → 2009-04-23 (-11d) | 2009-05-07 → 2009-04-27 (-10d) |  |  | 28.25d → 11.75d | 216 → 189 |  |
| 224 | Dev: GUI - IPT aggregated - CRUD | 2009-05-08 → 2009-04-27 (-11d) | 2009-05-12 → 2009-04-29 (-13d) |  |  | 27d → 36d | 223, 217 → 223 |  |
| 225 | Dev: IPT aggregated - query | 2009-05-27 → 2009-06-15 (+19d) | 2009-06-02 → 2009-06-18 (+16d) |  |  | 16.94d → 4d |  |  |
| 226 | Dev: BE - IPT individual - CRUD | 2009-05-07 → 2009-05-22 (+15d) | 2009-05-11 → 2009-05-26 (+15d) |  |  | 29.25d → 18.75d | 223 → 229 |  |
| 227 | Dev: GUI - IPT individual - CRUD | 2009-05-13 → 2009-05-26 (+13d) | 2009-05-15 → 2009-05-29 (+14d) |  |  | 28.5d → 18.75d |  |  |
| 228 | Dev: IPT individual - query | 2009-06-02 → 2009-06-19 (+17d) | 2009-06-08 → 2009-06-24 (+16d) |  |  | 16.94d → 4d |  |  |
| 229 | Dev: BE - Stock Control | 2009-05-11 → 2009-05-20 (+9d) | 2009-05-13 → 2009-05-22 (+9d) |  |  | 29.25d → 18.75d | 226 → 216 |  |
| 230 | Dev: GUI - Stock Control | 2009-05-15 → 2009-05-22 (+7d) | 2009-05-19 → 2009-05-26 (+7d) |  |  | 30.5d → 25.75d | 229, 227 → 229 |  |
| 231 | Dev: Backup the data and configuration file | 2009-05-11 → 2009-05-15 (+4d) | 2009-05-15 → 2009-05-22 (+7d) |  |  | 32d → 27.5d |  |  |
| 233 | **Complete Test Cases** |  | 2009-04-03 → 2009-04-07 (+4d) | 37.86d? → 39.5d? | 90% → 98% | 62.14d → 60.5d |  |  |
| 253 | **Case Surveilance** |  | 2009-04-03 → 2009-04-07 (+4d) | 135.14h → 154h | 92% → 94% | 47.86d → 60.5d |  |  |
| 262 | TC: individual case - query | 2009-04-02 → 2009-04-07 (+5d) | 2009-04-03 → 2009-04-07 (+4d) | 5.71h → 4h |  | 47.86d → 60.5d | 159 → none | constraint none → start no earlier than 2009-04-07; resources Marlize [70%] → Dave |
| 263 | **Intervention monitoring** |  | 2009-04-03 → 2009-04-06 (+3d) | 302.86h → 309.71h | 82% → 98% | 62.14d → 47d |  |  |
| 264 | **IRS** |  | 2009-04-03 A |  | 65% → 100% | 62.75d → none |  |  |
| 268 | TC: ITN aggregated data - query | 2009-03-30 A | 2009-03-30 A |  | 0% → 100% | 62.75d → none |  |  |
| 269 | TC: ITN by facility - query | 2009-03-31 A | 2009-03-31 A |  | 0% → 100% | 62.75d → none |  |  |
| 270 | TC: ITN by community - query | 2009-04-01 A | 2009-04-01 A |  | 0% → 100% | 62.75d → none |  |  |
| 271 | TC: ITN by household - query | 2009-04-02 A | 2009-04-03 A |  | 0% → 100% | 62.75d → none |  |  |
| 278 | **ITN** |  | 2009-03-27 A |  | 94% → 100% | 67d → none |  |  |
| 285 | TC: Outbreak notification |  | 2009-03-27 A |  | 50% → 100% | 67d → none |  |  |
| 286 | **Intervention Planning** | 2009-04-03 → 2009-04-06 (+3d) | 2009-04-03 → 2009-04-06 (+3d) |  |  | 47.86d → 47d |  |  |
| 287 | TC: Intervention planning | 2009-04-03 → 2009-04-06 (+3d) | 2009-04-03 → 2009-04-06 (+3d) |  |  | 47.86d → 47d | 262 → none | constraint none → start no earlier than 2009-04-06; resources Marlize [70%] → Dave [70%] |
| 293 | Create standard queries and reports | 2009-04-03 → 2009-05-11 (+38d) | 2009-04-24 → 2009-05-29 (+35d) |  |  | 47.86d → 22.71d |  | constraint none → start no earlier than 2009-05-10 |
| 298 | Order MDSS Hardware | 2009-04-01 → 2009-04-13 (+12d) | 2009-04-01 → 2009-04-13 (+12d) |  |  | 65d → 57d |  | constraint start no earlier than 2009-04-01 → start no earlier than 2009-04-13 |
| 300 | Complete system translation into Portuguese | 2009-04-06 → 2009-05-01 (+25d) | 2009-05-01 → 2009-05-28 (+27d) |  |  | 42d → 23d |  | constraint start no earlier than 2009-04-06 → start no earlier than 2009-05-01 |
| 301 | Dev: Installation (minimal or full) | 2009-05-13 → 2009-04-29 (-14d) | 2009-05-20 → 2009-05-06 (-14d) |  |  | 29.25d → 11.75d | 229 → 208 |  |

## Version 13 (saved 2009-04-14, file MDSS_Project_Plan.mpp)

Note of the change: Release of project plan by Miguel 14.Apr.09 accurate until the end of April

Last finish stays 2009-06-30. Complete tasks 130 → 151.

Changed:

| ID | Task | Start | Finish | Duration | Complete | Total float | Other |
| --- | --- | --- | --- | --- | --- | --- | --- |
| 1 | **MDSS Implementation** |  |  |  | 46% → 49% |  |  |
| 2 | **Create Prototype (Entomology)** |  | 2009-04-24 → 2009-05-18 (+24d) | 60d? → 76d? | 91% → 94% | 15.24d → 31d |  |
| 3 | **System requirements** |  | 2009-04-24 → 2009-05-18 (+24d) | 60d? → 76d? |  | 4.65d → 31d |  |
| 12 | Dev: Represent query criteria in back-end |  | 2009-03-16 A → 2009-05-18 (+63d) | 6d? → 7d? | 100% → 86% | none → 31d |  |
| 13 | Dev: Save query criteria to the database | 2009-04-06 → 2009-04-14 (+8d) | 2009-04-06 → 2009-04-14 (+8d) |  |  | 18.65d → 12.65d | constraint start no earlier than 2009-04-06 → start no earlier than 2009-04-14 |
| 15 | **Prototype Use cases** |  | 2009-04-13 A |  | 92% → 100% | 24.74d → none |  |
| 16 | **Search for a geo entity** |  | 2009-04-10 A |  | 86% → 100% | 4d → none |  |
| 19 | Polish MDSS111 and MDSS101 |  | 2009-04-10 A |  | 70% → 100% | 4d → none |  |
| 42 | Dev: change visibility of fields on GUI | 2009-04-06 A | 2009-04-13 A |  | 0% → 100% | 24.74d → none |  |
| 88 | **Test Prototype Submit Change Requests** |  |  |  | 14% → 61% |  |  |
| 89 | **Test: Geo entity search and maintanance** |  | 2009-04-09 A |  | 0% → 100% | 52.43d → none |  |
| 91 | Test: Search for a geo entity - tree | 2009-03-30 A | 2009-03-30 A |  | 0% → 100% | 52.43d → none |  |
| 92 | Submit defects: Search for a geo entity - tree | 2009-03-30 A | 2009-03-31 A |  | 0% → 100% | 52.43d → none |  |
| 93 | Test: create a geo entity | 2009-03-31 A | 2009-03-31 A |  | 0% → 100% | 52.43d → none |  |
| 94 | Submit defects: create a geo entity | 2009-03-31 A | 2009-04-01 A |  | 0% → 100% | 52.43d → none |  |
| 95 | Test: Search for a geo entity - filtered | 2009-04-01 A | 2009-04-01 A |  | 0% → 100% | 52.43d → none |  |
| 96 | Submit defects: Search for a geo entity - filtered | 2009-04-01 A | 2009-04-02 A |  | 0% → 100% | 52.43d → none |  |
| 97 | Test: Search for a geo entity - Hierarchy table | 2009-04-02 A | 2009-04-03 A |  | 0% → 100% | 52.43d → none |  |
| 98 | TC: IRS - dynamic query | 2009-04-03 A | 2009-04-06 A | 5.71h → 5.72h | 0% → 100% | 52.43d → none | resources Marlize [70%] → Marlize [69.9%] |
| 99 | Submit defects: Search for a geo entity - Hierarchy table | 2009-04-06 A | 2009-04-07 A |  | 0% → 100% | 52.43d → none |  |
| 100 | Test: Search for a geo entity - combo boxes | 2009-04-07 A | 2009-04-07 A |  | 0% → 100% | 52.43d → none |  |
| 101 | Submit defects: Search for a geo entity - combo boxes | 2009-04-07 A | 2009-04-07 A |  | 0% → 100% | 52.43d → none |  |
| 102 | Test: Call 101 from 024, 016, 025 | 2009-04-07 A | 2009-04-08 A |  | 0% → 100% | 52.43d → none |  |
| 103 | Submit defects: Call 101 from 024, 016, 025 | 2009-04-08 A | 2009-04-08 A |  | 0% → 100% | 52.43d → none |  |
| 104 | Write change request MDSS101, MDSS111 | 2009-04-08 A | 2009-04-09 A |  | 0% → 100% | 52.43d → none |  |
| 126 | Test: Submit collection points | 2009-03-25 A | 2009-03-25 A |  | 0% → 100% | 69d → none |  |
| 127 | Submit defects: Submit collection points | 2009-03-25 A | 2009-03-25 A |  | 0% → 100% | 69d → none |  |
| 128 | Test: Import assay and collection data | 2009-03-25 → 2009-04-20 (+26d) | 2009-03-25 → 2009-04-20 (+26d) |  |  | 69d → 51.75d | constraint none → start no earlier than 2009-04-19 |
| 129 | Submit defects: generic import functionality | 2009-03-25 → 2009-04-20 (+26d) | 2009-03-25 → 2009-04-20 (+26d) |  |  | 69d → 51.75d |  |
| 160 | **Complete Development** |  |  |  | 13% → 14% |  |  |
| 161 | **Generic Development** |  |  |  | 40% → 41% |  |  |
| 162 | Dev: Reconstruct saved query | 2009-04-07 → 2009-04-15 (+8d) | 2009-04-14 → 2009-04-22 (+8d) |  |  | 18.65d → 12.65d | constraint start no earlier than 2009-04-07 → start no earlier than 2009-04-13 |
| 163 | Dev: Configure system variables | 2009-04-14 → 2009-04-22 (+8d) | 2009-04-16 → 2009-04-24 (+8d) |  |  | 18.65d → 12.65d |  |
| 164 | Dev: maintain catalogues | 2009-04-16 → 2009-04-24 (+8d) | 2009-04-21 → 2009-04-29 (+8d) |  |  | 18.65d → 12.65d |  |
| 165 | Dev: Epi week - set or change | 2009-04-27 → 2009-04-28 (+1d) |  |  |  | 27.5d → 27d |  |
| 166 | Dev: define season start and end dates | 2009-04-29 → 2009-04-30 (+1d) |  |  |  | 27.5d → 27d |  |
| 167 | Dev: enter/maintain people in the system | 2009-04-13 → 2009-04-14 (+1d) |  |  |  | 27.5d → 27d | constraint none → start no earlier than 2009-04-14 |
| 168 | Dev: create synonyms for imported Geo entities | 2009-05-01 → 2009-05-05 (+4d) | 2009-05-07 → 2009-05-11 (+4d) |  |  | 27.5d → 25.88d |  |
| 169 | Dev: User Admin Screen for account management | 2009-04-21 → 2009-04-29 (+8d) | 2009-04-27 → 2009-05-05 (+8d) |  |  | 18.65d → 12.65d |  |
| 170 | Dev: user Admin Screen for Role assignment | 2009-04-27 → 2009-05-05 (+8d) | 2009-04-29 → 2009-05-07 (+8d) |  |  | 18.65d → 12.65d |  |
| 171 | Dev: Add localisable character attributes | 2009-05-07 → 2009-05-11 (+4d) | 2009-05-11 → 2009-05-13 (+2d) |  |  | 27.5d → 25.88d |  |
| 172 | Dev: CRUD on localisable fields |  | 2009-04-06 A |  | 98% → 100% | 24.74d → none |  |
| 174 | **Indicator survey** | 2009-04-07 → 2009-04-10 A (+3d) |  | 24d → 21d | 0% → 11% |  |  |
| 175 | Dev: BE - Indicator survey - CRUD | 2009-04-07 → 2009-04-10 A (+3d) | 2009-04-08 → 2009-04-13 (+5d) |  | 0% → 50% | 11.75d → 8.75d | constraint finish no earlier than 2009-03-26 → start no earlier than 2009-04-10 |
| 176 | Dev: GUI - Indicator survey - CRUD | 2009-04-09 → 2009-04-15 (+6d) | 2009-04-10 → 2009-04-16 (+6d) |  |  | 26d → 22d |  |
| 178 | **Case Surveilance** |  | 2009-06-04 → 2009-06-12 (+8d) | 48.35d → 54.35d | 10% → 12% | 18.65d → 12.65d |  |
| 179 | Dev: BE - aggregated cases - CRUD |  | 2009-04-06 A |  | 83% → 100% | 11.75d → none |  |
| 180 | Dev: GUI - aggregated cases - CRUD | 2009-04-07 → 2009-04-13 (+6d) | 2009-04-08 → 2009-04-14 (+6d) |  |  | 26d → 22d | constraint finish no earlier than 2009-03-26 → start no earlier than 2009-04-13 |
| 181 | Dev: calculate CFR | 2009-05-11 → 2009-05-13 (+2d) | 2009-05-12 → 2009-05-14 (+2d) |  |  | 27.5d → 25.88d |  |
| 183 | Dev: Input or modify population data | 2009-04-29 → 2009-05-07 (+8d) | 2009-05-06 → 2009-05-14 (+8d) |  |  | 18.65d → 12.65d |  |
| 184 | Dev: Import population or annual growth rate data | 2009-05-06 → 2009-05-14 (+8d) | 2009-05-14 → 2009-05-22 (+8d) |  |  | 18.65d → 12.65d |  |
| 185 | Dev: input/modify outbreak thresholds | 2009-05-14 → 2009-05-22 (+8d) | 2009-05-20 → 2009-05-28 (+8d) |  |  | 18.65d → 12.65d |  |
| 186 | Dev :import outbreak thresholds | 2009-05-20 → 2009-05-28 (+8d) | 2009-05-27 → 2009-06-04 (+8d) |  |  | 18.65d → 12.65d |  |
| 187 | Dev: Calculate annual or seasonal population | 2009-05-27 → 2009-06-04 (+8d) | 2009-06-04 → 2009-06-12 (+8d) |  |  | 18.65d → 12.65d |  |
| 188 | Dev: calculate incidence | 2009-05-12 → 2009-05-14 (+2d) | 2009-05-13 → 2009-05-15 (+2d) |  |  | 27.5d → 25.88d |  |
| 189 | Dev: BE - individual cases - CRUD | 2009-04-21 → 2009-04-24 (+3d) | 2009-04-22 → 2009-04-27 (+5d) |  |  | 11.75d → 8.75d |  |
| 190 | Dev: GUI - individual cases - CRUD | 2009-04-23 → 2009-04-28 (+5d) | 2009-04-24 → 2009-04-29 (+5d) |  |  | 18d → 15d |  |
| 191 | Dev: Outbreak notification | 2009-05-13 → 2009-05-15 (+2d) | 2009-05-15 → 2009-05-19 (+4d) |  |  | 27.5d → 25.88d |  |
| 193 | **Intervention monitoring** | 2009-04-09 → 2009-04-14 (+5d) |  | 55d → 52d |  |  |  |
| 194 | **IRS** | 2009-04-09 → 2009-04-14 (+5d) |  | 26d → 23d |  | 11.75d → 8.75d |  |
| 195 | Dev: enter/maintain spray team member | 2009-04-15 → 2009-04-16 (+1d) |  |  |  | 27.5d → 27d |  |
| 196 | Dev: enter/maintain IRS teams | 2009-04-21 → 2009-04-22 (+1d) |  |  |  | 27.5d → 27d |  |
| 197 | Dev: BE - input or modify IRS targets | 2009-04-13 → 2009-04-16 (+3d) | 2009-04-15 → 2009-04-20 (+5d) |  |  | 11.75d → 8.75d |  |
| 198 | Dev: GUI - input or modify IRS targets | 2009-04-16 → 2009-04-21 (+5d) | 2009-04-20 → 2009-04-23 (+3d) |  |  | 49d → 46d |  |
| 199 | Dev: BE - Configure items relating to application rate | 2009-04-16 → 2009-04-21 (+5d) | 2009-04-20 → 2009-04-23 (+3d) |  |  | 11.75d → 8.75d |  |
| 200 | Dev: GUI - Configure items relating to application rate | 2009-04-21 → 2009-04-24 (+3d) | 2009-04-22 → 2009-04-27 (+5d) |  |  | 49d → 46d |  |
| 201 | Dev: BE - IRS - CRUD | 2009-04-09 → 2009-04-14 (+5d) | 2009-04-10 → 2009-04-15 (+5d) |  |  | 11.75d → 8.75d |  |
| 202 | Dev: GUI - IRS - CRUD | 2009-04-13 → 2009-04-16 (+3d) | 2009-04-14 → 2009-04-17 (+3d) |  |  | 45.37d → 42.37d |  |
| 204 | **Larvaciding** | 2009-05-12 → 2009-05-15 (+3d) | 2009-05-18 → 2009-05-21 (+3d) |  |  | 11.75d → 8.75d |  |
| 205 | Dev: BE - larviciding - CRUD | 2009-05-12 → 2009-05-15 (+3d) | 2009-05-14 → 2009-05-19 (+5d) |  |  | 11.75d → 8.75d |  |

| ID | Task | Start | Finish | Duration | Complete | Total float | Other |
| --- | --- | --- | --- | --- | --- | --- | --- |
| 206 | Dev: GUI - larviciding - CRUD | 2009-05-14 → 2009-05-19 (+5d) | 2009-05-18 → 2009-05-21 (+3d) |  |  | 31.75d → 28.75d |  |
| 207 | **ITN** | 2009-04-27 → 2009-04-30 (+3d) |  | 34.5d → 31.5d |  | 11.75d → 8.75d |  |
| 208 | Dev: BE - ITN aggregated data - CRUD | 2009-04-27 → 2009-04-30 (+3d) | 2009-04-29 → 2009-05-04 (+5d) |  |  | 11.75d → 8.75d |  |
| 209 | Dev: GUI - ITN aggregated data - CRUD | 2009-04-29 → 2009-05-04 (+5d) | 2009-05-01 → 2009-05-06 (+5d) |  |  | 19.5d → 16.5d |  |
| 211 | Dev: BE - ITN facility distribution - CRUD | 2009-05-14 → 2009-05-19 (+5d) | 2009-05-18 → 2009-05-21 (+3d) |  |  | 11.75d → 8.75d |  |
| 212 | Dev: GUI - ITN facility distribution - CRUD | 2009-05-18 → 2009-05-21 (+3d) | 2009-05-20 → 2009-05-25 (+5d) |  |  | 29.75d → 26.75d |  |
| 213 | Dev: BE - ITN community distribution - CRUD | 2009-05-18 → 2009-05-21 (+3d) | 2009-05-19 → 2009-05-22 (+3d) |  |  | 11.75d → 8.75d |  |
| 214 | Dev: GUI - ITN community distribution - CRUD | 2009-05-19 → 2009-05-22 (+3d) | 2009-05-20 → 2009-05-25 (+5d) |  |  | 11.75d → 8.75d |  |
| 216 | Dev: BE - ITN by household - CRUD | 2009-05-19 → 2009-05-22 (+3d) | 2009-05-20 → 2009-05-25 (+5d) |  |  | 18.75d → 15.75d |  |
| 217 | Dev: GUI - ITN by household - CRUD | 2009-05-20 → 2009-05-25 (+5d) | 2009-05-21 → 2009-05-26 (+5d) |  |  | 28.75d → 25.75d |  |
| 219 | **Intervention Planning** | 2009-05-06 → 2009-05-11 (+5d) | 2009-05-15 → 2009-05-20 (+5d) |  |  | 11.75d → 8.75d |  |
| 220 | Dev: BE - Intervention planning | 2009-05-06 → 2009-05-11 (+5d) | 2009-05-12 → 2009-05-15 (+3d) |  |  | 11.75d → 8.75d |  |
| 221 | Dev: GUI - Intervention planning | 2009-05-12 → 2009-05-15 (+3d) | 2009-05-15 → 2009-05-20 (+5d) |  |  | 26.12d → 23.12d |  |
| 222 | **IPT** | 2009-04-23 → 2009-04-28 (+5d) |  | 45d → 42d |  |  |  |
| 223 | Dev: BE - IPT aggregated - CRUD | 2009-04-23 → 2009-04-28 (+5d) | 2009-04-27 → 2009-04-30 (+3d) |  |  | 11.75d → 8.75d |  |
| 224 | Dev: GUI - IPT aggregated - CRUD | 2009-04-27 → 2009-04-30 (+3d) | 2009-04-29 → 2009-05-04 (+5d) |  |  | 36d → 33d |  |
| 226 | Dev: BE - IPT individual - CRUD | 2009-05-22 → 2009-05-27 (+5d) | 2009-05-26 → 2009-05-29 (+3d) |  |  | 18.75d → 15.75d |  |
| 227 | Dev: GUI - IPT individual - CRUD | 2009-05-26 → 2009-05-29 (+3d) | 2009-05-29 → 2009-06-03 (+5d) |  |  | 18.75d → 15.75d |  |
| 229 | Dev: BE - Stock Control | 2009-05-20 → 2009-05-25 (+5d) | 2009-05-22 → 2009-05-27 (+5d) |  |  | 18.75d → 15.75d |  |
| 230 | Dev: GUI - Stock Control | 2009-05-22 → 2009-05-27 (+5d) | 2009-05-26 → 2009-05-29 (+3d) |  |  | 25.75d → 22.75d |  |
| 231 | Dev: Backup the data and configuration file | 2009-05-15 → 2009-05-19 (+4d) | 2009-05-22 → 2009-05-26 (+4d) |  |  | 27.5d → 25.88d |  |
| 233 | **Complete Test Cases** |  | 2009-04-07 A |  | 98% → 100% | 60.5d → none |  |
| 253 | **Case Surveilance** |  | 2009-04-07 A |  | 94% → 100% | 60.5d → none |  |
| 262 | TC: individual case - query | 2009-04-07 A | 2009-04-07 A |  | 0% → 100% | 60.5d → none |  |
| 263 | **Intervention monitoring** |  | 2009-04-06 A | 309.71h → 309.72h | 98% → 100% | 47d → none |  |
| 286 | **Intervention Planning** | 2009-04-06 A | 2009-04-06 A | 5.71h → 5.72h | 0% → 100% | 47d → none |  |
| 287 | TC: Intervention planning | 2009-04-06 A | 2009-04-06 A | 5.71h → 5.72h | 0% → 100% | 47d → none | resources Dave [70%] → Dave [69.9%] |
| 301 | Dev: Installation (minimal or full) | 2009-04-29 → 2009-05-04 (+5d) | 2009-05-06 → 2009-05-11 (+5d) |  |  | 11.75d → 8.75d |  |

## Version 14 (saved 2009-04-20, file MDSS_Project_Plan.mpp)

Note of the change: project plan, released 20.apr.09

Last finish 2009-06-30 → 2009-07-08 (+8d). Complete tasks 151 → 169.

Added:

| ID | Task | Duration | Start | Finish | Predecessors | Constraint | Resources |
| --- | --- | --- | --- | --- | --- | --- | --- |
| 46 | Dev: Entomology (biochem/Mol assay) dynamic query | 24h | 2009-05-22 | 2009-05-26 | 45 |  | Naifeh |
| 47 | Dev: Entomology Efficacy dynamic query | 24h | 2009-05-27 | 2009-05-29 | 46 |  | Naifeh |
| 168 | Configure universal icons | 8h | 2009-05-04 | 2009-05-04 | 198 | start no earlier than 2009-04-28 | Naifeh |
| 199 | **MDSS Stabilisation** | 22d? | 2009-04-23 | 2009-05-22 |  |  |  |
| 200 | Ticket resolution | 120h | 2009-05-04 | 2009-05-22 |  | start no earlier than 2009-05-04 | Darrell; Justin |
| 205 | Finalise export/import routines | 40h | 2009-05-04 | 2009-05-08 | 204 |  | Eric |
| 238 | Dev: Synchronise data between systems | 40h | 2009-06-01 | 2009-06-05 | 237 |  | Eric |

Changed:

| ID | Task | Start | Finish | Duration | Complete | Total float | Predecessors | Other |
| --- | --- | --- | --- | --- | --- | --- | --- | --- |
| 1 | **MDSS Implementation** |  | 2009-06-24 → 2009-07-08 (+14d) | 103d? → 113d? | 49% → 63% | 4d → 0d |  |  |
| 2 | **Create Prototype (Entomology)** |  | 2009-05-18 → 2009-04-24 (-24d) | 76d? → 60d? | 94% → 95% | 31d → 53d |  |  |
| 3 | **System requirements** |  | 2009-05-18 → 2009-04-24 (-24d) | 76d? → 60d? | 88% → 90% | 31d → 53d |  |  |
| 12 | Dev: Represent query criteria in back-end |  | 2009-05-18 → 2009-03-16 A (-63d) | 7d? → 6d? | 86% → 100% | 31d → none |  |  |
| 13 | Dev: Save query criteria to the database | 2009-04-14 A | 2009-04-14 → 2009-04-22 (+8d) | 1d? → 6.5d | 0% → 25% | 12.65d → 55d |  | constraint start no earlier than 2009-04-14 → finish no earlier than 2009-04-22 |
| 14 | Dev: Generic GIS visualisation and output requirements | 2009-04-13 A |  |  | 0% → 50% | 4d → 0d |  |  |
| 45 | Dev: Entomology Resistance (bioassay) dynamic query | 2009-05-04 → 2009-05-19 (+15d) | 2009-05-04 → 2009-05-21 (+17d) | 8h → 24h |  | 41d → 0d | 38, 177 → 172 | was named Dev: GUI - Entomology dynamic query |
| 53 | **Aquire Geo Data** |  |  |  | 0% → 87% | 49d → 55d |  |  |
| 63 | **Malawi** | 2009-03-31 A |  |  | 0% → 86% | 65d → 71d |  |  |
| 64 | Priority 1: Province / Region Boundaries | 2009-03-31 A | 2009-03-31 A |  | 0% → 100% | 65d → none |  |  |
| 65 | Priority 1: District Boundaries | 2009-03-31 A | 2009-03-31 A |  | 0% → 100% | 65d → none |  |  |
| 66 | Priority 1: Traditional Authority Boundaries | 2009-03-31 A | 2009-03-31 A |  | 0% → 100% | 65d → none |  |  |
| 67 | Priority 1: Village Points | 2009-03-31 A | 2009-03-31 A |  | 0% → 100% | 65d → none |  |  |
| 68 | Priority 1: Health Facility Points | 2009-03-31 A | 2009-03-31 A |  | 0% → 100% | 65d → none |  |  |
| 69 | Priority 1: Sentinel Site Points | 2009-03-31 A | 2009-03-31 A |  | 0% → 100% | 65d → none |  |  |
| 71 | **Zambia** | 2009-04-09 A |  |  | 0% → 88% | 49d → 55d |  |  |
| 72 | Priority 1: Province Boundaries | 2009-04-09 A | 2009-04-22 A |  | 0% → 100% | 49d → none |  |  |
| 73 | Priority 1: District Boundaries | 2009-04-09 A | 2009-04-22 A |  | 0% → 100% | 49d → none |  |  |
| 74 | Priority 1: Constituency Boundaries | 2009-04-09 A | 2009-04-22 A |  | 0% → 100% | 49d → none |  |  |
| 75 | Priority 1: Ward Boundaries | 2009-04-09 A | 2009-04-22 A |  | 0% → 100% | 49d → none |  |  |
| 76 | Priority 1: Village Points | 2009-04-09 A | 2009-04-22 A |  | 0% → 100% | 49d → none |  |  |
| 77 | Priority 1: Health Facility Points | 2009-04-09 A | 2009-04-22 A |  | 0% → 100% | 49d → none |  |  |
| 78 | Priority 1: Sentinel Site Points | 2009-04-09 A | 2009-04-22 A |  | 0% → 100% | 49d → none |  |  |
| 80 | Deliver Population data | 2009-04-09 A | 2009-04-09 A |  | 0% → 100% | 58d → none |  |  |
| 81 | Import Geo data into MDSS schema | 2009-04-09 A | 2009-04-09 → 2009-04-14 A (+5d) | 8h → 28.24h | 0% → 100% | 58d → none |  | resources none → Nathan [85%] |
| 90 | **Test Prototype Submit Change Requests** |  | 2009-05-04 → 2009-05-11 (+7d) | 35.89d? → 40.89d? |  | 41.11d → 42.11d |  |  |
| 107 | Test: changing visibility of fields in GUI | 2009-04-16 → 2009-04-22 (+6d) | 2009-04-16 → 2009-04-22 (+6d) |  |  | 47.57d → 48.57d |  | constraint start no earlier than 2009-04-16 → start no earlier than 2009-04-22 |
| 108 | Submit defects: changing visibility of fields in GUI | 2009-04-16 → 2009-04-22 (+6d) | 2009-04-16 → 2009-04-22 (+6d) |  |  | 47.57d → 48.57d |  |  |
| 130 | Test: Import assay and collection data | 2009-04-20 → 2009-04-27 (+7d) | 2009-04-20 → 2009-04-27 (+7d) |  |  |  |  | constraint start no earlier than 2009-04-19 → start no earlier than 2009-04-25 |
| 131 | Submit defects: generic import functionality | 2009-04-20 → 2009-04-27 (+7d) | 2009-04-20 → 2009-04-27 (+7d) |  |  |  |  |  |
| 132 | **Test: IRS dynamic query and reports** | 2009-04-27 → 2009-05-04 (+7d) | 2009-05-04 → 2009-05-11 (+7d) |  |  | 41.11d → 42.11d |  | was named Test: Entomology dynamic query and reports |
| 133 | Test: add Geo-entity fields | 2009-04-27 → 2009-05-04 (+7d) | 2009-04-27 → 2009-05-04 (+7d) |  |  |  |  | constraint start no earlier than 2009-04-25 → start no earlier than 2009-05-04 |
| 134 | Test: add other fields | 2009-04-27 → 2009-05-04 (+7d) | 2009-04-27 → 2009-05-04 (+7d) |  |  |  |  |  |
| 135 | Test: add functions | 2009-04-27 → 2009-05-04 (+7d) | 2009-04-27 → 2009-05-04 (+7d) |  |  |  |  |  |
| 136 | Test: date ranges on collection date or assay date | 2009-04-27 → 2009-05-04 (+7d) | 2009-04-27 → 2009-05-04 (+7d) |  |  |  |  |  |
| 137 | Submit defects: Build query | 2009-04-27 → 2009-05-04 (+7d) | 2009-04-28 → 2009-05-05 (+7d) |  |  |  |  |  |
| 138 | Test: save query | 2009-04-28 → 2009-05-05 (+7d) | 2009-04-28 → 2009-05-05 (+7d) |  |  |  |  |  |
| 139 | Test: run a saved query | 2009-04-28 → 2009-05-05 (+7d) | 2009-04-28 → 2009-05-05 (+7d) |  |  |  |  |  |
| 140 | Test: modify a saved query | 2009-04-28 → 2009-05-05 (+7d) | 2009-04-28 → 2009-05-05 (+7d) |  |  |  |  |  |
| 141 | Test: export query results | 2009-04-28 → 2009-05-05 (+7d) | 2009-04-28 → 2009-05-05 (+7d) |  |  |  |  |  |
| 142 | Test: dump functionality | 2009-04-28 → 2009-05-05 (+7d) | 2009-04-28 → 2009-05-05 (+7d) |  |  |  |  |  |
| 143 | Submit defects: deploy query | 2009-04-28 → 2009-05-05 (+7d) | 2009-04-29 → 2009-05-06 (+7d) |  |  |  |  |  |
| 144 | Test: create thematic map from query | 2009-04-29 → 2009-05-06 (+7d) | 2009-04-30 → 2009-05-07 (+7d) |  |  |  |  |  |
| 145 | Test: find query results in BIRT | 2009-04-30 → 2009-05-07 (+7d) | 2009-04-30 → 2009-05-07 (+7d) |  |  |  |  |  |
| 146 | Test: create a report template (table) | 2009-04-30 → 2009-05-07 (+7d) | 2009-05-01 → 2009-05-08 (+7d) |  |  |  |  |  |
| 147 | Test: Link a report template to query | 2009-05-01 → 2009-05-08 (+7d) | 2009-05-01 → 2009-05-08 (+7d) |  |  |  |  |  |
| 148 | Test: view/print/save a report | 2009-05-01 → 2009-05-08 (+7d) | 2009-05-01 → 2009-05-08 (+7d) |  |  |  |  |  |
| 149 | Test: change linked report | 2009-05-01 → 2009-05-08 (+7d) | 2009-05-01 → 2009-05-08 (+7d) |  |  |  |  |  |
| 150 | Submit defects: deploy query | 2009-05-01 → 2009-05-08 (+7d) | 2009-05-04 → 2009-05-11 (+7d) |  |  |  |  |  |
| 151 | Write change request: Dynamic query | 2009-05-04 → 2009-05-11 (+7d) | 2009-05-04 → 2009-05-11 (+7d) |  |  |  |  |  |
| 162 | **Complete Development** |  | 2009-06-24 → 2009-07-08 (+14d) | 78d? → 88d? | 14% → 18% | 4d → 0d |  |  |
| 163 | **Generic Development** |  | 2009-05-22 → 2009-06-19 (+28d) | 55d? → 75d | 41% → 75% | 18d → 13d |  |  |
| 164 | Dev: Reconstruct saved query | 2009-04-15 → 2009-04-16 A (+1d) |  | 47.06h → 40h | 0% → 40% | 12.65d → 17.53d | 13 → 13SS | constraint start no earlier than 2009-04-13 → finish no earlier than 2009-04-22; resources Nathan [85%] → Nathan [200%] |
| 165 | Dev: enter/maintain people in the system | 2009-04-14 → 2009-04-16 A (+2d) | 2009-04-15 → 2009-04-22 (+7d) | 16h → 40h | 0% → 40% | 27d → 55d |  | constraint start no earlier than 2009-04-14 → start no earlier than 2009-04-16 |
| 167 | Change geo root | 2009-05-22 → 2009-06-19 (+28d) | 2009-05-22 → 2009-06-19 (+28d) |  |  | 4d → 13d | 202, 187 → 202, 216 | constraint none → start no earlier than 2009-06-06 |
| 169 | **Indicator survey** |  | 2009-05-08 → 2009-05-18 (+10d) | 21d → 27d | 11% → 53% | 6d → 37d |  |  |
| 170 | Dev: BE - Indicator survey - CRUD |  | 2009-04-13 A |  | 50% → 100% | 8.75d → none |  |  |
| 171 | Dev: GUI - Indicator survey - CRUD | 2009-04-15 A | 2009-04-16 → 2009-04-20 (+4d) | 16h → 32h | 0% → 95% | 22d → 57d |  |  |
| 172 | Dev - Indicator survey - dynamic query | 2009-05-04 → 2009-05-12 (+8d) | 2009-05-08 → 2009-05-18 (+10d) |  |  | 4d → 0d |  |  |
| 173 | **Case Surveilance** |  |  | 54.35d → 55d | 12% → 16% | 12.65d → 18d |  |  |
| 175 | Dev: GUI - aggregated cases - CRUD | 2009-04-13 A | 2009-04-14 A |  | 0% → 100% | 22d → none |  |  |
| 176 | Dev: calculate CFR | 2009-05-13 → 2009-05-19 (+6d) | 2009-05-14 → 2009-05-19 (+5d) |  |  | 25.88d → 23d |  |  |
| 177 | Dev: aggregated cases - dynamic query | 2009-04-27 → 2009-05-05 (+8d) | 2009-05-01 → 2009-05-11 (+10d) |  |  | 4d → 0d | 154, 14 → 154, 168 | constraint start no earlier than 2009-03-17 → start no earlier than 2009-04-07 |
| 178 | Dev: Input or modify population data | 2009-05-07 → 2009-05-08 (+1d) | 2009-05-14 → 2009-05-15 (+1d) |  |  | 12.65d → 18.53d |  |  |
| 179 | Dev: Calculate annual or seasonal population | 2009-06-04 → 2009-05-18 (-17d) | 2009-06-12 → 2009-05-25 (-18d) |  |  | 12.65d → 18d | 227, 182 → 178 | constraint none → start no earlier than 2009-05-16 |
| 180 | Dev: Import population or annual growth rate data | 2009-05-14 → 2009-05-25 (+11d) | 2009-05-22 → 2009-06-02 (+11d) |  |  | 12.65d → 18d | 178 → 179 |  |
| 181 | Dev: input/modify outbreak thresholds | 2009-05-22 → 2009-06-02 (+11d) | 2009-05-28 → 2009-06-09 (+12d) |  |  | 12.65d → 18d |  |  |
| 182 | Dev :import outbreak thresholds | 2009-05-28 → 2009-06-09 (+12d) | 2009-06-04 → 2009-06-12 (+8d) | 37.65h → 28.23h |  | 12.65d → 18d |  |  |
| 183 | Dev: calculate incidence | 2009-05-14 → 2009-05-20 (+6d) | 2009-05-15 → 2009-05-20 (+5d) |  |  | 25.88d → 23d |  |  |
| 184 | Dev: BE - individual cases - CRUD | 2009-04-24 → 2009-05-25 (+31d) | 2009-04-27 → 2009-05-26 (+29d) |  |  | 8.75d → 1d | 194 → 200 |  |

| ID | Task | Start | Finish | Duration | Complete | Total float | Predecessors | Other |
| --- | --- | --- | --- | --- | --- | --- | --- | --- |
| 185 | Dev: GUI - individual cases - CRUD | 2009-04-28 → 2009-05-27 (+29d) | 2009-04-29 → 2009-05-28 (+29d) |  |  | 15d → 1d | 184, 171 → 184, 200 |  |
| 186 | Dev: Outbreak notification | 2009-05-15 → 2009-05-21 (+6d) | 2009-05-19 → 2009-05-22 (+3d) |  |  | 25.88d → 23d |  |  |
| 187 | Dev: individual case - dynamic query | 2009-05-15 → 2009-06-01 (+17d) | 2009-05-21 → 2009-06-05 (+15d) |  |  | 4d → 0d | 185, 153, 198 → 185, 153, 47 |  |
| 188 | **Intervention monitoring** | 2009-04-14 A | 2009-06-24 → 2009-07-08 (+14d) | 52d → 62d? | 0% → 2% | 4d → 0d |  |  |
| 189 | **IRS** | 2009-04-14 A | 2009-05-14 → 2009-05-01 (-13d) | 23d → 14d | 0% → 10% | 8.75d → 48d |  |  |
| 190 | Dev: enter/maintain spray team member | 2009-04-16 A |  |  | 0% → 50% | 27d → 23d | 165 → 165SS |  |
| 192 | Dev: BE - input or modify IRS targets | 2009-04-16 → 2009-04-17 (+1d) | 2009-04-20 → 2009-04-21 (+1d) |  |  | 8.75d → 51d | 196 → none | constraint none → start no earlier than 2009-04-17 |
| 193 | Dev: GUI - input or modify IRS targets | 2009-04-21 → 2009-04-22 (+1d) | 2009-04-23 → 2009-04-24 (+1d) |  |  | 46d → 51d |  |  |
| 194 | Dev: BE - Configure items relating to application rate | 2009-04-21 → 2009-04-24 (+3d) | 2009-04-23 → 2009-04-29 (+6d) |  |  | 8.75d → 48.8d | 192 → 192, 196 |  |
| 195 | Dev: GUI - Configure items relating to application rate | 2009-04-24 → 2009-04-29 (+5d) | 2009-04-27 → 2009-05-01 (+4d) |  |  | 46d → 48.8d |  |  |
| 196 | Dev: BE - IRS - CRUD | 2009-04-14 A | 2009-04-15 → 2009-04-24 (+9d) | 16h → 24h | 0% → 27% | 8.75d → 48.8d |  |  |
| 197 | Dev: GUI - IRS - CRUD | 2009-04-16 → 2009-04-24 (+8d) | 2009-04-17 → 2009-04-28 (+11d) |  |  | 42.37d → 51.8d |  |  |
| 198 | Dev: IRS - dynamic query | 2009-05-11 → 2009-04-27 (-14d) | 2009-05-14 → 2009-05-01 (-13d) | 32h → 40h |  | 4d → 0d | 156, 172 → 156, 14 |  |
| 201 | Dev: maintain catalogues | 2009-04-24 → 2009-04-23 (-1d) | 2009-04-29 → 2009-04-28 (-1d) |  |  | 12.65d → 18.53d | 202 → 164 | constraint none → start no earlier than 2009-04-23 |
| 202 | Dev: Configure system variables | 2009-04-22 → 2009-04-28 (+6d) | 2009-04-24 → 2009-04-30 (+6d) | 9.41h → 18.82h |  | 12.65d → 18.53d | 52, 164 → 52, 201 |  |
| 206 | Dev: create synonyms for imported Geo entities | 2009-05-05 → 2009-05-11 (+6d) | 2009-05-11 → 2009-05-14 (+3d) |  |  | 25.88d → 23d | 207, 204 → 207, 205 |  |
| 207 | Dev: User Admin Screen for account management | 2009-04-29 → 2009-04-30 (+1d) | 2009-05-05 → 2009-05-06 (+1d) |  |  | 12.65d → 18.53d | 42, 201 → 42, 202 |  |
| 208 | Dev: user Admin Screen for Role assignment | 2009-05-05 → 2009-05-06 (+1d) | 2009-05-07 → 2009-05-08 (+1d) |  |  | 12.65d → 18.53d |  |  |
| 209 | Dev: Add localisable character attributes | 2009-05-11 → 2009-05-15 (+4d) | 2009-05-13 → 2009-05-18 (+5d) |  |  | 25.88d → 23d |  |  |
| 210 | **Larvaciding** | 2009-05-15 → 2009-05-29 (+14d) | 2009-05-21 → 2009-06-04 (+14d) | 4d → 4.5d |  | 8.75d → 4.5d |  |  |
| 211 | Dev: BE - larviciding - CRUD | 2009-05-15 → 2009-05-29 (+14d) | 2009-05-19 → 2009-06-02 (+14d) |  |  | 8.75d → 3.5d | 226 → 229 | constraint start no earlier than 2009-03-14 → start no earlier than 2009-05-22 |
| 212 | Dev: GUI - larviciding - CRUD | 2009-05-19 → 2009-06-03 (+15d) | 2009-05-21 → 2009-06-04 (+14d) |  |  | 28.75d → 4.75d | 211 → 211, 230 |  |
| 213 | **ITN** | 2009-04-30 → 2009-06-02 (+33d) | 2009-06-12 → 2009-07-02 (+20d) | 31.5d → 22.5d |  | 8.75d → 0d |  |  |
| 214 | Dev: BE - ITN aggregated data - CRUD | 2009-04-30 → 2009-06-02 (+33d) | 2009-05-04 → 2009-06-04 (+31d) |  |  | 8.75d → 3.5d | 229 → 211 | constraint none → start no earlier than 2009-05-22 |
| 215 | Dev: GUI - ITN aggregated data - CRUD | 2009-05-04 → 2009-06-05 (+32d) | 2009-05-06 → 2009-06-08 (+33d) |  |  | 16.5d → 4.75d | 214 → 214, 212 |  |
| 216 | Dev: ITN aggregated data - query | 2009-05-25 → 2009-06-12 (+18d) | 2009-05-29 → 2009-06-18 (+20d) |  |  | 4d → 0d | 215, 198, 167 → 231 | constraint none → start no earlier than 2009-06-03 |
| 217 | Dev: BE - ITN facility distribution - CRUD | 2009-05-19 → 2009-06-12 (+24d) | 2009-05-21 → 2009-06-16 (+26d) |  |  | 8.75d → 4.75d | 211 → 235 | constraint none → start no earlier than 2009-05-22 |
| 218 | Dev: GUI - ITN facility distribution - CRUD | 2009-05-21 → 2009-06-18 (+28d) | 2009-05-25 → 2009-06-19 (+25d) |  |  | 26.75d → 3.5d | 217, 215 → 217, 236 |  |
| 219 | Dev: BE - ITN community distribution - CRUD | 2009-05-21 → 2009-06-16 (+26d) | 2009-05-22 → 2009-06-17 (+26d) |  |  | 8.75d → 4.75d |  | constraint none → start no earlier than 2009-05-22 |
| 220 | Dev: GUI - ITN community distribution - CRUD | 2009-05-22 → 2009-06-22 (+31d) | 2009-05-25 → 2009-06-22 (+28d) |  |  | 8.75d → 3.5d | 219 → 219, 218 |  |
| 221 | Dev: ITN by facility/community - query | 2009-06-01 → 2009-06-19 (+18d) | 2009-06-05 → 2009-06-25 (+20d) |  |  | 4d → 0d | 157, 216, 220 → 216 |  |
| 222 | Dev: BE - ITN by household - CRUD | 2009-05-22 → 2009-06-17 (+26d) | 2009-05-25 → 2009-06-18 (+24d) |  |  | 15.75d → 4.75d |  | constraint start no earlier than 2009-03-21 → start no earlier than 2009-05-22 |
| 223 | Dev: GUI - ITN by household - CRUD | 2009-05-25 → 2009-06-23 (+29d) | 2009-05-26 → 2009-06-23 (+28d) |  |  | 25.75d → 3.5d |  |  |
| 224 | Dev: ITN by household - query | 2009-06-08 → 2009-06-26 (+18d) | 2009-06-12 → 2009-07-02 (+20d) |  |  | 4d → 0d |  |  |
| 225 | **Intervention Planning** | 2009-05-11 → 2009-06-04 (+24d) | 2009-05-20 → 2009-06-15 (+26d) |  |  | 8.75d → 4.5d |  |  |
| 226 | Dev: BE - Intervention planning | 2009-05-11 → 2009-06-04 (+24d) | 2009-05-15 → 2009-06-10 (+26d) |  |  | 8.75d → 3.5d | 308 → 214 | constraint none → start no earlier than 2009-05-22 |
| 227 | Dev: GUI - Intervention planning | 2009-05-15 → 2009-06-10 (+26d) | 2009-05-20 → 2009-06-15 (+26d) |  |  | 23.12d → 3.5d | 226, 197 → 226, 215 |  |
| 228 | **IPT** | 2009-04-28 → 2009-05-27 (+29d) | 2009-06-24 → 2009-07-08 (+14d) | 42d → 31d |  | 4d → 0d |  |  |
| 229 | Dev: BE - IPT aggregated - CRUD | 2009-04-28 → 2009-05-27 (+29d) | 2009-04-30 → 2009-05-29 (+29d) |  |  | 8.75d → 2d |  | constraint none → start no earlier than 2009-05-22 |
| 230 | Dev: GUI - IPT aggregated - CRUD | 2009-04-30 → 2009-05-29 (+29d) | 2009-05-04 → 2009-06-02 (+29d) |  |  | 33d → 2d | 229 → 229, 185 |  |
| 231 | Dev: IPT aggregated - query | 2009-06-15 → 2009-06-08 (-7d) | 2009-06-18 → 2009-06-11 (-7d) |  |  | 4d → 0d | 230, 224 → 230, 187 |  |
| 232 | Dev: BE - IPT individual - CRUD | 2009-05-27 → 2009-06-18 (+22d) | 2009-05-29 → 2009-06-22 (+24d) |  |  | 15.75d → 4.75d | 235 → 222 | constraint start no earlier than 2009-04-19 → start no earlier than 2009-05-22 |
| 233 | Dev: GUI - IPT individual - CRUD | 2009-05-29 → 2009-06-24 (+26d) | 2009-06-03 → 2009-06-26 (+23d) |  |  | 15.75d → 3.5d | 230, 232 → 232, 223 |  |
| 234 | Dev: IPT individual - query | 2009-06-19 → 2009-07-03 (+14d) | 2009-06-24 → 2009-07-08 (+14d) |  |  | 4d → 0d | 233, 231 → 233, 224 |  |
| 235 | Dev: BE - Stock Control | 2009-05-25 → 2009-06-10 (+16d) | 2009-05-27 → 2009-06-12 (+16d) |  |  | 15.75d → 4.75d | 222 → 226 | constraint start no earlier than 2009-03-25 → start no earlier than 2009-05-22 |
| 236 | Dev: GUI - Stock Control | 2009-05-27 → 2009-06-16 (+20d) | 2009-05-29 → 2009-06-17 (+19d) |  |  | 22.75d → 3.5d | 235 → 235, 227 |  |
| 237 | Dev: Backup the data and configuration file | 2009-05-19 → 2009-05-25 (+6d) | 2009-05-26 → 2009-05-29 (+3d) |  |  | 25.88d → 22d |  |  |
| 301 | Receive historical entomological data | 2009-03-27 → 2009-05-20 (+54d) | 2009-03-27 → 2009-05-20 (+54d) |  |  | 66d → 33d |  | constraint start no earlier than 2009-03-27 → start no earlier than 2009-05-20 |
| 302 | Import historical entomological data | 2009-03-30 → 2009-05-21 (+52d) | 2009-03-30 → 2009-05-21 (+52d) |  |  | 66d → 33d |  |  |
| 303 | Receive all historical IRS data | 2009-05-04 → 2009-05-20 (+16d) | 2009-05-04 → 2009-05-20 (+16d) |  |  | 40d → 33d |  | constraint start no earlier than 2009-05-04 → start no earlier than 2009-05-20 |
| 304 | Import all historical IRS data | 2009-05-05 → 2009-05-21 (+16d) | 2009-05-05 → 2009-05-21 (+16d) |  |  | 40d → 33d |  |  |
| 308 | Dev: Installation (minimal or full) | 2009-05-04 → 2009-06-22 (+49d) | 2009-05-11 → 2009-06-29 (+49d) |  |  | 8.75d → 6.25d | 214 → 232 | constraint none → start no earlier than 2009-06-15 |

## Version 15 (saved 2009-04-28, file MDSS_Project_Plan.mpp)

Note of the change: Project Plan, including PDF of development tasks.

Last finish stays 2009-07-08. Complete tasks 169 → 170.

Changed:

| ID | Task | Start | Finish | Duration | Complete | Total float | Other |
| --- | --- | --- | --- | --- | --- | --- | --- |
| 1 | **MDSS Implementation** |  |  |  | 63% → 61% |  |  |
| 2 | **Create Prototype (Entomology)** |  | 2009-04-24 → 2009-04-27 (+3d) | 60d? → 60.5d? | 95% → 99% | 53d → 52.5d |  |
| 3 | **System requirements** |  | 2009-04-24 → 2009-04-27 (+3d) | 60d? → 60.5d? | 90% → 98% | 53d → 52.5d |  |
| 13 | Dev: Save query criteria to the database |  | 2009-04-22 → 2009-04-27 (+5d) | 6.5d → 9d | 25% → 94% | 55d → 52.5d |  |
| 14 | Dev: Generic GIS visualisation and output requirements |  |  |  | 50% → 85% |  |  |
| 107 | Test: changing visibility of fields in GUI | 2009-04-22 → 2009-04-27 (+5d) | 2009-04-22 → 2009-04-27 (+5d) |  |  | 48.57d → 45.57d | constraint start no earlier than 2009-04-22 → start no earlier than 2009-04-27 |
| 108 | Submit defects: changing visibility of fields in GUI | 2009-04-22 → 2009-04-27 (+5d) | 2009-04-22 → 2009-04-27 (+5d) |  |  | 48.57d → 45.57d |  |
| 162 | **Complete Development** |  |  |  | 18% → 25% |  |  |
| 163 | **Generic Development** |  |  |  | 75% → 90% |  |  |
| 164 | Dev: Reconstruct saved query |  | 2009-04-22 → 2009-04-27 (+5d) | 40h → 62.49h | 40% → 90% | 17.53d → 15.72d |  |
| 165 | Dev: enter/maintain people in the system |  | 2009-04-22 → 2009-04-27 (+5d) | 40h → 64h | 40% → 88% | 55d → 52d |  |
| 169 | **Indicator survey** |  |  |  | 53% → 55% | 37d → 0d |  |
| 171 | Dev: GUI - Indicator survey - CRUD |  | 2009-04-20 A |  | 95% → 100% | 57d → none |  |
| 173 | **Case Surveilance** |  | 2009-06-12 → 2009-06-17 (+5d) | 55d → 57.28d |  | 18d → 15.72d |  |
| 176 | Dev: calculate CFR | 2009-05-19 → 2009-05-25 (+6d) | 2009-05-19 → 2009-05-25 (+6d) |  |  | 23d → 19d |  |
| 178 | Dev: Input or modify population data | 2009-05-08 → 2009-05-13 (+5d) | 2009-05-15 → 2009-05-20 (+5d) |  |  | 18.53d → 15.72d |  |
| 179 | Dev: Calculate annual or seasonal population | 2009-05-18 → 2009-05-20 (+2d) | 2009-05-25 → 2009-05-28 (+3d) |  |  | 18d → 15.72d |  |
| 180 | Dev: Import population or annual growth rate data | 2009-05-25 → 2009-05-28 (+3d) | 2009-06-02 → 2009-06-05 (+3d) |  |  | 18d → 15.72d |  |
| 181 | Dev: input/modify outbreak thresholds | 2009-06-02 → 2009-06-05 (+3d) | 2009-06-09 → 2009-06-11 (+2d) |  |  | 18d → 15.72d |  |
| 182 | Dev :import outbreak thresholds | 2009-06-09 → 2009-06-11 (+2d) | 2009-06-12 → 2009-06-17 (+5d) |  |  | 18d → 15.72d |  |
| 183 | Dev: calculate incidence | 2009-05-20 → 2009-05-26 (+6d) | 2009-05-20 → 2009-05-26 (+6d) |  |  | 23d → 19d |  |
| 186 | Dev: Outbreak notification | 2009-05-21 → 2009-05-27 (+6d) | 2009-05-22 → 2009-05-28 (+6d) |  |  | 23d → 19d |  |
| 188 | **Intervention monitoring** |  |  |  | 2% → 9% |  |  |
| 189 | **IRS** |  | 2009-05-01 → 2009-05-04 (+3d) | 14d → 15d | 10% → 33% | 48d → 47d |  |
| 190 | Dev: enter/maintain spray team member |  | 2009-04-21 → 2009-04-27 (+6d) | 32h → 64h | 50% → 88% | 23d → 19d |  |
| 191 | Dev: enter/maintain IRS teams | 2009-04-22 → 2009-04-28 (+6d) | 2009-04-27 → 2009-05-01 (+4d) |  |  | 23d → 19d |  |
| 192 | Dev: BE - input or modify IRS targets | 2009-04-17 A | 2009-04-21 → 2009-04-27 (+6d) |  | 0% → 67% | 51d → 47d | resources Justin → Justin [123.1%] |
| 193 | Dev: GUI - input or modify IRS targets | 2009-04-22 → 2009-04-28 (+6d) | 2009-04-24 → 2009-04-30 (+6d) |  |  | 51d → 47d |  |
| 194 | Dev: BE - Configure items relating to application rate | 2009-04-24 → 2009-04-28 (+4d) | 2009-04-29 → 2009-04-30 (+1d) |  |  | 48.8d → 47d |  |
| 195 | Dev: GUI - Configure items relating to application rate | 2009-04-29 → 2009-05-01 (+2d) | 2009-05-01 → 2009-05-04 (+3d) |  |  | 48.8d → 47d |  |
| 196 | Dev: BE - IRS - CRUD |  | 2009-04-24 → 2009-04-27 (+3d) | 24h → 30.4h | 27% → 60% | 48.8d → 47d |  |
| 197 | Dev: GUI - IRS - CRUD | 2009-04-24 → 2009-04-28 (+4d) | 2009-04-28 → 2009-04-29 (+1d) |  |  | 51.8d → 50d |  |
| 199 | **MDSS Stabilisation** | 2009-04-23 → 2009-04-27 (+4d) |  | 22d? → 19.19d? |  | 8d → 5.19d |  |
| 201 | Dev: maintain catalogues | 2009-04-23 → 2009-04-27 (+4d) | 2009-04-28 → 2009-05-01 (+3d) |  |  | 18.53d → 15.72d |  |
| 202 | Dev: Configure system variables | 2009-04-28 → 2009-05-01 (+3d) | 2009-04-30 → 2009-05-05 (+5d) |  |  | 18.53d → 15.72d |  |
| 203 | Dev: Epi week - set or change | 2009-04-28 → 2009-05-04 (+6d) | 2009-04-29 → 2009-05-05 (+6d) |  |  | 23d → 19d |  |
| 204 | Dev: define season start and end dates | 2009-04-30 → 2009-05-06 (+6d) | 2009-05-01 → 2009-05-07 (+6d) |  |  | 23d → 19d |  |
| 205 | Finalise export/import routines | 2009-05-04 → 2009-05-08 (+4d) | 2009-05-08 → 2009-05-14 (+6d) |  |  | 23d → 19d |  |
| 206 | Dev: create synonyms for imported Geo entities | 2009-05-11 → 2009-05-15 (+4d) | 2009-05-14 → 2009-05-20 (+6d) |  |  | 23d → 19d |  |
| 207 | Dev: User Admin Screen for account management | 2009-04-30 → 2009-05-05 (+5d) | 2009-05-06 → 2009-05-11 (+5d) |  |  | 18.53d → 15.72d |  |
| 208 | Dev: user Admin Screen for Role assignment | 2009-05-06 → 2009-05-11 (+5d) | 2009-05-08 → 2009-05-13 (+5d) |  |  | 18.53d → 15.72d |  |
| 209 | Dev: Add localisable character attributes | 2009-05-15 → 2009-05-21 (+6d) | 2009-05-18 → 2009-05-22 (+4d) |  |  | 23d → 19d |  |
| 237 | Dev: Backup the data and configuration file | 2009-05-25 → 2009-05-29 (+4d) | 2009-05-29 → 2009-06-04 (+6d) |  |  | 22d → 19d |  |
| 238 | Dev: Synchronise data between systems | 2009-06-01 → 2009-06-05 (+4d) | 2009-06-05 → 2009-06-11 (+6d) |  |  | 23d → 19d |  |

## Version 16 (saved 2009-06-02, file MDSS_Project_Plan.mpp)

Note of the change: Updated project plan

Last finish 2009-07-08 → 2009-08-03 (+26d). Complete tasks 170 → 194.

Added:

| ID | Task | Duration | Start | Finish | Predecessors | Constraint | Resources |
| --- | --- | --- | --- | --- | --- | --- | --- |
| 143 | Change geo root by user | 16h | 2009-06-24 | 2009-06-25 | 45 |  | Darrell |
| 144 | Modify 101 to accept universals | 8h | 2009-05-29 A | 2009-05-29 A |  | start no earlier than 2009-05-29 | Naifeh |
| 145 | Modify 101 to follow spray hierarchy | 8h | 2009-05-29 A | 2009-05-29 A |  | start no earlier than 2009-05-29 | Naifeh |
| 146 | Multiple geo entity select | 40h | 2009-06-01 A | 2009-06-05 |  | start no earlier than 2009-06-01 | Naifeh [20%] |
| 147 | Create initial views for export | 32h | 2009-05-26 A | 2009-05-29 A |  | start no earlier than 2009-05-26 | Justin |
| 148 | Integrate BIRT | 64h | 2009-06-01 | 2009-06-10 | 147 |  | Justin |
| 149 | Additional views for export | 80h | 2009-06-08 | 2009-06-19 | 178 | start no earlier than 2009-06-05 | Eric |
| 150 | Fix GUI user/role/permissions admin | 16h | 2009-06-08 | 2009-06-09 | 151 | start no earlier than 2009-06-01 | Darrell |
| 152 | Dev: Queries - Group by season | 40h | 2009-06-10 | 2009-06-16 | 150 |  | Darrell |
| 172 | Change IRS targets according to new spec | 24h | 2009-07-15 | 2009-07-17 | 190 | start no earlier than 2009-06-29 | Darrell |
| 175 | Menu Structure | 8h | 2009-05-29 A | 2009-05-29 A |  | start no earlier than 2009-05-29 | Darrell |
| 176 | Dev: maintain catalogues - All | 40h | 2009-05-25 A | 2009-05-29 A |  | start no earlier than 2009-05-25 | Eric |
| 177 | Complete GUI Admin screens for all screens | 40h | 2009-05-25 A | 2009-05-29 A |  | start no earlier than 2009-05-25 | Eric |
| 178 | Import geo entities through tree | 40h | 2009-06-01 | 2009-06-05 | 177 |  | Eric |
| 192 | geo data import for all countries | 24h | 2009-06-30 | 2009-07-03 | 185 | start no earlier than 2009-06-30 | Darrell |
| 193 | Final ticket resolution | 40h | 2009-07-20 | 2009-07-24 | 172 | start no earlier than 2009-07-15 | Darrell; Justin |
| 196 | Dev: Heavy client MDSS Admin | 40h | 2009-06-17 | 2009-06-24 | 189 |  | Justin |

Removed: 107 Test: changing visibility of fields in GUI; 108 Submit defects: changing visibility of fields in GUI; 130 Test: Import assay and collection data; 131 Submit defects: generic import functionality; 132 Test: IRS dynamic query and reports; 133 Test: add Geo-entity fields; 134 Test: add other fields; 135 Test: add functions; 136 Test: date ranges on collection date or assay date; 137 Submit defects: Build query; 138 Test: save query; 139 Test: run a saved query; 140 Test: modify a saved query; 141 Test: export query results; 142 Test: dump functionality; 143 Submit defects: deploy query; 144 Test: create thematic map from query; 145 Test: find query results in BIRT; 146 Test: create a report template (table); 147 Test: Link a report template to query; 148 Test: view/print/save a report; 149 Test: change linked report; 150 Submit defects: deploy query; 151 Write change request: Dynamic query; 168 Configure universal icons; 176 Dev: calculate CFR; 178 Dev: Input or modify population data; 179 Dev: Calculate annual or seasonal population; 180 Dev: Import population or annual growth rate data; 181 Dev: input/modify outbreak thresholds; 182 Dev :import outbreak thresholds; 183 Dev: calculate incidence; 184 Dev: BE - individual cases - CRUD; 185 Dev: GUI - individual cases - CRUD; 186 Dev: Outbreak notification; 187 Dev: individual case - dynamic query; 201 Dev: maintain catalogues; 202 Dev: Configure system variables; 207 Dev: User Admin Screen for account management; 209 Dev: Add localisable character attributes; 210 Larvaciding; 211 Dev: BE - larviciding - CRUD; 212 Dev: GUI - larviciding - CRUD; 217 Dev: BE - ITN facility distribution - CRUD; 218 Dev: GUI - ITN facility distribution - CRUD; 219 Dev: BE - ITN community distribution - CRUD; 220 Dev: GUI - ITN community distribution - CRUD; 221 Dev: ITN by facility/community - query; 222 Dev: BE - ITN by household - CRUD; 223 Dev: GUI - ITN by household - CRUD; 224 Dev: ITN by household - query; 225 Intervention Planning; 226 Dev: BE - Intervention planning; 227 Dev: GUI - Intervention planning; 232 Dev: BE - IPT individual - CRUD; 233 Dev: GUI - IPT individual - CRUD; 234 Dev: IPT individual - query; 235 Dev: BE - Stock Control; 236 Dev: GUI - Stock Control; 301 Receive historical entomological data; 302 Import historical entomological data; 303 Receive all historical IRS data; 304 Import all historical IRS data; 306 Appoint MDSS Administrators; 307 Complete system translation into Portuguese; 309 Complete Test and Fix Cycle; 310 Implementation planning; 311 Project Buffer

Changed:

| ID | Task | Start | Finish | Duration | Complete | Total float | Predecessors | Other |
| --- | --- | --- | --- | --- | --- | --- | --- | --- |
| 1 | **MDSS Implementation** |  | 2009-07-08 → 2009-08-03 (+26d) | 113d? → 130.65d? | 61% → 75% |  |  |  |
| 2 | **Create Prototype (Entomology)** |  | 2009-04-27 A | 60.5d? → 61d? | 99% → 100% | 52.5d → none |  |  |
| 3 | **System requirements** |  | 2009-04-27 A | 60.5d? → 61d? | 98% → 100% | 52.5d → none |  |  |
| 13 | Dev: Save query criteria to the database |  | 2009-04-27 A |  | 94% → 100% | 52.5d → none |  |  |
| 14 | Dev: Generic GIS visualisation and output requirements |  | 2009-04-24 → 2009-04-27 A (+3d) | 80h → 88h | 85% → 100% | 0d → none |  |  |
| 45 | Dev: Entomology Resistance (bioassay) dynamic query | 2009-05-19 → 2009-06-17 (+29d) | 2009-05-21 → 2009-06-23 (+33d) | 24h → 40h |  | 0d → 9.15d | 156 → 152 | constraint none → start no earlier than 2009-06-01; resources Naifeh → Darrell |
| 46 | Dev: Entomology (biochem/Mol assay) dynamic query | 2009-05-22 → 2009-06-29 (+38d) | 2009-05-26 → 2009-07-03 (+38d) | 24h → 40h |  | 0d → 5.65d | 45 → 156 | constraint none → start no earlier than 2009-06-10 |
| 89 | **Test Prototype Submit Change Requests** |  | 2009-05-11 → 2009-04-09 A (-32d) | 40.89d? → 18.15d? | 61% → 100% | 42.11d → none |  |  |
| 137 | **Complete Development** |  | 2009-07-08 → 2009-07-20 (+12d) | 88d? → 96d? | 25% → 61% | 0d → 9.65d |  |  |
| 138 | **Generic Development** |  | 2009-06-19 → 2009-07-20 (+31d) | 75d → 96d | 90% → 67% | 13d → 9.65d |  |  |
| 139 | Dev: Reconstruct saved query |  | 2009-04-27 → 2009-05-05 A (+8d) | 62.49h → 110.49h | 90% → 100% | 15.72d → none |  |  |
| 140 | Dev: enter/maintain people in the system |  | 2009-04-27 A |  | 88% → 100% | 52d → none |  |  |
| 142 | Change system geo root | 2009-06-19 → 2009-07-20 (+31d) | 2009-06-19 → 2009-07-20 (+31d) |  |  | 13d → 9.65d | Dev: Configure system variables, 191 → 191 | was named Change geo root; constraint start no earlier than 2009-06-06 → start no earlier than 2009-06-11 |
| 151 | Dev: Entomology Efficacy dynamic query | 2009-05-27 → 2009-06-01 (+5d) | 2009-05-29 → 2009-06-05 (+7d) | 24h → 40h |  | 0d → 9.15d | 46 → 175 | constraint none → start no earlier than 2009-06-01; resources Naifeh → Darrell |
| 153 | **Indicator survey** |  | 2009-05-18 → 2009-06-26 (+39d) | 27d → 56d |  | 0d → 5.65d |  |  |
| 156 | Dev - Indicator survey - dynamic query | 2009-05-12 → 2009-06-22 (+41d) | 2009-05-18 → 2009-06-26 (+39d) |  |  | 0d → 5.65d | 160 → 171 | constraint start no earlier than 2009-04-04 → start no earlier than 2009-06-01 |
| 157 | **Case Surveilance** |  | 2009-06-17 → 2009-05-15 A (-33d) | 57.28d → 35d | 16% → 100% | 15.72d → none |  |  |
| 160 | Dev: aggregated cases - dynamic query | 2009-05-05 → 2009-04-29 A (-6d) | 2009-05-11 → 2009-05-15 A (+4d) | 40h → 104h | 0% → 100% | 0d → none | 129, Configure universal icons → 129, 14 | constraint start no earlier than 2009-04-07 → start no earlier than 2009-04-29 |
| 161 | **Intervention monitoring** |  | 2009-07-08 → 2009-07-17 (+9d) | 62d? → 69d? | 9% → 56% | 0d → 9.65d |  |  |
| 162 | **IRS** |  | 2009-05-04 → 2009-07-17 (+74d) | 15d → 69d | 33% → 74% | 47d → 5.65d |  |  |
| 163 | Dev: enter/maintain spray team member |  | 2009-04-27 A |  | 88% → 100% | 19d → none |  |  |
| 164 | Dev: enter/maintain IRS teams | 2009-04-28 A | 2009-05-01 → 2009-05-08 A (+7d) | 32h → 72h | 0% → 100% | 19d → none |  |  |
| 165 | Dev: BE - input or modify IRS targets |  | 2009-04-27 A |  | 67% → 100% | 47d → none |  |  |
| 166 | Dev: GUI - input or modify IRS targets | 2009-04-28 A | 2009-04-30 A |  | 0% → 100% | 47d → none |  |  |
| 167 | Dev: BE - Configure items relating to application rate | 2009-04-28 A | 2009-04-30 A |  | 0% → 100% | 47d → none |  |  |
| 168 | Dev: GUI - Configure items relating to application rate | 2009-05-01 A | 2009-05-04 A |  | 0% → 100% | 47d → none |  |  |
| 169 | Dev: BE - IRS - CRUD |  | 2009-04-27 A |  | 60% → 100% | 47d → none |  |  |
| 170 | Dev: GUI - IRS - CRUD | 2009-04-28 A | 2009-04-29 → 2009-05-05 A (+6d) | 16h → 48h | 0% → 100% | 50d → none |  |  |
| 171 | Dev: IRS - dynamic query | 2009-04-27 → 2009-06-08 (+42d) | 2009-05-01 → 2009-06-19 (+49d) | 40h → 80h |  | 0d → 5.65d | 131, 14 → 131, 160, 146 | constraint start no earlier than 2009-03-16 → start no earlier than 2009-06-01 |
| 173 | **MDSS Stabilisation** | 2009-04-27 → 2009-05-04 A (+7d) | 2009-05-22 → 2009-06-22 (+31d) | 19.19d? → 35.65d | 0% → 54% | 5.19d → 20d |  |  |
| 174 | Ticket resolution | 2009-05-04 A | 2009-05-22 → 2009-05-08 A (-14d) | 120h → 40h | 0% → 100% | 1d → none |  |  |
| 179 | Dev: Epi week - set or change | 2009-05-04 → 2009-05-18 A (+14d) | 2009-05-05 → 2009-05-19 A (+14d) |  | 0% → 100% | 19d → none | 164 → 164, 187 |  |
| 180 | Dev: define season start and end dates | 2009-05-06 → 2009-05-20 A (+14d) | 2009-05-07 → 2009-05-21 A (+14d) |  | 0% → 100% | 19d → none |  |  |
| 181 | Finalise export/import routines | 2009-05-08 → 2009-05-22 A (+14d) | 2009-05-14 → 2009-05-27 A (+13d) | 40h → 32h | 0% → 100% | 19d → none |  |  |
| 182 | Dev: create synonyms for imported Geo entities | 2009-05-15 → 2009-05-28 A (+13d) | 2009-05-20 → 2009-06-22 (+33d) | 32h → 141.18h | 0% → 6% | 19d → 0d | Dev: User Admin Screen for account management, 181 → 181 | resources Eric → Nathan [85%] |
| 183 | **IPT** | 2009-05-27 → 2009-05-18 A (-9d) | 2009-07-08 → 2009-07-10 (+2d) | 31d → 40d? | 0% → 33% | 0d → 5.65d |  |  |
| 184 | Dev: BE - IPT aggregated - CRUD | 2009-05-27 → 2009-06-11 (+15d) | 2009-05-29 → 2009-06-15 (+17d) |  |  | 2d → 13.15d | Dev: BE - individual cases - CRUD → 148 | constraint start no earlier than 2009-05-22 → start no earlier than 2009-06-08 |
| 185 | Dev: GUI - IPT aggregated - CRUD | 2009-05-29 → 2009-06-26 (+28d) | 2009-06-02 → 2009-06-30 (+28d) |  |  | 2d → 9.15d | 184, Dev: GUI - individual cases - CRUD → 184, 143 |  |
| 186 | Dev: IPT aggregated - query | 2009-06-08 → 2009-07-06 (+28d) | 2009-06-11 → 2009-07-10 (+29d) | 32h → 40h |  | 0d → 5.65d | 185, Dev: individual case - dynamic query → 185, 46 |  |
| 187 | Dev: user Admin Screen for Role assignment | 2009-05-11 → 2009-05-18 A (+7d) | 2009-05-13 → 2009-05-22 A (+9d) | 2.35d? → 5d? | 0% → 100% | 15.72d → none | Dev: User Admin Screen for account management → 177 | constraint start no earlier than 2009-03-06 → start no earlier than 2009-05-18; resources Nathan [85%] → Eric |
| 188 | **ITN** | 2009-06-02 → 2009-06-15 (+13d) | 2009-07-02 → 2009-07-17 (+15d) | 22.5d → 24.5d |  | 0d → 9.65d |  |  |
| 189 | Dev: BE - ITN aggregated data - CRUD | 2009-06-02 → 2009-06-15 (+13d) | 2009-06-04 → 2009-06-17 (+13d) |  |  | 3.5d → 13.15d | Dev: BE - larviciding - CRUD → 184 | constraint start no earlier than 2009-05-22 → start no earlier than 2009-06-08 |
| 190 | Dev: GUI - ITN aggregated data - CRUD | 2009-06-05 → 2009-07-13 (+38d) | 2009-06-08 → 2009-07-14 (+36d) |  |  | 4.75d → 5.65d | 189, Dev: GUI - larviciding - CRUD → 189, 186, 192 | constraint none → start no earlier than 2009-07-05 |
| 191 | Dev: ITN aggregated data - query | 2009-06-12 → 2009-07-13 (+31d) | 2009-06-18 → 2009-07-17 (+29d) |  |  | 0d → 9.65d |  |  |
| 194 | Dev: Backup the data and configuration file | 2009-05-29 → 2009-06-22 (+24d) | 2009-06-04 → 2009-07-06 (+32d) | 40h → 80h |  | 19d → 0d | Dev: Outbreak notification → 182 | constraint none → start no earlier than 2009-06-01; resources Eric → Nathan |
| 195 | Dev: Synchronise data between systems | 2009-06-05 → 2009-07-06 (+31d) | 2009-06-11 → 2009-08-03 (+53d) | 40h → 160h |  | 19d → 0d |  | resources Eric → Nathan |
| 197 | Dev: Installation (minimal or full) | 2009-06-22 → 2009-06-24 (+2d) | 2009-06-29 → 2009-07-15 (+16d) | 40h → 120h |  | 7.25d → 13.15d | Dev: BE - IPT individual - CRUD → 196 | constraint start no earlier than 2009-06-15 → start no earlier than 2009-06-22 |
| 259 | Create standard queries and reports | 2009-05-11 → 2009-07-01 (+51d) | 2009-05-29 → 2009-07-21 (+53d) |  |  | 28.71d → 9.36d |  | constraint start no earlier than 2009-05-10 → start no earlier than 2009-07-01 |
| 260 | Order MDSS Hardware | 2009-04-13 → 2009-06-30 (+78d) | 2009-04-13 → 2009-06-30 (+78d) |  |  | 63d → 24.65d |  | constraint start no earlier than 2009-04-13 → start no earlier than 2009-06-30; resources Mike → Marlize [70%] |
| 261 | Ready for Pilot Roll-Out | 2009-06-30 → 2009-07-31 (+31d) | 2009-06-30 → 2009-07-31 (+31d) |  |  | 6d → 0.65d | Project Buffer → none | constraint none → start no earlier than 2009-07-31 |
